# 01. Programa de Obra - 6 Casas - Altozano

Schedule from MS Project XML, 2026-05-11 to 2027-02-10, status date 2026-07-11, A marks actual dates.

## Calendars

- METTA: Mon-Fri 08:00-12:00, 13:00-17:00; Sat 08:00-13:00; Sun off. Exceptions (off unless hours are given): 2026-09-16 (Independencia de Mx), 2026-11-16 (Revolucion MX), 2026-12-24 to 2026-12-25 (Navidad), 2026-12-31 to 2027-01-01 (Año Nuevo).

## Resources

| Resource |
| --- |
| Artico - Trazo y nivelación |
| Artico - Excavación a mano material tipo B |
| Artico - Acarreo en carretilla 20 m |
| Artico - Cimbra perimetral losa de cimentación |
| Artico - Sistema antitermitas PVC |
| Artico - Hule negro en cimentación |
| Artico - Ramaleo poliducto eléctrico cimentación |
| Artico - Ramaleo eléctrico base-medición a centro de carga |
| Artico - Ramaleo eléctrico exterior |
| Artico - Ramaleo para cable poliducto 3/4 |
| Artico - Ramaleo para TV poliducto 3/4 |
| Artico - Ramaleo hidráulico CPVC 1" cimentación |
| Artico - Ramaleo hidráulico CPVC 3/4" cimentación |
| Artico - Ramaleo hidráulico CPVC 1/2" cimentación |
| Artico - Prueba hidráulica |
| Artico - Ramaleo sanitario PVC 4" cimentación |
| Artico - Ramaleo sanitario PVC 2" cimentación |
| Artico - Prueba sanitaria |
| Artico - Acero contratrabe CT-1 |
| Artico - Acero contratrabe CT-2 |
| Artico - Malla electrosoldada 6-6/8-8 |
| Artico - Bastón de refuerzo LS |
| Artico - Bastón de refuerzo LI |
| Artico - Colado losa de cimentación f’c=200 |
| Artico - Curado de concreto |
| Artico - Acero zapata ZT-1 |
| Artico - Acero zapata ZT-2 |
| Artico - Colado zapatas aisladas f’c=200 |
| Artico - Cimbra frontera zapatas |
| Artico - Castillo K1 |
| Artico - Castillo K2 |
| Artico - Castillo K3 |
| Artico - Castillo K4 |
| Artico - Castillo K5 |
| Artico - Refuerzo de muro K6 |
| Artico - Columna C1 |
| Artico - Columna C2 |
| Artico - Dala de cerramiento CR-1 |
| Artico - Dala de cerramiento CR-2 |
| Artico - Cadena block dala |
| Artico - Muro de ladrillo aparente |
| Artico - Muro de block planta baja |
| Artico - Escalera de concreto armado |
| Artico - Vigueta pretensada 1.40 m |
| Artico - Vigueta pretensada 1.95 m |
| Artico - Vigueta pretensada 3.35 m |
| Artico - Vigueta pretensada 3.50 m |
| Artico - Vigueta pretensada 3.75 m |
| Artico - Vigueta pretensada 3.90 m |
| Artico - Bovedilla poliestireno entrepiso |
| Artico - Dala de coronamiento |
| Artico - Nervadura NR-1 |
| Artico - Nervadura NR-2 |
| Artico - Trabe TR-1 |
| Artico - Malla 66-10/10 losa de compresión |
| Artico - Cimbra losa de azotea |
| Artico - Concreto losa de entrepiso f’c=200 |
| Artico - Curado de concreto |
| Artico - Cimbra exterior corta losa |
| Artico - Ramaleo poliducto eléctrico entrepiso |
| Artico - Ramaleo para cable poliducto 3/4 |
| Artico - Ramaleo para TV poliducto 3/4 |
| Artico - Ramaleo hidráulico CPVC 3/4" |
| Artico - Ramaleo hidráulico CPVC 1/2" |
| Artico - Prueba hidráulica |
| Artico - Ramaleo sanitario PVC 4" |
| Artico - Ramaleo sanitario PVC 2" |
| Artico - Prueba sanitaria |
| Artico - Castillo K1 |
| Artico - Castillo K2 |
| Artico - Castillo K3 |
| Artico - Castillo K4 |
| Artico - Castillo K5 |
| Artico - Refuerzo de muro K6 |
| Artico - Dala de cerramiento CR-1 |
| Artico - Cadena block dala |
| Artico - Muro de ladrillo aparente |
| Artico - Muro de block planta alta |
| Artico - Cortalosa CL-1 |
| Artico - Vigueta pretensada V11-40 390 |
| Artico - Vigueta pretensada V11-30 280 |
| Artico - Vigueta pretensada V11-30 285 |
| Artico - Vigueta pretensada V11-30 220 |
| Artico - Vigueta pretensada V11-40 75 |
| Artico - Vigueta pretensada V11-40 195 |
| Artico - Vigueta pretensada V11-50 450 |
| Artico - Bovedilla poliestireno azotea |
| Artico - Malla 66-10/10 losa de compresión |
| Artico - Concreto losa de azotea f’c=200 |
| Artico - Curado de concreto |
| Artico - Cimbra losa de azotea |
| Artico - Ramaleo de poliducto para instalacion electrica en azotea |
| Artico - Castillo K1 |
| Artico - Dala de cerramiento en pretil |
| Artico - Muro de block 12x15x40 |
| Artico - Chaflán en azotea |
| Artico - Aplanado exterior Mortermax fino |
| Artico - Acabado de azotea para impermeabilizar |
| Artico - Curado de concreto |
| Artico - Primera limpieza de obra |
| Artico - Primera carga y acarreo de escombro |
| Artico - Impermeabilización de pretil Kover 5 años |
| Artico - Impermeabilización de losa Kover 5 años |
| Artico - Lavadero de granito |
| Artico - Ramaleo hidráulico exterior CPVC 1 1/4" |
| Artico - Ramaleo hidráulico exterior CPVC 1" |
| Artico - Ramaleo hidráulico exterior CPVC 3/4" |
| Artico - Ramaleo hidráulico exterior CPVC 1/2" |
| Artico - Prueba hidráulica |
| Artico - Ramaleo sanitario exterior PVC 4" |
| Artico - Ramaleo sanitario exterior PVC 2" |
| Artico - Prueba sanitaria |
| Artico - Centro de carga muros PB |
| Artico - Firme de concreto 8 cm |
| Artico - Curado de concreto |
| Artico - Cisterna 2800 L con instalación |
| Artico - Banqueta y huellas de concreto |
| Artico - Curado de concreto |
| Artico - Número oficial |
| Artico - Detallado de rodapié exterior |
| Artico - Detallado de muros interiores |
| Artico - Aplanado grueso fachada |
| Artico - Aplanado fino estuco fachada |
| Artico - Pintura acrílica 1-0102P |
| Artico - Pintura acrílica 1-1404D |
| Artico - Yeso pulido en muros |
| Artico - Pintura vinílica 699 Cottage White |
| Artico - Pintura vinílica 691 Pacific Bungalow |
| Artico - Yeso pulido en plafones |
| Artico - Pintura vinílica Nano White |
| Artico - Perfilado de puertas y ventanas |
| Artico - Piso Moonside Crema 60x60 |
| Artico - Zoclo piso 60x60 Moonside Crema |
| Artico - Piso Moonside Crema 60x60 |
| Artico - Zoclo piso 60x60 Moonside Crema |
| Artico - Piso porcelánico Acali 20x20 beige |
| Artico - Impermeabilización en regadera |
| Artico - Azulejo Moonside Crema 60x60 |
| Artico - Fabricacion de nicho decorativo en baños |
| Artico - Sardinel en regadera |
| Artico - Piso Moonside Crema 60x60 |
| Artico - Zoclo piso 60x60 Moonside Crema |
| Artico - Rastrilleo, afine y nivelado de tierra |
| Artico - Segunda limpieza de obra |
| Artico - Segunda carga y acarreo de escombro |
| Artico - Puerta ventana P-05 corrediza |
| Artico - Ventana corrediza V-01 |
| Artico - Ventana corrediza V-03 |
| Artico - Ventana corrediza V-05 |
| Artico - Ventana corrediza tipo XO |
| Artico - Ventana fija escalera |
| Artico - Puerta P-01 de seguridad |
| Artico - Puerta P-03 interior |
| Artico - Puerta P-02 interior |
| Artico - Puerta exterior lavandería |
| Artico - Alimentación eléctrica base a centro de carga |
| Artico - Interruptor termomagnético 1x15 A |
| Artico - Interruptor termomagnético 1x20 A |
| Artico - Interruptor termomagnético 2x20 A |
| Artico - Salida para apagador 3 vías |
| Artico - Salida para apagador triple |
| Artico - Salida para apagador doble |
| Artico - Salida para apagador sencillo |
| Artico - Salida de alumbrado en losa |
| Artico - Salida de alumbrado en muro |
| Artico - Salida para contacto 220 V |
| Artico - Salida para contacto doble |
| Artico - Salida para contacto doble área húmeda |
| Artico - Salida TV / telefonía / intercom |
| Artico - Extractor 4" baño |
| Artico - Prueba eléctrica |
| Artico - Murete convencional |
| Artico - Tubo PVC 3/4" red de condensados |
| Artico - Caja PVC para lavadora |
| Artico - Salida para secadora PVC 4" |
| Artico - Salida hidráulica para boiler |
| Artico - Salida hidráulica para llave de jardín |
| Artico - Salida hidráulica para lavabo |
| Artico - Salida hidráulica para purificación |
| Artico - Salida sanitaria para lavabo |
| Artico - Salida hidráulica para lavadero |
| Artico - Salida sanitaria para lavadero |
| Artico - Salida hidráulica para lavadora |
| Artico - Salida sanitaria para lavadora |
| Artico - Salida hidráulica para regadera |
| Artico - Salida sanitaria para regadera |
| Artico - Salida hidráulica para WC |
| Artico - Salida sanitaria para WC |
| Artico - Salida hidráulica para zinc |
| Artico - Salida sanitaria para zinc |
| Artico - Tubo para ventila de baño 2" |
| Artico - Tubo para minisplit PVC 3" |
| Artico - Cuadro de medición |
| Artico - Prueba sanitaria |
| Artico - Prueba hidráulica |
| Artico - Salida hidráulica para tanque hidroneumático |
| Artico - Salida hidráulica para Active Driver |
| Artico - Ramaleo para gas 1/2" |
| Artico - Excavación a mano material tipo B |
| Artico - WC one piece Smart Corona |
| Artico - Lavabo Tarento Vanity |
| Artico - Regadera y monomando Thames |
| Artico - Coladera cuadrada para inserto cerámico |
| Artico - Toallero argolla Thames |
| Artico - Toallero barra Thames |
| Artico - Portapapel Thames |
| Artico - Gancho percha Thames |
| Artico - Electronivel Rotoplas 5 m |
| Artico - Manómetro |
| Artico - Interruptor de presión 30-50 PSI |
| Artico - Tanque hidroneumático FPS-24LX |
| Artico - Bomba sumergible Dominator 1.2 HP |
| Artico - Cisterna prefabricada 2800 L |
| Artico - Roseta de cerámica para luminaria |
| Artico - Spot Brighton |
| Artico - Arbotante bidireccional 12W |
| Artico - Limpieza fina para entrega |
| Artico - Tercera limpieza de obra |
| Artico - Tercera carga y acarreo de escombro |
| Artico - Barda de block aparente |

## Schedule

| ID | WBS | Task | Type | Duration | Start | Finish | Predecessors | Complete | Remaining | Baseline start | Baseline finish | Baseline duration | Baseline 1 start | Baseline 1 finish | Total slack |
| --- | --- | --- | --- | --- | --- | --- | --- | --- | --- | --- | --- | --- | --- | --- | --- |
| 1 | 1 | **ALTOZANO - METTA - 6 CASAS** |  | 216d | 2026-05-11 A | 2027-02-10 |  | 9% | 197.32d | 2026-05-11 | 2027-01-20 | 199d | 2026-05-11 | 2027-01-21 | 0d |
| 2 | 1.1 | **HITOS IMPORTANTES** |  | 25d | 2026-05-11 A | 2026-06-10 A |  | 100% |  | 2026-05-11 | 2026-06-10 | 25d | 2026-05-11 | 2026-06-10 |  |
| 3 | 1.1.1 | INICIO DEL PROYECTO | milestone | 0d | 2026-05-11 A | 2026-05-11 A |  | 100% |  | 2026-05-11 | 2026-05-11 |  | 2026-05-11 | 2026-05-11 |  |
| 4 | 1.1.2 | INICIO LOTE-04 M-661 ARTICO-A | milestone | 0d | 2026-05-11 A | 2026-05-11 A | 3 | 100% |  | 2026-05-11 | 2026-05-11 |  | 2026-05-11 | 2026-05-11 |  |
| 5 | 1.1.3 | INICIO LOTE-02 M-661 CORSAC-B | milestone | 0d | 2026-05-20 A | 2026-05-20 A | 3FS+8d | 100% |  | 2026-05-20 | 2026-05-20 |  | 2026-05-20 | 2026-05-20 |  |
| 6 | 1.1.4 | INICIO LOTE-03 M-661 CORSAC-A | milestone | 0d | 2026-05-20 A | 2026-05-20 A | 3FS+8d | 100% |  | 2026-05-20 | 2026-05-20 |  | 2026-05-20 | 2026-05-20 |  |
| 7 | 1.1.5 | INICIO LOTE-22 M-663 CORSAC-B | milestone | 0d | 2026-05-29 A | 2026-05-29 A | 3FS+16d | 100% |  | 2026-06-10 | 2026-06-10 |  | 2026-06-10 | 2026-06-10 |  |
| 8 | 1.1.6 | INICIO LOTE-21 M-663 CORSAC-A | milestone | 0d | 2026-06-10 A | 2026-06-10 A | 3FS+25d | 100% |  | 2026-05-29 | 2026-05-29 |  | 2026-05-29 | 2026-05-29 |  |
| 9 | 1.1.7 | INICIO LOTE-20 M-663 ARTICO-A | milestone | 0d | 2026-06-10 A | 2026-06-10 A | 3FS+25d | 100% |  | 2026-05-29 | 2026-05-29 |  | 2026-05-29 | 2026-05-29 |  |
| 10 | 1.2 | **LOTE 04 M-661 ARTICO-A** |  | 189d | 2026-05-11 A | 2027-01-07 |  | 22% | 147.18d | 2026-05-11 | 2026-12-16 | 175d | 2026-05-11 | 2026-12-22 | 27d |
| 11 | 1.2.1 | **HITOS IMPORTANTES DEL LOTE** |  | 189d | 2026-05-11 A | 2027-01-07 |  |  | 189d | 2026-05-11 | 2026-12-16 | 175d | 2026-05-11 | 2026-12-22 | 27d |
| 12 | 1.2.1.1 | Inicio del Lote-04 M-661 Artico-A | milestone | 0d | 2026-05-11 A | 2026-05-11 A | 4 | 100% |  | 2026-05-11 | 2026-05-11 |  | 2026-05-11 | 2026-05-11 |  |
| 13 | 1.2.1.2 | Colado de Losa de Cimentación | milestone | 0d | 2026-06-01 A | 2026-06-01 A | 43 | 100% |  | 2026-06-01 | 2026-06-01 |  | 2026-06-01 | 2026-06-01 |  |
| 14 | 1.2.1.3 | Colado de Losa de Entrepiso | milestone | 0d | 2026-07-27 | 2026-07-27 | 80 |  |  | 2026-07-08 | 2026-07-08 |  | 2026-07-15 | 2026-07-15 | 154d |
| 15 | 1.2.1.4 | Colado de Losa de Azotea | milestone | 0d | 2026-09-01 | 2026-09-01 | 115 |  |  | 2026-08-14 | 2026-08-14 |  | 2026-08-21 | 2026-08-21 | 124d |
| 16 | 1.2.1.5 | Entrega de vivienda | milestone | 0d | 2027-01-07 | 2027-01-07 | 264, 265, 266 |  |  | 2026-12-16 | 2026-12-16 |  | 2026-12-22 | 2026-12-22 | 27d |
| 17 | 1.2.2 | **TRABAJOS PRELIMINARES** |  | 2d | 2026-05-11 A | 2026-05-12 A |  | 100% |  | 2026-05-11 | 2026-05-12 | 2d | 2026-05-11 | 2026-05-12 |  |
| 18 | 1.2.2.1 | Trazo y nivelación |  | 2d | 2026-05-11 A | 2026-05-12 A | 12 | 100% |  | 2026-05-11 | 2026-05-12 | 2d | 2026-05-11 | 2026-05-12 |  |
| 19 | 1.2.3 | **EXCAVACIONES** |  | 3d | 2026-05-13 A | 2026-05-15 A |  | 100% |  | 2026-05-13 | 2026-05-15 | 3d | 2026-05-13 | 2026-05-15 |  |
| 20 | 1.2.3.1 | Excavación a mano material tipo B |  | 3d | 2026-05-13 A | 2026-05-15 A | 18 | 100% |  | 2026-05-13 | 2026-05-15 | 3d | 2026-05-13 | 2026-05-15 |  |
| 21 | 1.2.3.2 | Acarreo en carretilla 20 m |  | 2d | 2026-05-14 A | 2026-05-15 A | 20SS+1d | 100% |  | 2026-05-14 | 2026-05-15 | 2d | 2026-05-14 | 2026-05-15 |  |
| 22 | 1.2.4 | **CIMENTACION** |  | 13d | 2026-05-16 A | 2026-06-02 A |  | 100% |  | 2026-05-16 | 2026-06-02 | 13d | 2026-05-16 | 2026-06-02 |  |
| 23 | 1.2.4.1 | Cimbra perimetral losa de cimentación |  | 3d | 2026-05-16 A | 2026-05-20 A | 20, 21 | 100% |  | 2026-05-16 | 2026-05-20 | 3d | 2026-05-16 | 2026-05-20 |  |
| 24 | 1.2.4.2 | Sistema antitermitas PVC |  | 3d | 2026-05-16 A | 2026-05-20 A | 20, 21 | 100% |  | 2026-05-16 | 2026-05-20 | 3d | 2026-05-16 | 2026-05-20 |  |
| 25 | 1.2.4.3 | Hule negro en cimentación |  | 1d | 2026-05-20 A | 2026-05-21 A | 24 | 100% |  | 2026-05-20 | 2026-05-21 | 1d | 2026-05-20 | 2026-05-21 |  |
| 26 | 1.2.4.4 | Ramaleo poliducto eléctrico cimentación |  | 2d | 2026-05-21 A | 2026-05-23 A | 25 | 100% |  | 2026-05-21 | 2026-05-23 | 2d | 2026-05-21 | 2026-05-23 |  |
| 27 | 1.2.4.5 | Ramaleo eléctrico base-medición a centro de carga |  | 1d | 2026-05-21 A | 2026-05-22 A | 25 | 100% |  | 2026-05-21 | 2026-05-22 | 1d | 2026-05-21 | 2026-05-22 |  |
| 28 | 1.2.4.6 | Ramaleo eléctrico exterior |  | 1d | 2026-05-23 A | 2026-05-25 A | 26, 27 | 100% |  | 2026-05-23 | 2026-05-25 | 1d | 2026-05-23 | 2026-05-25 |  |
| 29 | 1.2.4.7 | Ramaleo para cable poliducto 3/4 |  | 1d | 2026-05-23 A | 2026-05-25 A | 26, 27 | 100% |  | 2026-05-23 | 2026-05-25 | 1d | 2026-05-23 | 2026-05-25 |  |
| 30 | 1.2.4.8 | Ramaleo para TV poliducto 3/4 |  | 1d | 2026-05-23 A | 2026-05-25 A | 26, 27 | 100% |  | 2026-05-23 | 2026-05-25 | 1d | 2026-05-23 | 2026-05-25 |  |
| 31 | 1.2.4.9 | Ramaleo hidráulico CPVC 1 cimentación |  | 1d | 2026-05-21 A | 2026-05-22 A | 25 | 100% |  | 2026-05-21 | 2026-05-22 | 1d | 2026-05-21 | 2026-05-22 |  |
| 32 | 1.2.4.10 | Ramaleo hidráulico CPVC 3/4 cimentación |  | 2d | 2026-05-22 A | 2026-05-25 A | 31 | 100% |  | 2026-05-22 | 2026-05-25 | 2d | 2026-05-22 | 2026-05-25 |  |
| 33 | 1.2.4.11 | Ramaleo hidráulico CPVC 1/2 cimentación |  | 2d | 2026-05-25 A | 2026-05-27 A | 32 | 100% |  | 2026-05-25 | 2026-05-27 | 2d | 2026-05-25 | 2026-05-27 |  |
| 34 | 1.2.4.12 | Prueba hidráulica |  | 1d | 2026-05-27 A | 2026-05-28 A | 31, 32, 33 | 100% |  | 2026-05-27 | 2026-05-28 | 1d | 2026-05-27 | 2026-05-28 |  |
| 35 | 1.2.4.13 | Ramaleo sanitario PVC 4 cimentación |  | 2d | 2026-05-22 A | 2026-05-25 A | 25FS+1d | 100% |  | 2026-05-22 | 2026-05-25 | 2d | 2026-05-22 | 2026-05-25 |  |
| 36 | 1.2.4.14 | Ramaleo sanitario PVC 2 cimentación |  | 1d | 2026-05-25 A | 2026-05-26 A | 35 | 100% |  | 2026-05-25 | 2026-05-26 | 1d | 2026-05-25 | 2026-05-26 |  |
| 37 | 1.2.4.15 | Prueba sanitaria |  | 1d | 2026-05-26 A | 2026-05-27 A | 35, 36 | 100% |  | 2026-05-26 | 2026-05-27 | 1d | 2026-05-26 | 2026-05-27 |  |
| 38 | 1.2.4.16 | Acero contratrabe CT-1 |  | 4d | 2026-05-20 A | 2026-05-25 A | 23 | 100% |  | 2026-05-20 | 2026-05-25 | 4d | 2026-05-20 | 2026-05-25 |  |
| 39 | 1.2.4.17 | Acero contratrabe CT-2 |  | 4d | 2026-05-20 A | 2026-05-25 A | 23 | 100% |  | 2026-05-20 | 2026-05-25 | 4d | 2026-05-20 | 2026-05-25 |  |
| 40 | 1.2.4.18 | Malla electrosoldada 6-6/8-8 |  | 2d | 2026-05-27 A | 2026-05-29 A | 38, 39, 41, 42 | 100% |  | 2026-05-27 | 2026-05-29 | 2d | 2026-05-27 | 2026-05-29 |  |
| 41 | 1.2.4.19 | Bastón de refuerzo LS |  | 2d | 2026-05-25 A | 2026-05-27 A | 38, 39 | 100% |  | 2026-05-25 | 2026-05-27 | 2d | 2026-05-25 | 2026-05-27 |  |
| 42 | 1.2.4.20 | Bastón de refuerzo LI |  | 2d | 2026-05-25 A | 2026-05-27 A | 38, 39 | 100% |  | 2026-05-25 | 2026-05-27 | 2d | 2026-05-25 | 2026-05-27 |  |
| 43 | 1.2.4.21 | Colado losa de cimentación f’c=200 |  | 1d | 2026-05-29 A | 2026-06-01 A | 23, 25, 38, 39, 40, 41, 42, 37, 34, 28, 29, 30 | 100% |  | 2026-05-29 | 2026-06-01 | 1d | 2026-05-29 | 2026-06-01 |  |
| 44 | 1.2.4.22 | Curado de concreto |  | 1d | 2026-06-01 A | 2026-06-02 A | 43 | 100% |  | 2026-06-01 | 2026-06-02 | 1d | 2026-06-01 | 2026-06-02 |  |
| 45 | 1.2.4.23 | Acero zapata ZT-1 |  | 4d | 2026-05-25 A | 2026-05-29 A | 38, 39 | 100% |  | 2026-05-25 | 2026-05-29 | 4d | 2026-05-25 | 2026-05-29 |  |
| 46 | 1.2.4.24 | Acero zapata ZT-2 |  | 4d | 2026-05-25 A | 2026-05-29 A | 38, 39 | 100% |  | 2026-05-25 | 2026-05-29 | 4d | 2026-05-25 | 2026-05-29 |  |
| 47 | 1.2.4.25 | Colado zapatas aisladas f’c=200 |  | 1d | 2026-06-01 A | 2026-06-02 A | 48 | 100% |  | 2026-06-01 | 2026-06-02 | 1d | 2026-06-01 | 2026-06-02 |  |
| 48 | 1.2.4.26 | Cimbra frontera zapatas |  | 3d | 2026-05-27 A | 2026-06-01 A | 45FS-2d, 46FS-2d | 100% |  | 2026-05-27 | 2026-06-01 | 3d | 2026-05-27 | 2026-06-01 |  |

| ID | WBS | Task | Duration | Start | Finish | Predecessors | Complete | Remaining | Baseline start | Baseline finish | Baseline duration | Baseline 1 start | Baseline 1 finish | Total slack | Free slack |
| --- | --- | --- | --- | --- | --- | --- | --- | --- | --- | --- | --- | --- | --- | --- | --- |
| 49 | 1.2.5 | **MUROS, PLANTA BAJA. CASTILLOS Y CERRAMIENTOS** | 32d | 2026-05-26 A | 2026-07-04 A |  | 100% |  | 2026-05-26 | 2026-06-19 | 20d | 2026-05-26 | 2026-06-26 |  |  |
| 50 | 1.2.5.1 | Anclaje de castillos y Columnas PB | 5d | 2026-05-26 A | 2026-06-02 A | 38FS+1d, 39FS+1d | 100% |  | 2026-05-26 | 2026-06-02 | 5d | 2026-05-26 | 2026-06-02 |  |  |
| 51 | 1.2.5.2 | Castillo K1 | 14d | 2026-06-02 A | 2026-06-18 A | 50, 44 | 100% |  | 2026-06-02 | 2026-06-06 | 4d | 2026-06-02 | 2026-06-16 |  |  |
| 52 | 1.2.5.3 | Castillo K2 | 12d | 2026-06-02 A | 2026-06-16 A | 50, 44 | 100% |  | 2026-06-02 | 2026-06-06 | 4d | 2026-06-02 | 2026-06-16 |  |  |
| 53 | 1.2.5.4 | Castillo K3 | 3d | 2026-06-16 A | 2026-06-19 A | 51FS-2d | 100% |  | 2026-06-04 | 2026-06-08 | 3d | 2026-06-13 | 2026-06-17 |  |  |
| 54 | 1.2.5.5 | Castillo K4 | 3d | 2026-06-16 A | 2026-06-19 A | 51FS-2d | 100% |  | 2026-06-04 | 2026-06-08 | 3d | 2026-06-13 | 2026-06-17 |  |  |
| 55 | 1.2.5.6 | Castillo K5 | 3d | 2026-06-18 A | 2026-06-23 A | 53FS-1d, 54FS-1d | 100% |  | 2026-06-06 | 2026-06-10 | 3d | 2026-06-16 | 2026-06-19 |  |  |
| 56 | 1.2.5.7 | Refuerzo de muro K6 | 3d | 2026-06-19 A | 2026-06-24 A | 55FS-2d | 100% |  | 2026-06-08 | 2026-06-11 | 3d | 2026-06-17 | 2026-06-22 |  |  |
| 57 | 1.2.5.8 | Columna C1 | 12d | 2026-06-02 A | 2026-06-16 A | 50, 44 | 100% |  | 2026-06-02 | 2026-06-06 | 4d | 2026-06-02 | 2026-06-16 |  |  |
| 58 | 1.2.5.9 | Columna C2 | 8d | 2026-06-10 A | 2026-06-19 A | 57FS-5d | 100% |  | 2026-06-06 | 2026-06-11 | 4d | 2026-06-10 | 2026-06-19 |  |  |
| 59 | 1.2.5.10 | Dala de cerramiento CR-1 | 6d | 2026-06-23 A | 2026-06-30 A | 51, 52FS+2d, 53FS+2d | 100% |  | 2026-06-08 | 2026-06-12 | 4d | 2026-06-17 | 2026-06-23 |  |  |
| 60 | 1.2.5.11 | Dala de cerramiento CR-2 | 8d | 2026-06-23 A | 2026-07-02 A | 51, 52FS+2d, 53FS+2d | 100% |  | 2026-06-08 | 2026-06-11 | 3d | 2026-06-17 | 2026-06-22 |  |  |
| 61 | 1.2.5.12 | Cadena block dala | 8d | 2026-06-19 A | 2026-06-30 A | 56FS-3d | 100% |  | 2026-06-11 | 2026-06-16 | 4d | 2026-06-22 | 2026-06-26 |  |  |
| 62 | 1.2.5.13 | Muro de ladrillo aparente | 22d | 2026-06-08 A | 2026-07-04 A | 44FS+5d | 100% |  | 2026-06-02 | 2026-06-19 | 15d | 2026-06-08 | 2026-06-26 |  |  |
| 63 | 1.2.5.14 | Muro de block planta baja | 20d | 2026-06-10 A | 2026-07-04 A | 44FS+7d | 100% |  | 2026-06-04 | 2026-06-19 | 13d | 2026-06-10 | 2026-06-26 |  |  |
| 64 | 1.2.6 | **ESCALERA** | 14d | 2026-07-27 | 2026-08-12 |  |  |  | 2026-07-09 | 2026-07-27 | 14d | 2026-07-15 | 2026-08-01 | 140d |  |
| 65 | 1.2.6.1 | Escalera de concreto armado | 14d | 2026-07-27 | 2026-08-12 | 80 |  |  | 2026-07-09 | 2026-07-27 | 14d | 2026-07-15 | 2026-08-01 | 140d |  |
| 66 | 1.2.7 | **LOSA DE ENTREPISO (viegueta y caseton)** | 17d | 2026-07-07 A | 2026-07-28 |  | 23% | 13.12d | 2026-06-17 | 2026-07-09 | 18d | 2026-06-24 | 2026-07-16 | 153d |  |
| 67 | 1.2.7.1 | Vigueta pretensada 1.40 m | 3d | 2026-07-10 A | 2026-07-14 | 62FS+4d, 63 | 54% | 1.38d | 2026-06-17 | 2026-06-22 | 3d | 2026-06-24 | 2026-06-27 | 28d | 1d |
| 68 | 1.2.7.2 | Vigueta pretensada 1.95 m | 4d | 2026-07-10 A | 2026-07-15 | 62FS+4d, 63 | 41% | 2.38d | 2026-06-18 | 2026-06-24 | 4d | 2026-06-25 | 2026-06-30 | 27d | 0d |
| 69 | 1.2.7.3 | Vigueta pretensada 3.35 m | 4d | 2026-07-10 A | 2026-07-15 | 62FS+4d, 63 | 41% | 2.38d | 2026-06-19 | 2026-06-25 | 4d | 2026-06-26 | 2026-07-01 | 27d | 0d |
| 70 | 1.2.7.4 | Vigueta pretensada 3.50 m | 4d | 2026-07-10 A | 2026-07-15 | 62FS+4d, 63FS+1d | 41% | 2.38d | 2026-06-22 | 2026-06-26 | 4d | 2026-06-27 | 2026-07-02 | 27d | 0d |
| 71 | 1.2.7.5 | Vigueta pretensada 3.75 m | 4d | 2026-07-10 A | 2026-07-15 | 62FS+4d, 63FS+1d | 41% | 2.38d | 2026-06-22 | 2026-06-26 | 4d | 2026-06-27 | 2026-07-02 | 27d | 0d |
| 72 | 1.2.7.6 | Vigueta pretensada 3.90 m | 4d | 2026-07-10 A | 2026-07-15 | 62FS+4d, 63FS+1d | 41% | 2.38d | 2026-06-22 | 2026-06-26 | 4d | 2026-06-27 | 2026-07-02 | 27d | 0d |
| 73 | 1.2.7.7 | Bovedilla poliestireno entrepiso | 2d | 2026-07-15 | 2026-07-17 | 67, 68, 69, 70, 71, 72 |  |  | 2026-06-26 | 2026-06-29 | 2d | 2026-07-02 | 2026-07-04 | 27d | 0d |
| 74 | 1.2.7.8 | Dala de coronamiento | 3d | 2026-07-15 | 2026-07-18 | 79FS-1d, 67, 68, 69, 70, 71, 72 |  |  | 2026-06-26 | 2026-06-30 | 3d | 2026-07-02 | 2026-07-06 | 30d | 3d |
| 75 | 1.2.7.9 | Nervadura NR-1 | 3d | 2026-07-15 | 2026-07-18 | 79, 67, 68, 69, 70, 71, 72 |  |  | 2026-06-27 | 2026-07-01 | 3d | 2026-07-03 | 2026-07-07 | 27d | 0d |
| 76 | 1.2.7.10 | Nervadura NR-2 | 3d | 2026-07-15 | 2026-07-18 | 75SS |  |  | 2026-06-27 | 2026-07-01 | 3d | 2026-07-03 | 2026-07-07 | 29d | 0d |
| 77 | 1.2.7.11 | Trabe TR-1 | 5d | 2026-07-15 | 2026-07-21 | 75SS |  |  | 2026-06-27 | 2026-07-03 | 5d | 2026-07-03 | 2026-07-09 | 27d | 0d |
| 78 | 1.2.7.12 | Malla 66-10/10 losa de compresión | 2d | 2026-07-22 | 2026-07-24 | 73, 74, 88, 91 |  |  | 2026-07-03 | 2026-07-06 | 2d | 2026-07-10 | 2026-07-13 | 27d | 0d |
| 79 | 1.2.7.13 | Cimbra losa de azotea | 5d | 2026-07-07 A | 2026-07-13 | 62FS+1d, 63FS+1d | 93% | 0.38d | 2026-06-22 | 2026-06-27 | 5d | 2026-06-27 | 2026-07-03 | 29d | 2d |
| 80 | 1.2.7.14 | Concreto losa de entrepiso f’c=200 | 1d | 2026-07-24 | 2026-07-27 | 75, 76, 77, 78, 85, 88, 91, 82, 93 |  |  | 2026-07-08 | 2026-07-08 | 1d | 2026-07-14 | 2026-07-15 | 27d | 0d |
| 81 | 1.2.7.15 | Curado de concreto | 1d | 2026-07-27 | 2026-07-28 | 80 |  |  | 2026-07-09 | 2026-07-09 | 1d | 2026-07-15 | 2026-07-16 | 27d | 0d |
| 82 | 1.2.7.16 | Cimbra exterior corta losa | 3d | 2026-07-17 | 2026-07-21 | 75FS-1d, 76FS-1d |  |  | 2026-06-30 | 2026-07-03 | 3d | 2026-07-07 | 2026-07-09 | 30d | 3d |
| 83 | 1.2.7.17 | Ramaleo poliducto eléctrico entrepiso | 2d | 2026-07-17 | 2026-07-20 | 73 |  |  | 2026-06-29 | 2026-07-01 | 2d | 2026-07-06 | 2026-07-07 | 30d | 0d |
| 84 | 1.2.7.18 | Ramaleo para cable poliducto 3/4 | 1d | 2026-07-17 | 2026-07-18 | 73 |  |  | 2026-06-29 | 2026-06-30 | 1d | 2026-07-06 | 2026-07-06 | 160d |  |
| 85 | 1.2.7.19 | Ramaleo para TV poliducto 3/4 | 1d | 2026-07-20 | 2026-07-21 | 83 |  |  | 2026-07-01 | 2026-07-02 | 1d | 2026-07-08 | 2026-07-08 | 30d | 3d |
| 86 | 1.2.7.20 | Ramaleo hidráulico CPVC 3/4 | 2d | 2026-07-18 | 2026-07-21 | 73FS+1d |  |  | 2026-06-30 | 2026-07-02 | 2d | 2026-07-07 | 2026-07-08 | 27d | 0d |
| 87 | 1.2.7.21 | Ramaleo hidráulico CPVC 1/2 | 1d | 2026-07-21 | 2026-07-22 | 86 |  |  | 2026-07-02 | 2026-07-03 | 1d | 2026-07-09 | 2026-07-09 | 27d | 0d |
| 88 | 1.2.7.22 | Prueba hidráulica | 1d | 2026-07-21 | 2026-07-22 | 86, 87FS-1d |  |  | 2026-07-02 | 2026-07-03 | 1d | 2026-07-09 | 2026-07-09 | 27d | 0d |
| 89 | 1.2.7.23 | Ramaleo sanitario PVC 4 | 2d | 2026-07-18 | 2026-07-21 | 73FS+1d |  |  | 2026-06-30 | 2026-07-02 | 2d | 2026-07-07 | 2026-07-08 | 27d | 0d |
| 90 | 1.2.7.24 | Ramaleo sanitario PVC 2 | 1d | 2026-07-21 | 2026-07-22 | 89 |  |  | 2026-07-02 | 2026-07-03 | 1d | 2026-07-09 | 2026-07-09 | 27d | 0d |
| 91 | 1.2.7.25 | Prueba sanitaria | 1d | 2026-07-21 | 2026-07-22 | 89, 90FS-1d |  |  | 2026-07-02 | 2026-07-03 | 1d | 2026-07-09 | 2026-07-09 | 27d | 0d |

| ID | WBS | Task | Duration | Start | Finish | Predecessors | Baseline start | Baseline finish | Baseline duration | Baseline 1 start | Baseline 1 finish | Total slack | Free slack |
| --- | --- | --- | --- | --- | --- | --- | --- | --- | --- | --- | --- | --- | --- |
| 92 | 1.2.8 | **MUROS EN PLANTA ALTA, CASTILLOS Y CERRM.** | 21d | 2026-07-20 | 2026-08-14 |  | 2026-07-02 | 2026-07-29 | 21d | 2026-07-09 | 2026-08-04 | 27d |  |
| 93 | 1.2.8.1 | Anclaje de castillos y Columnas PA | 4d | 2026-07-20 | 2026-07-24 | 75FS-1d, 76FS-1d, 77FS-1d | 2026-07-02 | 2026-07-07 | 4d | 2026-07-09 | 2026-07-14 | 27d | 0d |
| 94 | 1.2.8.2 | Castillo K1 | 4d | 2026-07-28 | 2026-08-01 | 81 | 2026-07-10 | 2026-07-15 | 4d | 2026-07-16 | 2026-07-21 | 31d | 0d |
| 95 | 1.2.8.3 | Castillo K2 | 4d | 2026-07-29 | 2026-08-03 | 81FS+1d | 2026-07-11 | 2026-07-16 | 4d | 2026-07-17 | 2026-07-22 | 30d | 0d |
| 96 | 1.2.8.4 | Castillo K3 | 3d | 2026-07-30 | 2026-08-03 | 81FS+2d | 2026-07-13 | 2026-07-16 | 3d | 2026-07-18 | 2026-07-22 | 30d | 0d |
| 97 | 1.2.8.5 | Castillo K4 | 3d | 2026-08-01 | 2026-08-05 | 94 | 2026-07-15 | 2026-07-18 | 3d | 2026-07-21 | 2026-07-24 | 31d | 1d |
| 98 | 1.2.8.6 | Castillo K5 | 3d | 2026-08-01 | 2026-08-05 | 94 | 2026-07-15 | 2026-07-18 | 3d | 2026-07-21 | 2026-07-24 | 31d | 1d |
| 99 | 1.2.8.7 | Refuerzo de muro K6 | 3d | 2026-08-03 | 2026-08-06 | 94, 95, 96 | 2026-07-16 | 2026-07-20 | 3d | 2026-07-22 | 2026-07-27 | 30d | 0d |
| 100 | 1.2.8.8 | Dala de cerramiento CR-1 | 4d | 2026-08-06 | 2026-08-11 | 97, 98, 99 | 2026-07-20 | 2026-07-24 | 4d | 2026-07-27 | 2026-07-31 | 30d | 0d |
| 101 | 1.2.8.9 | Cadena block dala | 3d | 2026-08-11 | 2026-08-14 | 99, 100 | 2026-07-24 | 2026-07-29 | 3d | 2026-07-31 | 2026-08-04 | 30d | 0d |
| 102 | 1.2.8.10 | Muro de ladrillo aparente | 15d | 2026-07-28 | 2026-08-14 | 81 | 2026-07-10 | 2026-07-29 | 15d | 2026-07-16 | 2026-08-04 | 27d | 0d |
| 103 | 1.2.8.11 | Muro de block planta alta | 14d | 2026-07-29 | 2026-08-14 | 81FS+1d | 2026-07-11 | 2026-07-29 | 14d | 2026-07-17 | 2026-08-04 | 27d | 0d |
| 104 | 1.2.9 | **LOSA AZOTEA** | 15d | 2026-08-14 | 2026-09-02 |  | 2026-07-29 | 2026-08-17 | 15d | 2026-08-04 | 2026-08-22 | 27d |  |
| 105 | 1.2.9.1 | Cortalosa CL-1 | 2d | 2026-08-28 | 2026-08-31 | 113 | 2026-08-11 | 2026-08-13 | 2d | 2026-08-18 | 2026-08-20 | 27d | 0d |
| 106 | 1.2.9.2 | Vigueta pretensada V11-40 390 | 5d | 2026-08-14 | 2026-08-21 | 102, 103, 101 | 2026-07-29 | 2026-08-04 | 5d | 2026-08-04 | 2026-08-10 | 30d | 3d |
| 107 | 1.2.9.3 | Vigueta pretensada V11-30 280 | 5d | 2026-08-14 | 2026-08-21 | 102, 103 | 2026-07-29 | 2026-08-04 | 5d | 2026-08-04 | 2026-08-10 | 30d | 3d |
| 108 | 1.2.9.4 | Vigueta pretensada V11-30 285 | 5d | 2026-08-14 | 2026-08-21 | 102, 103 | 2026-07-29 | 2026-08-04 | 5d | 2026-08-04 | 2026-08-10 | 30d | 3d |
| 109 | 1.2.9.5 | Vigueta pretensada V11-30 220 | 5d | 2026-08-18 | 2026-08-24 | 102FS+2d, 103FS+2d | 2026-07-31 | 2026-08-06 | 5d | 2026-08-06 | 2026-08-12 | 28d | 1d |
| 110 | 1.2.9.6 | Vigueta pretensada V11-40 75 | 5d | 2026-08-18 | 2026-08-24 | 102FS+2d, 103FS+2d | 2026-07-31 | 2026-08-06 | 5d | 2026-08-06 | 2026-08-12 | 28d | 1d |
| 111 | 1.2.9.7 | Vigueta pretensada V11-40 195 | 5d | 2026-08-19 | 2026-08-25 | 102FS+3d, 103FS+3d | 2026-08-01 | 2026-08-07 | 5d | 2026-08-07 | 2026-08-13 | 27d | 0d |
| 112 | 1.2.9.8 | Vigueta pretensada V11-50 450 | 5d | 2026-08-19 | 2026-08-25 | 102FS+3d, 103FS+3d | 2026-08-01 | 2026-08-07 | 5d | 2026-08-07 | 2026-08-13 | 27d | 0d |
| 113 | 1.2.9.9 | Bovedilla poliestireno azotea | 3d | 2026-08-25 | 2026-08-28 | 106, 107, 108, 109, 110, 111, 112 | 2026-08-07 | 2026-08-11 | 3d | 2026-08-13 | 2026-08-18 | 27d | 0d |
| 114 | 1.2.9.10 | Malla 66-10/10 losa de compresión | 2d | 2026-08-28 | 2026-08-31 | 113 | 2026-08-11 | 2026-08-13 | 2d | 2026-08-18 | 2026-08-20 | 27d | 0d |
| 115 | 1.2.9.11 | Concreto losa de azotea f’c=200 | 1d | 2026-09-01 | 2026-09-01 | 105, 113, 114, 118, 117 | 2026-08-13 | 2026-08-14 | 1d | 2026-08-20 | 2026-08-21 | 27d | 0d |
| 116 | 1.2.9.12 | Curado de concreto | 1d | 2026-09-02 | 2026-09-02 | 115 | 2026-08-14 | 2026-08-17 | 1d | 2026-08-21 | 2026-08-22 | 27d | 0d |
| 117 | 1.2.9.13 | Cimbra losa de azotea | 5d | 2026-08-14 | 2026-08-21 | 102, 103 | 2026-07-29 | 2026-08-04 | 5d | 2026-08-04 | 2026-08-10 | 35d | 8d |
| 118 | 1.2.9.14 | Ramaleo de poliducto para inst. electrica en azotea | 2d | 2026-08-28 | 2026-08-31 | 113 | 2026-08-11 | 2026-08-13 | 2d | 2026-08-18 | 2026-08-20 | 27d | 0d |

| ID | WBS | Task | Duration | Start | Finish | Predecessors | Baseline start | Baseline finish | Baseline duration | Baseline 1 start | Baseline 1 finish | Total slack | Free slack |
| --- | --- | --- | --- | --- | --- | --- | --- | --- | --- | --- | --- | --- | --- |
| 119 | 1.2.10 | **PRETIL Y ACABADOS DE AZOTEA** | 19d | 2026-09-03 | 2026-09-28 |  | 2026-08-17 | 2026-09-09 | 19d | 2026-08-22 | 2026-09-15 | 27d |  |
| 120 | 1.2.10.1 | Castillo K1 | 5d | 2026-09-05 | 2026-09-11 | 122SS+2d | 2026-08-19 | 2026-08-25 | 5d | 2026-08-25 | 2026-08-31 | 27d | 0d |
| 121 | 1.2.10.2 | Dala de cerramiento en pretil | 4d | 2026-09-09 | 2026-09-14 | 120FS-2d, 122FS-2d | 2026-08-22 | 2026-08-27 | 4d | 2026-08-28 | 2026-09-02 | 27d | 0d |
| 122 | 1.2.10.3 | Muro de block 12x15x40 | 5d | 2026-09-03 | 2026-09-09 | 116 | 2026-08-17 | 2026-08-22 | 5d | 2026-08-22 | 2026-08-28 | 27d | 0d |
| 123 | 1.2.10.4 | Chaflán en azotea | 4d | 2026-09-11 | 2026-09-17 | 122, 120 | 2026-08-25 | 2026-08-29 | 4d | 2026-09-01 | 2026-09-04 | 27d | 0d |
| 124 | 1.2.10.5 | Aplanado exterior Mortermax fino | 5d | 2026-09-14 | 2026-09-22 | 123FS-2d, 121 | 2026-08-27 | 2026-09-02 | 5d | 2026-09-03 | 2026-09-09 | 27d | 0d |
| 125 | 1.2.10.6 | Acabado de azotea para impermeabilizar | 4d | 2026-09-23 | 2026-09-28 | 126 | 2026-09-04 | 2026-09-09 | 4d | 2026-09-10 | 2026-09-15 | 27d | 0d |
| 126 | 1.2.10.7 | Curado de concreto | 1d | 2026-09-22 | 2026-09-23 | 123, 124 | 2026-09-03 | 2026-09-03 | 1d | 2026-09-09 | 2026-09-10 | 27d | 0d |
| 127 | 1.2.11 | **PRIMERA LIMPIEZA DE OBRA** | 4d | 2026-09-03 | 2026-09-08 |  | 2026-08-17 | 2026-08-21 | 4d | 2026-08-22 | 2026-08-27 | 80d |  |
| 128 | 1.2.11.1 | Primera limpieza de obra | 2d | 2026-09-03 | 2026-09-04 | 116 | 2026-08-17 | 2026-08-19 | 2d | 2026-08-22 | 2026-08-25 | 80d | 0d |
| 129 | 1.2.11.2 | Primera carga y acarreo de escombro | 2d | 2026-09-05 | 2026-09-08 | 128 | 2026-08-19 | 2026-08-21 | 2d | 2026-08-25 | 2026-08-27 | 80d | 1d |
| 130 | 1.2.12 | **IMPERMEABILIZACION** | 5d | 2026-09-28 | 2026-10-03 |  | 2026-09-09 | 2026-09-15 | 5d | 2026-09-15 | 2026-09-23 | 27d |  |
| 131 | 1.2.12.1 | Impermeabilización de pretil Kover 5 años | 4d | 2026-09-28 | 2026-10-02 | 125 | 2026-09-09 | 2026-09-14 | 4d | 2026-09-15 | 2026-09-22 | 28d | 1d |
| 132 | 1.2.12.2 | Impermeabilización de losa Kover 5 años | 5d | 2026-09-28 | 2026-10-03 | 125 | 2026-09-09 | 2026-09-15 | 5d | 2026-09-15 | 2026-09-23 | 27d | 0d |
| 133 | 1.2.13 | **ALBAÑILERIA** | 62d | 2026-09-09 | 2026-11-27 |  | 2026-08-22 | 2026-11-09 | 62d | 2026-08-28 | 2026-11-17 | 46d |  |
| 134 | 1.2.13.1 | Lavadero de granito | 4d | 2026-10-23 | 2026-10-28 | 158SS+8d | 2026-10-06 | 2026-10-12 | 4d | 2026-10-13 | 2026-10-17 | 79d |  |
| 135 | 1.2.13.2 | Ramaleo hidráulico exterior CPVC 1 1/4 | 3d | 2026-10-03 | 2026-10-07 | 131, 132 | 2026-09-15 | 2026-09-21 | 3d | 2026-09-23 | 2026-09-26 | 27d | 0d |
| 136 | 1.2.13.3 | Ramaleo hidráulico exterior CPVC 1 | 2d | 2026-10-03 | 2026-10-06 | 135SS | 2026-09-15 | 2026-09-18 | 2d | 2026-09-23 | 2026-09-25 | 27d | 0d |
| 137 | 1.2.13.4 | Ramaleo hidráulico exterior CPVC 3/4 | 2d | 2026-10-06 | 2026-10-08 | 136 | 2026-09-18 | 2026-09-22 | 2d | 2026-09-25 | 2026-09-28 | 27d | 0d |
| 138 | 1.2.13.5 | Ramaleo hidráulico exterior CPVC 1/2 | 2d | 2026-10-06 | 2026-10-08 | 136 | 2026-09-18 | 2026-09-22 | 2d | 2026-09-25 | 2026-09-28 | 27d | 0d |
| 139 | 1.2.13.6 | Prueba hidráulica | 1d | 2026-10-08 | 2026-10-09 | 135, 136, 137, 138 | 2026-09-22 | 2026-09-23 | 1d | 2026-09-28 | 2026-09-29 | 27d | 0d |
| 140 | 1.2.13.7 | Ramaleo sanitario exterior PVC 4 | 4d | 2026-10-03 | 2026-10-08 | 131, 132 | 2026-09-15 | 2026-09-22 | 4d | 2026-09-23 | 2026-09-28 | 27d | 0d |
| 141 | 1.2.13.8 | Ramaleo sanitario exterior PVC 2 | 3d | 2026-10-05 | 2026-10-08 | 140SS+1d | 2026-09-17 | 2026-09-22 | 3d | 2026-09-24 | 2026-09-28 | 27d | 0d |
| 142 | 1.2.13.9 | Prueba sanitaria | 1d | 2026-10-08 | 2026-10-09 | 140, 141 | 2026-09-22 | 2026-09-23 | 1d | 2026-09-28 | 2026-09-29 | 27d | 0d |
| 143 | 1.2.13.10 | Centro de carga muros PB | 4d | 2026-10-07 | 2026-10-13 | 131FS+3d, 132FS+3d | 2026-09-21 | 2026-09-25 | 4d | 2026-09-26 | 2026-10-01 | 29d | 2d |
| 144 | 1.2.13.11 | Firme de concreto 8 cm | 4d | 2026-10-09 | 2026-10-15 | 139, 142, 146 | 2026-09-23 | 2026-09-28 | 4d | 2026-09-29 | 2026-10-03 | 73d | 0d |
| 145 | 1.2.13.12 | Curado de concreto | 1d | 2026-10-15 | 2026-10-16 | 144 | 2026-09-28 | 2026-09-29 | 1d | 2026-10-03 | 2026-10-05 | 73d | 17d |
| 146 | 1.2.13.13 | Cisterna 2800 L con instalación | 18d | 2026-09-09 | 2026-10-02 | 122, 128, 129 | 2026-08-22 | 2026-09-14 | 18d | 2026-08-28 | 2026-09-22 | 79d | 0d |
| 147 | 1.2.13.14 | Banqueta y huellas de concreto | 8d | 2026-10-17 | 2026-10-27 | 139, 142, 180, 235FS-2d, 241 | 2026-09-30 | 2026-10-09 | 8d | 2026-10-06 | 2026-10-16 | 56d | 0d |
| 148 | 1.2.13.15 | Curado de concreto | 1d | 2026-10-28 | 2026-10-28 | 147 | 2026-10-09 | 2026-10-12 | 1d | 2026-10-16 | 2026-10-17 | 56d | 0d |
| 149 | 1.2.13.16 | Número oficial | 1d | 2026-11-26 | 2026-11-27 | 155, 156 | 2026-11-07 | 2026-11-09 | 1d | 2026-11-13 | 2026-11-17 | 56d |  |
| 150 | 1.2.13.17 | Detallado de rodapié exterior | 4d | 2026-10-13 | 2026-10-17 | 153 | 2026-09-25 | 2026-09-30 | 4d | 2026-10-01 | 2026-10-06 | 88d |  |
| 151 | 1.2.13.18 | Detallado de muros interiores | 4d | 2026-10-03 | 2026-10-08 | 131, 132 | 2026-09-15 | 2026-09-22 | 4d | 2026-09-23 | 2026-09-28 | 31d | 4d |

| ID | WBS | Task | Duration | Start | Finish | Predecessors | Baseline start | Baseline finish | Baseline duration | Baseline 1 start | Baseline 1 finish | Total slack | Free slack |
| --- | --- | --- | --- | --- | --- | --- | --- | --- | --- | --- | --- | --- | --- |
| 152 | 1.2.14 | **ACABADOS EN FACHADA A** | 47d | 2026-09-28 | 2026-11-26 |  | 2026-09-09 | 2026-11-07 | 47d | 2026-09-15 | 2026-11-13 | 57d |  |
| 153 | 1.2.14.1 | Aplanado grueso fachada | 12d | 2026-09-28 | 2026-10-13 | 125 | 2026-09-09 | 2026-09-25 | 12d | 2026-09-15 | 2026-10-01 | 87d | 0d |
| 154 | 1.2.14.2 | Aplanado fino estuco fachada | 10d | 2026-10-06 | 2026-10-19 | 153SS+7d | 2026-09-18 | 2026-10-01 | 10d | 2026-09-25 | 2026-10-07 | 87d |  |
| 155 | 1.2.14.3 | Pintura acrílica 1-0102P | 8d | 2026-11-12 | 2026-11-24 | 145FS+5d, 148FS+12d | 2026-10-27 | 2026-11-05 | 8d | 2026-11-02 | 2026-11-11 | 58d | 2d |
| 156 | 1.2.14.4 | Pintura acrílica 1-1404D | 10d | 2026-11-12 | 2026-11-26 | 145FS+5d, 148FS+12d | 2026-10-27 | 2026-11-07 | 10d | 2026-11-02 | 2026-11-13 | 56d | 0d |
| 157 | 1.2.15 | **APLANADOS Y PINTURA** | 63d | 2026-10-03 | 2026-12-22 |  | 2026-09-15 | 2026-12-04 | 63d | 2026-09-23 | 2026-12-11 | 29d |  |
| 158 | 1.2.15.1 | Yeso pulido en muros | 14d | 2026-10-14 | 2026-10-30 | 161FS-4d, 151, 143FS-1d, 215FS-2d, 216, 217, 218, 219, 220FS-1d, 221FS-1d, 222FS-1d, 223FS-1d, 224FS-2d, 225FS-2d, 226FS-3d, 229FS-1d, 230FS-5d, 231FS-5d, 232FS-6d, 233FS-2d, 234FS-7d | 2026-09-26 | 2026-10-14 | 14d | 2026-10-02 | 2026-10-20 | 27d | 0d |
| 159 | 1.2.15.2 | Pintura vinílica 699 Cottage White | 13d | 2026-12-07 | 2026-12-22 | 166FS-2d, 167FS-2d, 178FS-2d, 185, 186, 187, 188, 189, 190, 192, 193, 194, 195, 244, 245, 246, 247 | 2026-11-19 | 2026-12-04 | 13d | 2026-11-25 | 2026-12-11 | 27d | 0d |
| 160 | 1.2.15.3 | Pintura vinílica 691 Pacific Bungalow | 10d | 2026-11-25 | 2026-12-08 | 166, 167, 178 | 2026-11-06 | 2026-11-20 | 10d | 2026-11-12 | 2026-11-26 | 48d |  |
| 161 | 1.2.15.4 | Yeso pulido en plafones | 10d | 2026-10-03 | 2026-10-16 | 131, 132 | 2026-09-15 | 2026-09-29 | 10d | 2026-09-23 | 2026-10-05 | 29d | 2d |
| 162 | 1.2.15.5 | Pintura vinílica Nano White | 7d | 2026-11-28 | 2026-12-08 | 166FS+3d, 167FS+3d, 178FS+3d | 2026-11-10 | 2026-11-20 | 7d | 2026-11-18 | 2026-11-26 | 48d |  |
| 163 | 1.2.15.6 | Perfilado de puertas y ventanas | 4d | 2026-10-19 | 2026-10-23 | 158SS+4d | 2026-10-01 | 2026-10-06 | 4d | 2026-10-07 | 2026-10-13 | 83d |  |
| 164 | 1.2.16 | **PISOS Y AZULEJOS** | 23d | 2026-10-27 | 2026-11-25 |  | 2026-10-08 | 2026-11-06 | 23d | 2026-10-15 | 2026-11-12 | 29d |  |
| 165 | 1.2.16.1 | **AREA SOCIAL** | 15d | 2026-10-29 | 2026-11-18 |  | 2026-10-12 | 2026-10-29 | 15d | 2026-10-17 | 2026-11-05 | 27d |  |
| 166 | 1.2.16.1.1 | Piso Moonside Crema 60x60 | 14d | 2026-10-29 | 2026-11-17 | 158FS-2d, 237, 236 | 2026-10-12 | 2026-10-28 | 14d | 2026-10-17 | 2026-11-04 | 27d | 0d |
| 167 | 1.2.16.1.2 | Zoclo piso 60x60 Moonside Crema | 5d | 2026-11-10 | 2026-11-18 | 166FS-4d | 2026-10-23 | 2026-10-29 | 5d | 2026-10-30 | 2026-11-05 | 44d | 6d |
| 168 | 1.2.16.2 | **BAÑOS** | 17d | 2026-10-27 | 2026-11-18 |  | 2026-10-08 | 2026-10-29 | 17d | 2026-10-15 | 2026-11-05 | 38d |  |
| 169 | 1.2.16.2.1 | Piso Moonside Crema 60x60 | 4d | 2026-11-10 | 2026-11-17 | 173 | 2026-10-23 | 2026-10-28 | 4d | 2026-10-30 | 2026-11-04 | 38d | 0d |
| 170 | 1.2.16.2.2 | Zoclo piso 60x60 Moonside Crema | 2d | 2026-11-13 | 2026-11-18 | 169FS-1d | 2026-10-28 | 2026-10-29 | 2d | 2026-11-03 | 2026-11-05 | 64d |  |
| 171 | 1.2.16.2.3 | Piso porcelánico Acali 20x20 beige | 3d | 2026-11-10 | 2026-11-13 | 173 | 2026-10-23 | 2026-10-27 | 3d | 2026-10-30 | 2026-11-03 | 66d |  |
| 172 | 1.2.16.2.4 | Impermeabilización en regadera | 2d | 2026-11-03 | 2026-11-05 | 158, 174 | 2026-10-16 | 2026-10-19 | 2d | 2026-10-22 | 2026-10-24 | 38d | 0d |
| 173 | 1.2.16.2.5 | Azulejo Moonside Crema 60x60 | 5d | 2026-11-04 | 2026-11-10 | 172FS-1d, 227, 228, 237 | 2026-10-17 | 2026-10-23 | 5d | 2026-10-23 | 2026-10-29 | 38d | 0d |
| 174 | 1.2.16.2.6 | Fabricacion de nicho decorativo en baños | 6d | 2026-10-27 | 2026-11-03 | 158FS-4d | 2026-10-08 | 2026-10-16 | 6d | 2026-10-15 | 2026-10-22 | 38d | 0d |
| 175 | 1.2.16.2.7 | Sardinel en regadera | 4d | 2026-11-10 | 2026-11-17 | 173 | 2026-10-23 | 2026-10-28 | 4d | 2026-10-30 | 2026-11-04 | 65d |  |

| ID | WBS | Task | Duration | Start | Finish | Predecessors | Baseline start | Baseline finish | Baseline duration | Baseline 1 start | Baseline 1 finish | Total slack | Free slack |
| --- | --- | --- | --- | --- | --- | --- | --- | --- | --- | --- | --- | --- | --- |
| 176 | 1.2.16.3 | **ESCALERA** | 9d | 2026-11-12 | 2026-11-25 |  | 2026-10-27 | 2026-11-06 | 9d | 2026-11-02 | 2026-11-12 | 27d |  |
| 177 | 1.2.16.3.1 | Piso Moonside Crema 60x60 | 7d | 2026-11-12 | 2026-11-23 | 158, 166FS-2d | 2026-10-27 | 2026-11-04 | 7d | 2026-11-02 | 2026-11-10 | 27d | 0d |
| 178 | 1.2.16.3.2 | Zoclo piso 60x60 Moonside Crema | 4d | 2026-11-20 | 2026-11-25 | 177FS-2d | 2026-11-02 | 2026-11-06 | 4d | 2026-11-07 | 2026-11-12 | 27d | 0d |
| 179 | 1.2.17 | **EXTERIOR** | 3d | 2026-10-09 | 2026-10-14 |  | 2026-09-23 | 2026-09-26 | 3d | 2026-09-29 | 2026-10-02 | 33d |  |
| 180 | 1.2.17.1 | Rastrilleo, afine y nivelado de tierra | 3d | 2026-10-09 | 2026-10-14 | 139, 142 | 2026-09-23 | 2026-09-26 | 3d | 2026-09-29 | 2026-10-02 | 33d | 0d |
| 181 | 1.2.18 | **SEGUNDA LIMPIEZA DE OBRA** | 4d | 2026-11-25 | 2026-11-30 |  | 2026-11-06 | 2026-11-11 | 4d | 2026-11-12 | 2026-11-19 | 45d |  |
| 182 | 1.2.18.1 | Segunda limpieza de obra | 2d | 2026-11-25 | 2026-11-27 | 177, 178 | 2026-11-06 | 2026-11-09 | 2d | 2026-11-12 | 2026-11-17 | 45d | 0d |
| 183 | 1.2.18.2 | Segunda carga y acarreo de escombro | 2d | 2026-11-27 | 2026-11-30 | 182 | 2026-11-09 | 2026-11-11 | 2d | 2026-11-17 | 2026-11-19 | 45d | 18d |
| 184 | 1.2.19 | **CANCELERIA PUERTAS Y VENTANAS DE ALUMINIO** | 13d | 2026-11-12 | 2026-11-30 |  | 2026-10-27 | 2026-11-11 | 13d | 2026-11-02 | 2026-11-19 | 32d |  |
| 185 | 1.2.19.1 | Puerta ventana P-05 corrediza | 7d | 2026-11-17 | 2026-11-25 | 158, 166 | 2026-10-29 | 2026-11-06 | 7d | 2026-11-04 | 2026-11-12 | 36d | 9d |
| 186 | 1.2.19.2 | Ventana corrediza V-01 | 4d | 2026-11-12 | 2026-11-19 | 158FS+10d | 2026-10-27 | 2026-10-30 | 4d | 2026-11-02 | 2026-11-06 | 41d | 14d |
| 187 | 1.2.19.3 | Ventana corrediza V-03 | 4d | 2026-11-17 | 2026-11-21 | 158FS+12d | 2026-10-29 | 2026-11-03 | 4d | 2026-11-04 | 2026-11-09 | 39d | 12d |
| 188 | 1.2.19.4 | Ventana corrediza V-05 | 4d | 2026-11-17 | 2026-11-21 | 158FS+12d | 2026-10-29 | 2026-11-03 | 4d | 2026-11-04 | 2026-11-09 | 39d | 12d |
| 189 | 1.2.19.5 | Ventana corrediza tipo XO | 4d | 2026-11-20 | 2026-11-25 | 158FS+10d, 166FS+3d | 2026-11-02 | 2026-11-06 | 4d | 2026-11-07 | 2026-11-12 | 36d | 9d |
| 190 | 1.2.19.6 | Ventana fija escalera | 6d | 2026-11-23 | 2026-11-30 | 158FS+7d, 166FS+2d, 177 | 2026-11-04 | 2026-11-11 | 6d | 2026-11-10 | 2026-11-19 | 32d | 5d |
| 191 | 1.2.20 | **CARPINTERIA, PUERTAS EXTERIORES E INTERIORES** | 9d | 2026-11-25 | 2026-12-07 |  | 2026-11-06 | 2026-11-19 | 9d | 2026-11-12 | 2026-11-25 | 27d |  |
| 192 | 1.2.20.1 | Puerta P-01 de seguridad | 5d | 2026-11-25 | 2026-12-01 | 178 | 2026-11-06 | 2026-11-12 | 5d | 2026-11-12 | 2026-11-20 | 31d | 4d |
| 193 | 1.2.20.2 | Puerta P-03 interior | 8d | 2026-11-25 | 2026-12-04 | 178 | 2026-11-06 | 2026-11-18 | 8d | 2026-11-12 | 2026-11-24 | 28d | 1d |
| 194 | 1.2.20.3 | Puerta P-02 interior | 8d | 2026-11-25 | 2026-12-04 | 178 | 2026-11-06 | 2026-11-18 | 8d | 2026-11-12 | 2026-11-24 | 28d | 1d |
| 195 | 1.2.20.4 | Puerta exterior lavandería | 4d | 2026-12-01 | 2026-12-07 | 178FS+5d | 2026-11-12 | 2026-11-19 | 4d | 2026-11-20 | 2026-11-25 | 27d | 0d |
| 196 | 1.2.21 | **INSTALACION ELECTRICA** | 19d | 2026-10-22 | 2026-11-17 |  | 2026-10-05 | 2026-10-28 | 19d | 2026-10-12 | 2026-11-04 | 56d |  |
| 197 | 1.2.21.1 | Alimentación eléctrica base a centro de carga | 5d | 2026-10-31 | 2026-11-06 | 143, 158 | 2026-10-14 | 2026-10-20 | 5d | 2026-10-20 | 2026-10-26 | 60d | 0d |
| 198 | 1.2.21.2 | Interruptor termomagnético 1x15 A | 1d | 2026-11-06 | 2026-11-07 | 197 | 2026-10-20 | 2026-10-21 | 1d | 2026-10-27 | 2026-10-27 | 60d | 4d |
| 199 | 1.2.21.3 | Interruptor termomagnético 1x20 A | 1d | 2026-11-06 | 2026-11-07 | 197 | 2026-10-20 | 2026-10-21 | 1d | 2026-10-27 | 2026-10-27 | 60d | 4d |
| 200 | 1.2.21.4 | Interruptor termomagnético 2x20 A | 1d | 2026-11-06 | 2026-11-07 | 197 | 2026-10-20 | 2026-10-21 | 1d | 2026-10-27 | 2026-10-27 | 60d | 4d |
| 201 | 1.2.21.5 | Salida para apagador 3 vías | 4d | 2026-10-27 | 2026-10-30 | 131, 158FS-4d | 2026-10-08 | 2026-10-14 | 4d | 2026-10-15 | 2026-10-20 | 56d | 0d |
| 202 | 1.2.21.6 | Salida para apagador triple | 3d | 2026-10-31 | 2026-11-04 | 131, 132, 158 | 2026-10-14 | 2026-10-17 | 3d | 2026-10-20 | 2026-10-23 | 60d | 0d |
| 203 | 1.2.21.7 | Salida para apagador doble | 3d | 2026-11-04 | 2026-11-07 | 201, 202 | 2026-10-17 | 2026-10-21 | 3d | 2026-10-23 | 2026-10-27 | 60d | 4d |
| 204 | 1.2.21.8 | Salida para apagador sencillo | 3d | 2026-10-31 | 2026-11-04 | 201 | 2026-10-14 | 2026-10-17 | 3d | 2026-10-20 | 2026-10-23 | 63d | 7d |
| 205 | 1.2.21.9 | Salida de alumbrado en losa | 5d | 2026-10-31 | 2026-11-06 | 201 | 2026-10-14 | 2026-10-20 | 5d | 2026-10-20 | 2026-10-26 | 58d | 0d |
| 206 | 1.2.21.10 | Salida de alumbrado en muro | 4d | 2026-10-31 | 2026-11-05 | 201 | 2026-10-14 | 2026-10-19 | 4d | 2026-10-20 | 2026-10-24 | 62d | 6d |
| 207 | 1.2.21.11 | Salida para contacto 220 V | 3d | 2026-11-03 | 2026-11-06 | 201FS+2d | 2026-10-16 | 2026-10-20 | 3d | 2026-10-22 | 2026-10-26 | 56d | 0d |
| 208 | 1.2.21.12 | Salida para contacto doble | 5d | 2026-11-03 | 2026-11-09 | 201FS+2d | 2026-10-16 | 2026-10-22 | 5d | 2026-10-22 | 2026-10-28 | 59d | 3d |
| 209 | 1.2.21.13 | Salida para contacto doble área húmeda | 2d | 2026-11-06 | 2026-11-09 | 207 | 2026-10-20 | 2026-10-22 | 2d | 2026-10-27 | 2026-10-28 | 59d | 3d |
| 210 | 1.2.21.14 | Salida TV / telefonía / intercom | 4d | 2026-11-06 | 2026-11-11 | 207 | 2026-10-20 | 2026-10-24 | 4d | 2026-10-27 | 2026-10-30 | 57d | 1d |
| 211 | 1.2.21.15 | Extractor 4 baño | 5d | 2026-11-06 | 2026-11-12 | 207 | 2026-10-20 | 2026-10-26 | 5d | 2026-10-27 | 2026-11-02 | 56d | 0d |
| 212 | 1.2.21.16 | Prueba eléctrica | 2d | 2026-11-12 | 2026-11-17 | 197, 198, 199, 200, 201, 202, 203, 204, 205, 206, 207, 208, 209, 210, 211, 213, 260, 261, 262 | 2026-10-27 | 2026-10-28 | 2d | 2026-11-02 | 2026-11-04 | 56d | 29d |
| 213 | 1.2.21.17 | Murete convencional | 4d | 2026-10-22 | 2026-10-27 | 147FS-4d | 2026-10-05 | 2026-10-09 | 4d | 2026-10-12 | 2026-10-16 | 69d | 13d |

| ID | WBS | Task | Duration | Start | Finish | Predecessors | Baseline start | Baseline finish | Baseline duration | Baseline 1 start | Baseline 1 finish | Total slack | Free slack |
| --- | --- | --- | --- | --- | --- | --- | --- | --- | --- | --- | --- | --- | --- |
| 214 | 1.2.22 | **INSTALACIÓN HIDRO-SANITARIA** | 11d | 2026-10-09 | 2026-10-23 |  | 2026-09-23 | 2026-10-06 | 11d | 2026-09-29 | 2026-10-13 | 27d |  |
| 215 | 1.2.22.1 | Tubo PVC 3/4 red de condensados | 5d | 2026-10-09 | 2026-10-16 | 139 | 2026-09-23 | 2026-09-29 | 5d | 2026-09-29 | 2026-10-05 | 27d | 0d |
| 216 | 1.2.22.2 | Caja PVC para lavadora | 3d | 2026-10-09 | 2026-10-14 | 139 | 2026-09-23 | 2026-09-26 | 3d | 2026-09-29 | 2026-10-02 | 27d | 0d |
| 217 | 1.2.22.3 | Salida para secadora PVC 4 | 3d | 2026-10-09 | 2026-10-14 | 142 | 2026-09-23 | 2026-09-26 | 3d | 2026-09-29 | 2026-10-02 | 27d | 0d |
| 218 | 1.2.22.4 | Salida hidráulica para boiler | 2d | 2026-10-09 | 2026-10-13 | 139 | 2026-09-23 | 2026-09-25 | 2d | 2026-09-29 | 2026-10-01 | 28d | 1d |
| 219 | 1.2.22.5 | Salida hidráulica para llave de jardín | 3d | 2026-10-09 | 2026-10-14 | 139 | 2026-09-23 | 2026-09-26 | 3d | 2026-09-29 | 2026-10-02 | 27d | 0d |
| 220 | 1.2.22.6 | Salida hidráulica para lavabo | 4d | 2026-10-09 | 2026-10-15 | 139 | 2026-09-23 | 2026-09-28 | 4d | 2026-09-29 | 2026-10-03 | 27d | 0d |
| 221 | 1.2.22.7 | Salida hidráulica para purificación | 4d | 2026-10-09 | 2026-10-15 | 139 | 2026-09-23 | 2026-09-28 | 4d | 2026-09-29 | 2026-10-03 | 27d | 0d |
| 222 | 1.2.22.8 | Salida sanitaria para lavabo | 2d | 2026-10-13 | 2026-10-15 | 139FS+2d | 2026-09-25 | 2026-09-28 | 2d | 2026-10-01 | 2026-10-03 | 27d | 0d |
| 223 | 1.2.22.9 | Salida hidráulica para lavadero | 2d | 2026-10-13 | 2026-10-15 | 139FS+2d | 2026-09-25 | 2026-09-28 | 2d | 2026-10-01 | 2026-10-03 | 27d | 0d |
| 224 | 1.2.22.10 | Salida sanitaria para lavadero | 2d | 2026-10-14 | 2026-10-16 | 139FS+3d | 2026-09-26 | 2026-09-29 | 2d | 2026-10-02 | 2026-10-05 | 27d | 0d |
| 225 | 1.2.22.11 | Salida hidráulica para lavadora | 2d | 2026-10-14 | 2026-10-16 | 139FS+3d | 2026-09-26 | 2026-09-29 | 2d | 2026-10-02 | 2026-10-05 | 27d | 0d |
| 226 | 1.2.22.12 | Salida sanitaria para lavadora | 2d | 2026-10-15 | 2026-10-17 | 142FS+4d | 2026-09-28 | 2026-09-30 | 2d | 2026-10-03 | 2026-10-06 | 27d | 0d |
| 227 | 1.2.22.13 | Salida hidráulica para regadera | 5d | 2026-10-15 | 2026-10-21 | 139FS+4d | 2026-09-28 | 2026-10-03 | 5d | 2026-10-03 | 2026-10-09 | 32d | 0d |
| 228 | 1.2.22.14 | Salida sanitaria para regadera | 4d | 2026-10-15 | 2026-10-20 | 142FS+4d | 2026-09-28 | 2026-10-02 | 4d | 2026-10-03 | 2026-10-08 | 33d | 2d |
| 229 | 1.2.22.15 | Salida hidráulica para WC | 2d | 2026-10-13 | 2026-10-15 | 142FS+2d | 2026-09-25 | 2026-09-28 | 2d | 2026-10-01 | 2026-10-03 | 27d | 0d |
| 230 | 1.2.22.16 | Salida sanitaria para WC | 4d | 2026-10-15 | 2026-10-20 | 142FS+4d | 2026-09-28 | 2026-10-02 | 4d | 2026-10-03 | 2026-10-08 | 27d | 0d |
| 231 | 1.2.22.17 | Salida hidráulica para zinc | 4d | 2026-10-15 | 2026-10-20 | 142FS+4d | 2026-09-28 | 2026-10-02 | 4d | 2026-10-03 | 2026-10-08 | 27d | 0d |
| 232 | 1.2.22.18 | Salida sanitaria para zinc | 3d | 2026-10-17 | 2026-10-21 | 142FS+6d | 2026-09-30 | 2026-10-03 | 3d | 2026-10-06 | 2026-10-09 | 27d | 0d |
| 233 | 1.2.22.19 | Tubo para ventila de baño 2 | 5d | 2026-10-09 | 2026-10-16 | 215SS | 2026-09-23 | 2026-09-29 | 5d | 2026-09-29 | 2026-10-05 | 27d | 0d |
| 234 | 1.2.22.20 | Tubo para minisplit PVC 3 | 5d | 2026-10-16 | 2026-10-22 | 233 | 2026-09-29 | 2026-10-05 | 5d | 2026-10-05 | 2026-10-12 | 27d | 0d |
| 235 | 1.2.22.21 | Cuadro de medición | 5d | 2026-10-14 | 2026-10-20 | 180 | 2026-09-26 | 2026-10-02 | 5d | 2026-10-02 | 2026-10-08 | 33d | 0d |
| 236 | 1.2.22.22 | Prueba sanitaria | 1d | 2026-10-22 | 2026-10-23 | 217, 222, 224, 226, 228, 230, 233, 234 | 2026-10-05 | 2026-10-06 | 1d | 2026-10-12 | 2026-10-13 | 31d | 4d |
| 237 | 1.2.22.23 | Prueba hidráulica | 1d | 2026-10-21 | 2026-10-22 | 215, 218, 219, 220, 221, 223, 225, 227, 229, 231, 235, 238, 239 | 2026-10-03 | 2026-10-05 | 1d | 2026-10-09 | 2026-10-12 | 32d | 5d |
| 238 | 1.2.22.24 | Salida hidráulica para tanque hidroneumático | 3d | 2026-10-14 | 2026-10-17 | 180 | 2026-09-26 | 2026-09-30 | 3d | 2026-10-02 | 2026-10-06 | 35d | 3d |
| 239 | 1.2.22.25 | Salida hidráulica para Active Driver | 3d | 2026-10-14 | 2026-10-17 | 180 | 2026-09-26 | 2026-09-30 | 3d | 2026-10-02 | 2026-10-06 | 35d | 3d |

| ID | WBS | Task | Duration | Start | Finish | Predecessors | Baseline start | Baseline finish | Baseline duration | Baseline 1 start | Baseline 1 finish | Total slack | Free slack |
| --- | --- | --- | --- | --- | --- | --- | --- | --- | --- | --- | --- | --- | --- |
| 240 | 1.2.23 | **INSTALACION DE GAS** | 8d | 2026-10-07 | 2026-10-17 |  | 2026-09-21 | 2026-09-30 | 8d | 2026-09-26 | 2026-10-06 | 56d |  |
| 241 | 1.2.23.1 | Ramaleo para gas 1/2 | 5d | 2026-10-12 | 2026-10-17 | 180FS-2d, 242 | 2026-09-24 | 2026-09-30 | 5d | 2026-09-30 | 2026-10-06 | 56d | 0d |
| 242 | 1.2.23.2 | Excavación a mano material tipo B | 3d | 2026-10-07 | 2026-10-12 | 180FF-2d | 2026-09-21 | 2026-09-24 | 3d | 2026-09-26 | 2026-09-30 | 56d | 0d |
| 243 | 1.2.24 | **MUEBLES SANITARIOS** | 29d | 2026-11-17 | 2026-12-22 |  | 2026-10-29 | 2026-12-04 | 29d | 2026-11-04 | 2026-12-11 | 27d |  |
| 244 | 1.2.24.1 | WC one piece Smart Corona | 2d | 2026-11-17 | 2026-11-19 | 236, 237, 166, 169 | 2026-10-29 | 2026-10-30 | 2d | 2026-11-04 | 2026-11-06 | 41d | 14d |
| 245 | 1.2.24.2 | Lavabo Tarento Vanity | 4d | 2026-11-17 | 2026-11-21 | 236, 237, 166, 169, 173 | 2026-10-29 | 2026-11-03 | 4d | 2026-11-04 | 2026-11-09 | 39d | 12d |
| 246 | 1.2.24.3 | Regadera y monomando Thames | 3d | 2026-11-19 | 2026-11-23 | 236, 237, 173FS+2d, 166, 169FS+2d | 2026-10-31 | 2026-11-04 | 3d | 2026-11-06 | 2026-11-10 | 38d | 11d |
| 247 | 1.2.24.4 | Coladera cuadrada para inserto cerámico | 2d | 2026-11-20 | 2026-11-23 | 237, 173, 169FS+3d | 2026-11-02 | 2026-11-04 | 2d | 2026-11-07 | 2026-11-10 | 38d | 11d |
| 248 | 1.2.24.5 | Toallero argolla Thames | 1d | 2026-12-22 | 2026-12-22 | 159FS-1d | 2026-12-03 | 2026-12-04 | 1d | 2026-12-10 | 2026-12-11 | 27d | 0d |
| 249 | 1.2.24.6 | Toallero barra Thames | 1d | 2026-12-22 | 2026-12-22 | 159FS-1d | 2026-12-03 | 2026-12-04 | 1d | 2026-12-10 | 2026-12-11 | 27d | 0d |
| 250 | 1.2.24.7 | Portapapel Thames | 1d | 2026-12-22 | 2026-12-22 | 159FS-1d | 2026-12-03 | 2026-12-04 | 1d | 2026-12-10 | 2026-12-11 | 27d | 0d |
| 251 | 1.2.24.8 | Gancho percha Thames | 1d | 2026-12-22 | 2026-12-22 | 159FS-1d | 2026-12-03 | 2026-12-04 | 1d | 2026-12-10 | 2026-12-11 | 27d | 0d |
| 252 | 1.2.25 | **EQUIPAMIENTO** | 6d | 2026-10-01 | 2026-10-08 |  | 2026-09-12 | 2026-09-22 | 6d | 2026-09-21 | 2026-09-28 | 86d |  |
| 253 | 1.2.25.1 | Electronivel Rotoplas 5 m | 2d | 2026-10-02 | 2026-10-05 | 258 | 2026-09-14 | 2026-09-17 | 2d | 2026-09-22 | 2026-09-24 | 89d | 62d |
| 254 | 1.2.25.2 | Manómetro | 1d | 2026-10-02 | 2026-10-03 | 258 | 2026-09-14 | 2026-09-15 | 1d | 2026-09-22 | 2026-09-23 | 90d | 63d |
| 255 | 1.2.25.3 | Interruptor de presión 30-50 PSI | 1d | 2026-10-02 | 2026-10-03 | 258 | 2026-09-14 | 2026-09-15 | 1d | 2026-09-22 | 2026-09-23 | 90d | 63d |
| 256 | 1.2.25.4 | Tanque hidroneumático FPS-24LX | 3d | 2026-10-02 | 2026-10-06 | 258 | 2026-09-14 | 2026-09-18 | 3d | 2026-09-22 | 2026-09-25 | 86d | 0d |
| 257 | 1.2.25.5 | Bomba sumergible Dominator 1.2 HP | 2d | 2026-10-06 | 2026-10-08 | 256 | 2026-09-18 | 2026-09-22 | 2d | 2026-09-25 | 2026-09-28 | 86d | 59d |
| 258 | 1.2.25.6 | Cisterna prefabricada 2800 L | 1d | 2026-10-01 | 2026-10-02 | 146FF | 2026-09-12 | 2026-09-14 | 1d | 2026-09-21 | 2026-09-22 | 86d | 0d |
| 259 | 1.2.26 | **LUMINARIAS** | 3d | 2026-11-06 | 2026-11-10 |  | 2026-10-20 | 2026-10-23 | 3d | 2026-10-27 | 2026-10-29 | 58d |  |
| 260 | 1.2.26.1 | Roseta de cerámica para luminaria | 3d | 2026-11-06 | 2026-11-10 | 205 | 2026-10-20 | 2026-10-23 | 3d | 2026-10-27 | 2026-10-29 | 58d | 2d |
| 261 | 1.2.26.2 | Spot Brighton | 3d | 2026-11-06 | 2026-11-10 | 205 | 2026-10-20 | 2026-10-23 | 3d | 2026-10-27 | 2026-10-29 | 58d | 2d |
| 262 | 1.2.26.3 | Arbotante bidireccional 12W | 2d | 2026-11-06 | 2026-11-09 | 205 | 2026-10-20 | 2026-10-22 | 2d | 2026-10-27 | 2026-10-28 | 59d | 3d |
| 263 | 1.2.27 | **TERCER LIMPIEZA DE OBRA** | 9d | 2026-12-23 | 2027-01-07 |  | 2026-12-04 | 2026-12-16 | 9d | 2026-12-11 | 2026-12-22 | 27d |  |
| 264 | 1.2.27.1 | Limpieza fina para entrega | 5d | 2026-12-23 | 2027-01-02 | 212, 195, 190, 159, 237, 236, 248, 249, 250, 251, 268, 253, 254, 255, 256, 257, 183 | 2026-12-04 | 2026-12-11 | 5d | 2026-12-11 | 2026-12-17 | 27d | 0d |
| 265 | 1.2.27.2 | Tercera limpieza de obra | 4d | 2026-12-28 | 2027-01-04 | 264FS-3d | 2026-12-08 | 2026-12-12 | 4d | 2026-12-14 | 2026-12-18 | 27d | 0d |
| 266 | 1.2.27.3 | Tercera carga y acarreo de escombro | 3d | 2027-01-04 | 2027-01-07 | 265 | 2026-12-12 | 2026-12-16 | 3d | 2026-12-18 | 2026-12-22 | 27d | 0d |

| ID | WBS | Task | Type | Duration | Start | Finish | Predecessors | Complete | Remaining | Baseline start | Baseline finish | Baseline duration | Baseline 1 start | Baseline 1 finish | Total slack | Free slack |
| --- | --- | --- | --- | --- | --- | --- | --- | --- | --- | --- | --- | --- | --- | --- | --- | --- |
| 267 | 1.2.28 | **OBRA EXTERIOR - BARDA** |  | 18d | 2026-10-14 | 2026-11-05 |  |  |  | 2026-09-26 | 2026-10-19 | 18d | 2026-10-02 | 2026-10-24 | 64d |  |
| 268 | 1.2.28.1 | Barda de block aparente |  | 18d | 2026-10-14 | 2026-11-05 | 180 |  |  | 2026-09-26 | 2026-10-19 | 18d | 2026-10-02 | 2026-10-24 | 64d | 37d |
| 269 | 1.3 | **LOTE 02 M-661 CORSAC-B** |  | 195d | 2026-05-20 A | 2027-01-25 |  | 10% | 176.45d | 2026-05-20 | 2027-01-04 | 178d | 2026-05-20 | 2027-01-11 | 13d |  |
| 270 | 1.3.1 | **HITOS IMPORTANTES DEL LOTE** |  | 195d | 2026-05-20 A | 2027-01-25 |  |  | 195d | 2026-05-20 | 2027-01-04 | 178d | 2026-05-20 | 2027-01-11 | 13d |  |
| 271 | 1.3.1.1 | Inicio del Lote-02 M-661 Corsac-B | milestone | 0d | 2026-05-20 A | 2026-05-20 A | 5 | 100% |  | 2026-05-20 | 2026-05-20 |  | 2026-05-20 | 2026-05-20 |  |  |
| 272 | 1.3.1.2 | Colado de Losa de Cimentación | milestone | 0d | 2026-06-30 A | 2026-06-30 A | 303 | 100% |  | 2026-06-10 | 2026-06-10 |  | 2026-06-16 | 2026-06-16 |  |  |
| 273 | 1.3.1.3 | Colado de Losa de Entrepiso | milestone | 0d | 2026-08-07 | 2026-08-07 | 339 |  |  | 2026-07-17 | 2026-07-17 |  | 2026-07-23 | 2026-07-23 | 144d |  |
| 274 | 1.3.1.4 | Colado de Losa de Azotea | milestone | 0d | 2026-09-14 | 2026-09-14 | 379 |  |  | 2026-08-24 | 2026-08-24 |  | 2026-08-29 | 2026-08-29 | 114d |  |
| 275 | 1.3.1.5 | Entrega de vivienda | milestone | 0d | 2027-01-25 | 2027-01-25 | 571, 572, 573 |  |  | 2027-01-04 | 2027-01-04 |  | 2027-01-11 | 2027-01-11 | 13d |  |
| 276 | 1.3.2 | **TRABAJOS PRELIMINARES** |  | 2d | 2026-05-20 A | 2026-05-22 A |  | 100% |  | 2026-05-20 | 2026-05-22 | 2d | 2026-05-20 | 2026-05-22 |  |  |
| 277 | 1.3.2.1 | Trazo y nivelación |  | 2d | 2026-05-20 A | 2026-05-22 A | 271 | 100% |  | 2026-05-20 | 2026-05-22 | 2d | 2026-05-20 | 2026-05-22 |  |  |
| 278 | 1.3.3 | **EXCAVACIONES** |  | 3d | 2026-05-22 A | 2026-05-26 A |  | 100% |  | 2026-05-22 | 2026-05-26 | 3d | 2026-05-22 | 2026-05-26 |  |  |
| 279 | 1.3.3.1 | Excavación a mano material tipo B |  | 3d | 2026-05-22 A | 2026-05-26 A | 277 | 100% |  | 2026-05-22 | 2026-05-26 | 3d | 2026-05-22 | 2026-05-26 |  |  |
| 280 | 1.3.3.2 | Acarreo en carretilla 20 m |  | 2d | 2026-05-23 A | 2026-05-26 A | 279SS+1d | 100% |  | 2026-05-23 | 2026-05-26 | 2d | 2026-05-23 | 2026-05-26 |  |  |
| 281 | 1.3.4 | **CIMENTACION** |  | 24d | 2026-06-02 A | 2026-07-01 A |  | 100% |  | 2026-05-26 | 2026-06-11 | 13d | 2026-05-26 | 2026-06-17 |  |  |
| 282 | 1.3.4.1 | Cimbra perimetral losa de cimentación |  | 3d | 2026-06-02 A | 2026-06-05 A | 279FS+5d, 280 | 100% |  | 2026-05-26 | 2026-05-29 | 3d | 2026-05-26 | 2026-05-29 |  |  |
| 283 | 1.3.4.2 | Sistema antitermitas PVC |  | 3d | 2026-06-02 A | 2026-06-05 A | 279FS+5d, 280 | 100% |  | 2026-05-26 | 2026-05-29 | 3d | 2026-05-26 | 2026-05-29 |  |  |
| 284 | 1.3.4.3 | Hule negro en cimentación |  | 1d | 2026-06-05 A | 2026-06-06 A | 283 | 100% |  | 2026-05-29 | 2026-06-01 | 1d | 2026-05-29 | 2026-06-01 |  |  |
| 285 | 1.3.4.4 | Ramaleo poliducto eléctrico cimentación |  | 2d | 2026-06-06 A | 2026-06-09 A | 284 | 100% |  | 2026-06-01 | 2026-06-03 | 2d | 2026-06-01 | 2026-06-03 |  |  |
| 286 | 1.3.4.5 | Ramaleo eléctrico base-medición a centro de carga |  | 1d | 2026-06-06 A | 2026-06-08 A | 284 | 100% |  | 2026-06-01 | 2026-06-02 | 1d | 2026-06-01 | 2026-06-02 |  |  |
| 287 | 1.3.4.6 | Ramaleo eléctrico exterior |  | 1d | 2026-06-09 A | 2026-06-10 A | 285, 286 | 100% |  | 2026-06-03 | 2026-06-04 | 1d | 2026-06-03 | 2026-06-04 |  |  |
| 288 | 1.3.4.7 | Ramaleo para cable poliducto 3/4 |  | 1d | 2026-06-09 A | 2026-06-10 A | 285, 286 | 100% |  | 2026-06-03 | 2026-06-04 | 1d | 2026-06-03 | 2026-06-04 |  |  |
| 289 | 1.3.4.8 | Ramaleo para TV poliducto 3/4 |  | 1d | 2026-06-09 A | 2026-06-10 A | 285, 286 | 100% |  | 2026-06-03 | 2026-06-04 | 1d | 2026-06-03 | 2026-06-04 |  |  |
| 290 | 1.3.4.9 | Ramaleo hidráulico CPVC 1-1/4" cimentación |  | 1d | 2026-06-06 A | 2026-06-08 A | 284 | 100% |  | 2026-06-01 | 2026-06-02 | 1d | 2026-06-01 | 2026-06-02 |  |  |
| 291 | 1.3.4.10 | Ramaleo hidráulico CPVC 1 cimentación |  | 1d | 2026-06-06 A | 2026-06-08 A | 284, 290SS | 100% |  | 2026-06-01 | 2026-06-02 | 1d | 2026-06-01 | 2026-06-02 |  |  |
| 292 | 1.3.4.11 | Ramaleo hidráulico CPVC 3/4 cimentación |  | 2d | 2026-06-08 A | 2026-06-10 A | 291 | 100% |  | 2026-06-02 | 2026-06-04 | 2d | 2026-06-02 | 2026-06-04 |  |  |
| 293 | 1.3.4.12 | Ramaleo hidráulico CPVC 1/2 cimentación |  | 2d | 2026-06-10 A | 2026-06-12 A | 292 | 100% |  | 2026-06-04 | 2026-06-06 | 2d | 2026-06-04 | 2026-06-06 |  |  |
| 294 | 1.3.4.13 | Prueba hidráulica |  | 1d | 2026-06-12 A | 2026-06-13 A | 290, 291, 292, 293 | 100% |  | 2026-06-06 | 2026-06-08 | 1d | 2026-06-06 | 2026-06-08 |  |  |
| 295 | 1.3.4.14 | Ramaleo sanitario PVC 4 cimentación |  | 2d | 2026-06-08 A | 2026-06-10 A | 284FS+1d | 100% |  | 2026-06-02 | 2026-06-04 | 2d | 2026-06-02 | 2026-06-04 |  |  |
| 296 | 1.3.4.15 | Ramaleo sanitario PVC 2 cimentación |  | 1d | 2026-06-10 A | 2026-06-11 A | 295 | 100% |  | 2026-06-04 | 2026-06-05 | 1d | 2026-06-04 | 2026-06-05 |  |  |
| 297 | 1.3.4.16 | Prueba sanitaria |  | 1d | 2026-06-11 A | 2026-06-12 A | 295, 296 | 100% |  | 2026-06-05 | 2026-06-06 | 1d | 2026-06-05 | 2026-06-06 |  |  |
| 298 | 1.3.4.17 | Acero contratrabe CT-1 |  | 8d | 2026-06-11 A | 2026-06-22 A | 282FS+5d | 100% |  | 2026-05-29 | 2026-06-04 | 4d | 2026-06-05 | 2026-06-10 |  |  |
| 299 | 1.3.4.18 | Acero contratrabe CT-2 |  | 8d | 2026-06-11 A | 2026-06-22 A | 282FS+5d | 100% |  | 2026-05-29 | 2026-06-04 | 4d | 2026-06-05 | 2026-06-10 |  |  |
| 300 | 1.3.4.19 | Malla electrosoldada 6-6/8-8 |  | 2d | 2026-06-24 A | 2026-06-26 A | 298, 299, 301, 302 | 100% |  | 2026-06-06 | 2026-06-09 | 2d | 2026-06-12 | 2026-06-15 |  |  |
| 301 | 1.3.4.20 | Bastón de refuerzo LS |  | 2d | 2026-06-22 A | 2026-06-24 A | 298, 299 | 100% |  | 2026-06-04 | 2026-06-06 | 2d | 2026-06-10 | 2026-06-12 |  |  |
| 302 | 1.3.4.21 | Bastón de refuerzo LI |  | 2d | 2026-06-22 A | 2026-06-24 A | 298, 299 | 100% |  | 2026-06-04 | 2026-06-06 | 2d | 2026-06-10 | 2026-06-12 |  |  |
| 303 | 1.3.4.22 | Colado losa de cimentación f’c=200 |  | 1d | 2026-06-29 A | 2026-06-30 A | 282, 284, 287, 288, 289, 294, 297, 298, 299, 300FS+2d, 301, 302, 305, 306 | 100% |  | 2026-06-09 | 2026-06-10 | 1d | 2026-06-15 | 2026-06-16 |  |  |
| 304 | 1.3.4.23 | Curado de concreto |  | 1d | 2026-06-30 A | 2026-07-01 A | 303 | 100% |  | 2026-06-10 | 2026-06-11 | 1d | 2026-06-16 | 2026-06-17 |  |  |
| 305 | 1.3.4.24 | Acero zapata ZT-1 |  | 4d | 2026-06-22 A | 2026-06-26 A | 298, 299 | 100% |  | 2026-06-04 | 2026-06-09 | 4d | 2026-06-10 | 2026-06-15 |  |  |
| 306 | 1.3.4.25 | Acero zapata ZT-2 |  | 4d | 2026-06-22 A | 2026-06-26 A | 298, 299 | 100% |  | 2026-06-04 | 2026-06-09 | 4d | 2026-06-10 | 2026-06-15 |  |  |

| ID | WBS | Task | Duration | Start | Finish | Predecessors | Complete | Remaining | Baseline start | Baseline finish | Baseline duration | Baseline 1 start | Baseline 1 finish | Total slack | Free slack |
| --- | --- | --- | --- | --- | --- | --- | --- | --- | --- | --- | --- | --- | --- | --- | --- |
| 307 | 1.3.5 | **MUROS, PLANTA BAJA. CASTILLOS Y CERRAMIENTOS** | 23d | 2026-06-23 A | 2026-07-21 |  | 56% | 10.17d | 2026-06-05 | 2026-06-30 | 20d | 2026-06-11 | 2026-07-06 | 158d |  |
| 308 | 1.3.5.1 | Anclaje de castillos y Columnas PB | 5d | 2026-06-23 A | 2026-06-29 A | 298FS+1d, 299FS+1d | 100% |  | 2026-06-05 | 2026-06-11 | 5d | 2026-06-11 | 2026-06-17 |  |  |
| 309 | 1.3.5.2 | Castillo K1 | 5d | 2026-07-01 A | 2026-07-07 A | 304, 308 | 100% |  | 2026-06-11 | 2026-06-16 | 4d | 2026-06-17 | 2026-06-23 |  |  |
| 310 | 1.3.5.3 | Castillo K3 | 4d | 2026-07-06 A | 2026-07-09 A | 309FS-2d | 100% |  | 2026-06-13 | 2026-06-17 | 3d | 2026-06-19 | 2026-06-24 |  |  |
| 311 | 1.3.5.4 | Castillo K4 | 4d | 2026-07-06 A | 2026-07-09 A | 309FS-2d | 100% |  | 2026-06-13 | 2026-06-17 | 3d | 2026-06-19 | 2026-06-24 |  |  |
| 312 | 1.3.5.5 | Castillo K5 | 3d | 2026-07-09 A | 2026-07-13 | 310FS-1d, 311FS-1d | 88% | 0.38d | 2026-06-16 | 2026-06-19 | 3d | 2026-06-23 | 2026-06-26 | 1.62d | 0d |
| 313 | 1.3.5.6 | Refuerzo de muro K6 | 3d | 2026-07-10 A | 2026-07-14 | 312FS-2d | 54% | 1.38d | 2026-06-17 | 2026-06-22 | 3d | 2026-06-24 | 2026-06-27 | 160d | 0d |
| 314 | 1.3.5.7 | Dala de cerramiento CR-1 | 4d | 2026-07-10 A | 2026-07-15 | 309, 310 | 41% | 2.38d | 2026-06-17 | 2026-06-23 | 4d | 2026-06-24 | 2026-06-29 | 163d |  |
| 315 | 1.3.5.8 | Dala de cerramiento CR-2 | 3d | 2026-07-10 A | 2026-07-14 | 309, 310 | 54% | 1.38d | 2026-06-17 | 2026-06-22 | 3d | 2026-06-24 | 2026-06-27 | 164d |  |
| 316 | 1.3.5.9 | Cadena block dala | 4d | 2026-07-14 | 2026-07-18 | 313 |  |  | 2026-06-22 | 2026-06-26 | 4d | 2026-06-27 | 2026-07-02 | 160d |  |
| 317 | 1.3.5.10 | Muro de ladrillo aparente | 12d | 2026-07-03 A | 2026-07-18 | 304FS+2d | 55% | 5.38d | 2026-06-11 | 2026-06-30 | 15d | 2026-06-17 | 2026-07-06 | 15d | 0d |
| 318 | 1.3.5.11 | Muro de block planta baja | 11d | 2026-07-08 A | 2026-07-21 | 304FS+5d | 33% | 7.38d | 2026-06-13 | 2026-06-30 | 13d | 2026-06-19 | 2026-07-06 | 13d | 0d |
| 319 | 1.3.5.12 | Ramaleo electrico en Muros Planta Baja | 4d | 2026-07-10 A | 2026-07-15 | 317SS+5d | 41% | 2.38d | 2026-06-17 | 2026-06-23 | 4d | 2026-06-24 | 2026-06-29 | 15d | 0d |
| 320 | 1.3.5.13 | Ramaleo para cable poliducto 3/4 | 2d | 2026-07-15 | 2026-07-17 | 319 |  |  | 2026-06-23 | 2026-06-25 | 2d | 2026-06-29 | 2026-07-01 | 15d | 0d |
| 321 | 1.3.5.14 | Ramaleo para TV poliducto 3/4 | 3d | 2026-07-17 | 2026-07-21 | 320 |  |  | 2026-06-25 | 2026-06-29 | 3d | 2026-07-01 | 2026-07-04 | 15d | 1d |
| 322 | 1.3.6 | **ESCALERA** | 10d | 2026-08-07 | 2026-08-20 |  |  |  | 2026-07-17 | 2026-07-30 | 10d | 2026-07-23 | 2026-08-05 | 90d |  |
| 323 | 1.3.6.1 | Escalera de concreto armado | 10d | 2026-08-07 | 2026-08-20 | 339 |  |  | 2026-07-17 | 2026-07-30 | 10d | 2026-07-23 | 2026-08-05 | 90d | 77d |
| 324 | 1.3.7 | **LOSA DE ENTREPISO (viegueta y caseton)** | 17d | 2026-07-18 | 2026-08-08 |  |  |  | 2026-06-27 | 2026-07-18 | 17d | 2026-07-03 | 2026-07-24 | 16d |  |
| 325 | 1.3.7.1 | Dala de coronamiento 10cm | 3d | 2026-07-28 | 2026-07-31 | 341FS-1d, 327, 328, 329, 330, 331, 332 |  |  | 2026-07-07 | 2026-07-09 | 3d | 2026-07-13 | 2026-07-16 | 16d | 3d |
| 326 | 1.3.7.2 | Dala de coronamiento 12cm | 3d | 2026-07-29 | 2026-08-01 | 341, 327, 328, 329, 330, 331, 332 |  |  | 2026-07-08 | 2026-07-10 | 3d | 2026-07-14 | 2026-07-17 | 15d | 2d |
| 327 | 1.3.7.3 | Trabe TR-1 | 3d | 2026-07-18 | 2026-07-22 | 317FS-2d, 318FS-2d |  |  | 2026-06-27 | 2026-07-01 | 3d | 2026-07-03 | 2026-07-07 | 17d | 4d |
| 328 | 1.3.7.4 | Trabe TR-2 | 4d | 2026-07-20 | 2026-07-24 | 317FS-1d, 318FS-1d |  |  | 2026-06-29 | 2026-07-03 | 4d | 2026-07-06 | 2026-07-09 | 15d | 2d |
| 329 | 1.3.7.5 | Nervadura NR-1 | 4d | 2026-07-21 | 2026-07-27 | 317, 318 |  |  | 2026-06-30 | 2026-07-04 | 4d | 2026-07-07 | 2026-07-10 | 14d | 1d |
| 330 | 1.3.7.6 | Nervadura NR-2 | 4d | 2026-07-22 | 2026-07-28 | 317FS+1d, 318FS+1d |  |  | 2026-07-01 | 2026-07-06 | 4d | 2026-07-08 | 2026-07-13 | 13d | 0d |
| 331 | 1.3.7.7 | Nervadura NR-3 | 4d | 2026-07-22 | 2026-07-28 | 317FS+1d, 318FS+1d |  |  | 2026-07-01 | 2026-07-06 | 4d | 2026-07-08 | 2026-07-13 | 13d | 0d |
| 332 | 1.3.7.8 | Nervadura NR-4 | 4d | 2026-07-22 | 2026-07-28 | 317FS+1d, 318FS+1d |  |  | 2026-07-01 | 2026-07-06 | 4d | 2026-07-08 | 2026-07-13 | 13d | 0d |
| 333 | 1.3.7.9 | Acero de refuerzo en nervios #3 | 2d | 2026-07-28 | 2026-07-30 | 327, 328, 329, 330, 331, 332 |  |  | 2026-07-07 | 2026-07-08 | 2d | 2026-07-13 | 2026-07-15 | 13d | 0d |
| 334 | 1.3.7.10 | Acero de refuerzo long. #3 | 3d | 2026-07-29 | 2026-08-01 | 327, 328, 329, 330, 331, 332, 341 |  |  | 2026-07-08 | 2026-07-10 | 3d | 2026-07-14 | 2026-07-17 | 14d | 0d |
| 335 | 1.3.7.11 | Acero de refuerzo long. #4 | 3d | 2026-07-29 | 2026-08-01 | 334SS |  |  | 2026-07-08 | 2026-07-10 | 3d | 2026-07-14 | 2026-07-17 | 14d | 0d |
| 336 | 1.3.7.12 | Malla 66-10/10 losa de compresión | 2d | 2026-08-04 | 2026-08-06 | 325, 326, 333, 346, 349, 338 |  |  | 2026-07-14 | 2026-07-16 | 2d | 2026-07-20 | 2026-07-22 | 13d | 0d |
| 337 | 1.3.7.13 | Acero de Losa Maciza | 3d | 2026-07-28 | 2026-07-31 | 329, 330, 331, 332 |  |  | 2026-07-07 | 2026-07-09 | 3d | 2026-07-13 | 2026-07-16 | 18d | 5d |
| 338 | 1.3.7.14 | Caseton de 60x60x20cm | 2d | 2026-07-28 | 2026-07-30 | 329, 330, 331, 332 |  |  | 2026-07-07 | 2026-07-08 | 2d | 2026-07-13 | 2026-07-15 | 17d | 4d |
| 339 | 1.3.7.15 | Concreto losa de entrepiso f’c=200 | 1d | 2026-08-06 | 2026-08-07 | 334, 335, 336, 337, 346, 349, 342, 351 |  |  | 2026-07-16 | 2026-07-17 | 1d | 2026-07-22 | 2026-07-23 | 13d | 0d |
| 340 | 1.3.7.16 | Curado de concreto | 1d | 2026-08-07 | 2026-08-08 | 339 |  |  | 2026-07-17 | 2026-07-18 | 1d | 2026-07-23 | 2026-07-24 | 13d | 0d |
| 341 | 1.3.7.17 | Cimbra losa de azotea | 5d | 2026-07-22 | 2026-07-29 | 317FS+1d, 318FS+1d, 321 |  |  | 2026-07-01 | 2026-07-07 | 5d | 2026-07-08 | 2026-07-14 | 14d | 0d |
| 342 | 1.3.7.18 | Cimbra exterior corta losa | 3d | 2026-07-31 | 2026-08-04 | 334FS-1d, 335FS-1d |  |  | 2026-07-10 | 2026-07-14 | 3d | 2026-07-16 | 2026-07-20 | 15d | 2d |
| 343 | 1.3.7.19 | Ramaleo poliducto eléctrico entrepiso | 2d | 2026-07-30 | 2026-08-01 | 333 |  |  | 2026-07-09 | 2026-07-10 | 2d | 2026-07-15 | 2026-07-17 | 149d |  |
| 344 | 1.3.7.20 | Ramaleo hidráulico CPVC 3/4" | 2d | 2026-07-31 | 2026-08-03 | 333FS+1d |  |  | 2026-07-10 | 2026-07-13 | 2d | 2026-07-16 | 2026-07-18 | 13d | 0d |
| 345 | 1.3.7.21 | Ramaleo hidráulico CPVC 1/2" | 1d | 2026-08-03 | 2026-08-04 | 344 |  |  | 2026-07-13 | 2026-07-14 | 1d | 2026-07-18 | 2026-07-20 | 13d | 0d |
| 346 | 1.3.7.22 | Prueba hidráulica | 1d | 2026-08-03 | 2026-08-04 | 344, 345FS-1d |  |  | 2026-07-13 | 2026-07-14 | 1d | 2026-07-18 | 2026-07-20 | 13d | 0d |
| 347 | 1.3.7.23 | Ramaleo sanitario PVC 4" | 2d | 2026-07-31 | 2026-08-03 | 333FS+1d |  |  | 2026-07-10 | 2026-07-13 | 2d | 2026-07-16 | 2026-07-18 | 13d | 0d |
| 348 | 1.3.7.24 | Ramaleo sanitario PVC 2" | 1d | 2026-08-03 | 2026-08-04 | 347 |  |  | 2026-07-13 | 2026-07-14 | 1d | 2026-07-18 | 2026-07-20 | 13d | 0d |
| 349 | 1.3.7.25 | Prueba sanitaria | 1d | 2026-08-03 | 2026-08-04 | 347, 348FS-1d |  |  | 2026-07-13 | 2026-07-14 | 1d | 2026-07-18 | 2026-07-20 | 13d | 0d |

| ID | WBS | Task | Duration | Start | Finish | Predecessors | Baseline start | Baseline finish | Baseline duration | Baseline 1 start | Baseline 1 finish | Total slack | Free slack |
| --- | --- | --- | --- | --- | --- | --- | --- | --- | --- | --- | --- | --- | --- |
| 350 | 1.3.8 | **MUROS EN PLANTA ALTA, CASTILLOS Y CERRM.** | 22d | 2026-07-31 | 2026-08-27 |  | 2026-07-10 | 2026-08-06 | 22d | 2026-07-16 | 2026-08-12 | 14d |  |
| 351 | 1.3.8.1 | Anclaje de castillos y Columnas PA | 4d | 2026-07-31 | 2026-08-05 | 334FS-1d, 335FS-1d | 2026-07-10 | 2026-07-15 | 4d | 2026-07-16 | 2026-07-21 | 14d | 1d |
| 352 | 1.3.8.2 | Castillo K1 | 4d | 2026-08-08 | 2026-08-13 | 340 | 2026-07-18 | 2026-07-23 | 4d | 2026-07-24 | 2026-07-30 | 17d | 0d |
| 353 | 1.3.8.3 | Castillo K2 | 4d | 2026-08-10 | 2026-08-14 | 340FS+1d | 2026-07-20 | 2026-07-24 | 4d | 2026-07-27 | 2026-07-31 | 16d | 0d |
| 354 | 1.3.8.4 | Castillo K4 | 3d | 2026-08-13 | 2026-08-18 | 352 | 2026-07-23 | 2026-07-28 | 3d | 2026-07-30 | 2026-08-03 | 17d | 1d |
| 355 | 1.3.8.5 | Castillo K5 | 3d | 2026-08-13 | 2026-08-18 | 352 | 2026-07-23 | 2026-07-28 | 3d | 2026-07-30 | 2026-08-03 | 17d | 1d |
| 356 | 1.3.8.6 | Castillo K6 | 3d | 2026-08-13 | 2026-08-18 | 352 | 2026-07-23 | 2026-07-28 | 3d | 2026-07-30 | 2026-08-03 | 17d | 1d |
| 357 | 1.3.8.7 | Refuerzo de muro | 3d | 2026-08-14 | 2026-08-19 | 352, 353 | 2026-07-24 | 2026-07-29 | 3d | 2026-07-31 | 2026-08-04 | 16d | 0d |
| 358 | 1.3.8.8 | Dala de cerramiento CR-1 | 4d | 2026-08-19 | 2026-08-24 | 354, 355, 356, 357 | 2026-07-29 | 2026-08-03 | 4d | 2026-08-04 | 2026-08-08 | 16d | 0d |
| 359 | 1.3.8.9 | Dala de cerramiento CR-2 | 4d | 2026-08-19 | 2026-08-24 | 354, 355, 356, 357 | 2026-07-29 | 2026-08-03 | 4d | 2026-08-04 | 2026-08-08 | 16d | 0d |
| 360 | 1.3.8.10 | Cadena block dala | 3d | 2026-08-24 | 2026-08-27 | 357, 358, 359 | 2026-08-03 | 2026-08-06 | 3d | 2026-08-08 | 2026-08-12 | 16d | 0d |
| 361 | 1.3.8.11 | Muro de ladrillo aparente | 15d | 2026-08-08 | 2026-08-27 | 340 | 2026-07-18 | 2026-08-06 | 15d | 2026-07-24 | 2026-08-12 | 13d | 0d |
| 362 | 1.3.8.12 | Muro de block planta alta | 14d | 2026-08-10 | 2026-08-27 | 340FS+1d | 2026-07-20 | 2026-08-06 | 14d | 2026-07-27 | 2026-08-12 | 13d | 0d |
| 363 | 1.3.8.13 | Ramaleo electrico en Muros Planta Alta | 4d | 2026-08-19 | 2026-08-24 | 361SS+8d | 2026-07-29 | 2026-08-03 | 4d | 2026-08-04 | 2026-08-08 | 24d | 3d |
| 364 | 1.3.9 | **LOSA AZOTEA** | 15d | 2026-08-27 | 2026-09-15 |  | 2026-08-06 | 2026-08-25 | 15d | 2026-08-12 | 2026-08-31 | 13d |  |
| 365 | 1.3.9.1 | Cortalosa CL-1 | 2d | 2026-09-10 | 2026-09-12 | 377 | 2026-08-20 | 2026-08-22 | 2d | 2026-08-26 | 2026-08-28 | 13d | 0d |
| 366 | 1.3.9.2 | Cortalosa CL-2 | 2d | 2026-09-10 | 2026-09-12 | 377 | 2026-08-20 | 2026-08-22 | 2d | 2026-08-26 | 2026-08-28 | 13d | 0d |
| 367 | 1.3.9.3 | Vigueta pretensada V11-30 125 | 5d | 2026-08-27 | 2026-09-02 | 360, 361, 362 | 2026-08-06 | 2026-08-12 | 5d | 2026-08-12 | 2026-08-19 | 16d | 3d |
| 368 | 1.3.9.4 | Vigueta pretensada V11-30 185 | 5d | 2026-08-27 | 2026-09-02 | 361, 362 | 2026-08-06 | 2026-08-12 | 5d | 2026-08-12 | 2026-08-19 | 16d | 3d |
| 369 | 1.3.9.5 | Vigueta pretensada V11-30 190 | 5d | 2026-08-27 | 2026-09-02 | 361, 362 | 2026-08-06 | 2026-08-12 | 5d | 2026-08-12 | 2026-08-19 | 16d | 3d |
| 370 | 1.3.9.6 | Vigueta pretensada V11-30 205 | 5d | 2026-08-31 | 2026-09-04 | 361FS+2d, 362FS+2d | 2026-08-08 | 2026-08-14 | 5d | 2026-08-14 | 2026-08-21 | 14d | 1d |
| 371 | 1.3.9.7 | Vigueta pretensada V11-30 215 | 5d | 2026-08-31 | 2026-09-04 | 361FS+2d, 362FS+2d | 2026-08-08 | 2026-08-14 | 5d | 2026-08-14 | 2026-08-21 | 14d | 1d |
| 372 | 1.3.9.8 | Vigueta pretensada V11-30 260 | 5d | 2026-09-01 | 2026-09-07 | 361FS+3d, 362FS+3d | 2026-08-10 | 2026-08-17 | 5d | 2026-08-17 | 2026-08-22 | 13d | 0d |
| 373 | 1.3.9.9 | Vigueta pretensada V11-30 285 | 5d | 2026-09-01 | 2026-09-07 | 361FS+3d, 362FS+3d | 2026-08-10 | 2026-08-17 | 5d | 2026-08-17 | 2026-08-22 | 13d | 0d |
| 374 | 1.3.9.10 | Vigueta pretensada V11-40 330 | 5d | 2026-09-01 | 2026-09-07 | 361FS+3d, 362 | 2026-08-10 | 2026-08-17 | 5d | 2026-08-17 | 2026-08-22 | 13d | 0d |
| 375 | 1.3.9.11 | Vigueta pretensada V11-40 335 | 5d | 2026-09-01 | 2026-09-07 | 361FS+3d, 362 | 2026-08-10 | 2026-08-17 | 5d | 2026-08-17 | 2026-08-22 | 13d | 0d |
| 376 | 1.3.9.12 | Vigueta pretensada V11-40 505 | 5d | 2026-09-01 | 2026-09-07 | 361FS+3d, 362 | 2026-08-10 | 2026-08-17 | 5d | 2026-08-17 | 2026-08-22 | 13d | 0d |
| 377 | 1.3.9.13 | Bovedilla poliestireno azotea | 3d | 2026-09-07 | 2026-09-10 | 367, 368, 369, 370, 371, 372, 373, 374, 375, 376 | 2026-08-17 | 2026-08-20 | 3d | 2026-08-22 | 2026-08-26 | 13d | 0d |
| 378 | 1.3.9.14 | Malla 66-10/10 losa de compresión | 2d | 2026-09-10 | 2026-09-12 | 377 | 2026-08-20 | 2026-08-22 | 2d | 2026-08-26 | 2026-08-28 | 13d | 0d |
| 379 | 1.3.9.15 | Concreto losa de azotea f’c=200 | 1d | 2026-09-12 | 2026-09-14 | 365, 366, 377, 378, 382, 381 | 2026-08-22 | 2026-08-24 | 1d | 2026-08-28 | 2026-08-29 | 13d | 0d |
| 380 | 1.3.9.16 | Curado de concreto | 1d | 2026-09-14 | 2026-09-15 | 379 | 2026-08-24 | 2026-08-25 | 1d | 2026-08-31 | 2026-08-31 | 13d | 0d |
| 381 | 1.3.9.17 | Cimbra losa de azotea | 5d | 2026-08-27 | 2026-09-02 | 361, 362, 363 | 2026-08-06 | 2026-08-12 | 5d | 2026-08-12 | 2026-08-19 | 21d | 8d |
| 382 | 1.3.9.18 | Ramaleo de poliducto para inst. electrica en azotea | 2d | 2026-09-10 | 2026-09-12 | 377 | 2026-08-20 | 2026-08-22 | 2d | 2026-08-26 | 2026-08-28 | 13d | 0d |

| ID | WBS | Task | Duration | Start | Finish | Predecessors | Baseline start | Baseline finish | Baseline duration | Baseline 1 start | Baseline 1 finish | Total slack | Free slack |
| --- | --- | --- | --- | --- | --- | --- | --- | --- | --- | --- | --- | --- | --- |
| 383 | 1.3.10 | **PRETIL Y ACABADOS DE AZOTEA** | 19d | 2026-09-15 | 2026-10-09 |  | 2026-08-25 | 2026-09-18 | 19d | 2026-09-01 | 2026-09-25 | 13d |  |
| 384 | 1.3.10.1 | Castillo K1 | 5d | 2026-09-18 | 2026-09-25 | 386SS+2d | 2026-08-27 | 2026-09-02 | 5d | 2026-09-03 | 2026-09-09 | 13d | 0d |
| 385 | 1.3.10.2 | Dala de cerramiento en pretil | 4d | 2026-09-23 | 2026-09-28 | 384FS-2d, 386FS-2d | 2026-09-01 | 2026-09-04 | 4d | 2026-09-07 | 2026-09-11 | 13d | 0d |
| 386 | 1.3.10.3 | Muro de block 12x15x40 | 5d | 2026-09-15 | 2026-09-23 | 380 | 2026-08-25 | 2026-08-31 | 5d | 2026-09-01 | 2026-09-07 | 13d | 0d |
| 387 | 1.3.10.4 | Chaflán en azotea | 4d | 2026-09-25 | 2026-09-30 | 384, 386 | 2026-09-03 | 2026-09-08 | 4d | 2026-09-09 | 2026-09-14 | 13d | 0d |
| 388 | 1.3.10.5 | Diamante de entortado | 4d | 2026-09-25 | 2026-09-30 | 384, 386 | 2026-09-03 | 2026-09-08 | 4d | 2026-09-09 | 2026-09-14 | 13d | 0d |
| 389 | 1.3.10.6 | Aplanado exterior Mortermax fino | 5d | 2026-09-28 | 2026-10-03 | 385, 387FS-2d, 388FS-2d | 2026-09-05 | 2026-09-11 | 5d | 2026-09-11 | 2026-09-18 | 13d | 0d |
| 390 | 1.3.10.7 | Entortado de Losa | 4d | 2026-10-05 | 2026-10-09 | 391 | 2026-09-12 | 2026-09-18 | 4d | 2026-09-21 | 2026-09-25 | 13d | 0d |
| 391 | 1.3.10.8 | Curado de concreto | 1d | 2026-10-03 | 2026-10-05 | 387, 389 | 2026-09-11 | 2026-09-12 | 1d | 2026-09-18 | 2026-09-21 | 13d | 0d |
| 392 | 1.3.11 | **PRIMERA LIMPIEZA DE OBRA** | 4d | 2026-09-15 | 2026-09-22 |  | 2026-08-25 | 2026-08-29 | 4d | 2026-09-01 | 2026-09-04 | 70d |  |
| 393 | 1.3.11.1 | Primera limpieza de obra | 2d | 2026-09-15 | 2026-09-18 | 380 | 2026-08-25 | 2026-08-27 | 2d | 2026-09-01 | 2026-09-02 | 70d | 0d |
| 394 | 1.3.11.2 | Primera carga y acarreo de escombro | 2d | 2026-09-18 | 2026-09-22 | 393 | 2026-08-27 | 2026-08-29 | 2d | 2026-09-03 | 2026-09-04 | 70d | 1d |
| 395 | 1.3.12 | **IMPERMEABILIZACION** | 5d | 2026-10-09 | 2026-10-16 |  | 2026-09-18 | 2026-09-25 | 5d | 2026-09-25 | 2026-10-01 | 13d |  |
| 396 | 1.3.12.1 | Impermeabilización de pretil Kover 5 años | 4d | 2026-10-09 | 2026-10-15 | 390 | 2026-09-18 | 2026-09-24 | 4d | 2026-09-25 | 2026-09-30 | 14d | 1d |
| 397 | 1.3.12.2 | Impermeabilización de losa Kover 5 años | 5d | 2026-10-09 | 2026-10-16 | 390 | 2026-09-18 | 2026-09-25 | 5d | 2026-09-25 | 2026-10-01 | 13d | 0d |
| 398 | 1.3.13 | **ALBAÑILERIA** | 62d | 2026-09-23 | 2026-12-10 |  | 2026-09-01 | 2026-11-19 | 62d | 2026-09-07 | 2026-11-25 | 32d |  |
| 399 | 1.3.13.1 | Lavadero de granito | 4d | 2026-11-05 | 2026-11-10 | 435SS+8d | 2026-10-15 | 2026-10-20 | 4d | 2026-10-21 | 2026-10-26 | 69d |  |
| 400 | 1.3.13.2 | Ranurado y resane general inst. en muros | 3d | 2026-10-14 | 2026-10-17 | 397FS-2d | 2026-09-23 | 2026-09-26 | 3d | 2026-09-29 | 2026-10-02 | 15d | 1d |
| 401 | 1.3.13.3 | Ranurado y resane eléctrico 1/2 a 3/4 | 3d | 2026-10-14 | 2026-10-17 | 397FS-2d | 2026-09-23 | 2026-09-26 | 3d | 2026-09-29 | 2026-10-02 | 15d | 1d |
| 402 | 1.3.13.4 | Ranurado y resane hidráulico 1/2 a 1 | 2d | 2026-10-16 | 2026-10-19 | 397 | 2026-09-25 | 2026-09-28 | 2d | 2026-10-01 | 2026-10-03 | 14d | 0d |
| 403 | 1.3.13.5 | Resane sanitario tubería 2 | 2d | 2026-10-16 | 2026-10-19 | 397 | 2026-09-25 | 2026-09-28 | 2d | 2026-10-01 | 2026-10-03 | 14d | 0d |
| 404 | 1.3.13.6 | Resane sanitario tubería 4 | 2d | 2026-10-16 | 2026-10-19 | 397 | 2026-09-25 | 2026-09-28 | 2d | 2026-10-01 | 2026-10-03 | 14d | 0d |
| 405 | 1.3.13.7 | Resane minisplit tubería 3 | 2d | 2026-10-16 | 2026-10-19 | 397 | 2026-09-25 | 2026-09-28 | 2d | 2026-10-01 | 2026-10-03 | 14d | 0d |
| 406 | 1.3.13.8 | Ramaleo hidráulico exterior CPVC 1 1/4 | 3d | 2026-10-16 | 2026-10-20 | 396, 397 | 2026-09-25 | 2026-09-29 | 3d | 2026-10-01 | 2026-10-05 | 13d | 0d |
| 407 | 1.3.13.9 | Ramaleo hidráulico exterior CPVC 1 | 2d | 2026-10-16 | 2026-10-19 | 406SS | 2026-09-25 | 2026-09-28 | 2d | 2026-10-01 | 2026-10-03 | 13d | 0d |
| 408 | 1.3.13.10 | Ramaleo hidráulico exterior CPVC 3/4 | 2d | 2026-10-19 | 2026-10-21 | 407 | 2026-09-28 | 2026-09-30 | 2d | 2026-10-03 | 2026-10-06 | 13d | 0d |
| 409 | 1.3.13.11 | Ramaleo hidráulico exterior CPVC 1/2 | 2d | 2026-10-19 | 2026-10-21 | 407 | 2026-09-28 | 2026-09-30 | 2d | 2026-10-03 | 2026-10-06 | 13d | 0d |
| 410 | 1.3.13.12 | Prueba hidráulica | 1d | 2026-10-21 | 2026-10-22 | 402, 406, 407, 408, 409 | 2026-09-30 | 2026-10-01 | 1d | 2026-10-06 | 2026-10-07 | 13d | 0d |
| 411 | 1.3.13.13 | Ramaleo sanitario exterior PVC 4 | 4d | 2026-10-16 | 2026-10-21 | 396, 397 | 2026-09-25 | 2026-09-30 | 4d | 2026-10-01 | 2026-10-06 | 13d | 0d |
| 412 | 1.3.13.14 | Ramaleo sanitario exterior PVC 2 | 3d | 2026-10-17 | 2026-10-21 | 411SS+1d | 2026-09-26 | 2026-09-30 | 3d | 2026-10-02 | 2026-10-06 | 13d | 0d |
| 413 | 1.3.13.15 | Prueba sanitaria | 1d | 2026-10-21 | 2026-10-22 | 403, 404, 405, 411, 412 | 2026-09-30 | 2026-10-01 | 1d | 2026-10-06 | 2026-10-07 | 13d | 0d |
| 414 | 1.3.13.16 | Centro de carga muros PB | 4d | 2026-10-20 | 2026-10-24 | 396FS+3d, 397FS+3d | 2026-09-29 | 2026-10-03 | 4d | 2026-10-05 | 2026-10-09 | 15d | 2d |
| 415 | 1.3.13.17 | Firme de concreto 8 cm | 4d | 2026-10-22 | 2026-10-27 | 410, 413, 417 | 2026-10-01 | 2026-10-06 | 4d | 2026-10-07 | 2026-10-13 | 63d | 0d |
| 416 | 1.3.13.18 | Curado de concreto | 1d | 2026-10-28 | 2026-10-28 | 415 | 2026-10-06 | 2026-10-07 | 1d | 2026-10-13 | 2026-10-14 | 63d | 17d |
| 417 | 1.3.13.19 | Cisterna 2800 L con instalación | 18d | 2026-09-23 | 2026-10-15 | 386, 393, 394 | 2026-09-01 | 2026-09-24 | 18d | 2026-09-07 | 2026-09-30 | 69d | 0d |
| 418 | 1.3.13.20 | Banqueta y huellas de concreto | 8d | 2026-10-30 | 2026-11-09 | 410, 413, 460, 528FS-2d, 537, 529 | 2026-10-08 | 2026-10-19 | 8d | 2026-10-15 | 2026-10-24 | 46d | 0d |
| 419 | 1.3.13.21 | Curado de concreto | 1d | 2026-11-09 | 2026-11-10 | 418 | 2026-10-19 | 2026-10-20 | 1d | 2026-10-26 | 2026-10-26 | 46d | 0d |
| 420 | 1.3.13.22 | Número oficial | 1d | 2026-12-09 | 2026-12-10 | 428, 429 | 2026-11-18 | 2026-11-19 | 1d | 2026-11-24 | 2026-11-25 | 46d |  |
| 421 | 1.3.13.23 | Detallado de rodapié exterior | 4d | 2026-10-26 | 2026-10-29 | 426 | 2026-10-03 | 2026-10-08 | 4d | 2026-10-09 | 2026-10-15 | 78d |  |
| 422 | 1.3.13.24 | Detalle de losas y volados acabado fino | 4d | 2026-10-16 | 2026-10-21 | 396, 397 | 2026-09-25 | 2026-09-30 | 4d | 2026-10-01 | 2026-10-06 | 17d | 4d |
| 423 | 1.3.13.25 | Detalle fino en muros interiores | 5d | 2026-10-19 | 2026-10-24 | 400, 401, 402, 403, 404, 405 | 2026-09-28 | 2026-10-03 | 5d | 2026-10-03 | 2026-10-09 | 14d | 1d |
| 424 | 1.3.13.26 | Jardín interior bajo escalera con pozo de absorción | 12d | 2026-10-16 | 2026-10-30 | 403FS-2d, 404FS-2d, 405FS-2d | 2026-09-25 | 2026-10-09 | 12d | 2026-10-01 | 2026-10-16 | 17d | 0d |

| ID | WBS | Task | Duration | Start | Finish | Predecessors | Baseline start | Baseline finish | Baseline duration | Baseline 1 start | Baseline 1 finish | Total slack | Free slack |
| --- | --- | --- | --- | --- | --- | --- | --- | --- | --- | --- | --- | --- | --- |
| 425 | 1.3.14 | **ACABADOS EN FACHADA A** | 47d | 2026-10-09 | 2026-12-09 |  | 2026-09-18 | 2026-11-18 | 47d | 2026-09-25 | 2026-11-24 | 46d |  |
| 426 | 1.3.14.1 | Aplanado grueso fachada | 12d | 2026-10-09 | 2026-10-24 | 390 | 2026-09-18 | 2026-10-03 | 12d | 2026-09-25 | 2026-10-09 | 52d | 0d |
| 427 | 1.3.14.2 | Aplanado fino estuco fachada | 10d | 2026-10-19 | 2026-10-30 | 426SS+7d | 2026-09-28 | 2026-10-09 | 10d | 2026-10-03 | 2026-10-16 | 52d | 0d |
| 428 | 1.3.14.3 | Pintura acrílica 1-0102P | 8d | 2026-11-26 | 2026-12-07 | 416FS+5d, 419FS+12d, 430, 433 | 2026-11-04 | 2026-11-13 | 8d | 2026-11-10 | 2026-11-21 | 48d | 2d |
| 429 | 1.3.14.4 | Pintura acrílica 1-1404D | 10d | 2026-11-26 | 2026-12-09 | 416FS+5d, 419FS+12d, 430, 433 | 2026-11-04 | 2026-11-18 | 10d | 2026-11-10 | 2026-11-24 | 46d | 0d |
| 430 | 1.3.14.5 | Cantera 40x60cm | 14d | 2026-10-31 | 2026-11-19 | 426, 427 | 2026-10-09 | 2026-10-27 | 14d | 2026-10-16 | 2026-11-03 | 52d | 6d |
| 431 | 1.3.14.6 | Lambrin de permabase 1 cara | 3d | 2026-10-26 | 2026-10-28 | 426 | 2026-10-03 | 2026-10-07 | 3d | 2026-10-09 | 2026-10-14 | 59d | 0d |
| 432 | 1.3.14.7 | Enchapado de Permabase | 4d | 2026-10-29 | 2026-11-03 | 431 | 2026-10-07 | 2026-10-13 | 4d | 2026-10-14 | 2026-10-19 | 59d | 0d |
| 433 | 1.3.14.8 | Cubierta de Permabase | 5d | 2026-11-03 | 2026-11-09 | 432 | 2026-10-13 | 2026-10-19 | 5d | 2026-10-19 | 2026-10-24 | 59d | 13d |
| 434 | 1.3.15 | **APLANADOS Y PINTURA** | 63d | 2026-10-16 | 2027-01-08 |  | 2026-09-25 | 2026-12-14 | 63d | 2026-10-01 | 2026-12-19 | 15d |  |
| 435 | 1.3.15.1 | Yeso pulido en muros | 14d | 2026-10-27 | 2026-11-12 | 400, 401, 414FS-1d, 422, 423, 424FS-8d, 440FS-4d, 506FS-2d, 509, 510, 511, 512, 513FS-1d, 514FS-1d, 515FS-1d, 516FS-1d, 517FS-2d, 518FS-2d, 519FS-3d, 522FS-1d, 523FS-5d, 524FS-5d, 525FS-6d, 526FS-2d, 527FS-7d, 436 | 2026-10-05 | 2026-10-22 | 14d | 2026-10-12 | 2026-10-28 | 13d | 0d |
| 436 | 1.3.15.2 | Aplanado en muros enjarre grueso | 5d | 2026-10-16 | 2026-10-22 | 396, 397 | 2026-09-25 | 2026-10-01 | 5d | 2026-10-01 | 2026-10-07 | 16d | 3d |
| 437 | 1.3.15.3 | Pintura vinílica OR-W13 SHOELACE | 13d | 2026-12-18 | 2027-01-08 | 444FS-2d, 445FS-2d, 458FS-2d, 465, 466, 467, 468, 469, 470, 476, 477, 478, 479, 540, 541, 543, 544, 473, 474, 471, 472, 480 | 2026-11-27 | 2026-12-14 | 13d | 2026-12-03 | 2026-12-19 | 13d | 0d |
| 438 | 1.3.15.4 | Pintura vinílica PPUI5-13 Creamy M. | 10d | 2026-12-12 | 2026-12-28 | 444, 445, 458, 488, 489, 484, 482 | 2026-11-21 | 2026-12-03 | 10d | 2026-11-27 | 2026-12-10 | 21d | 8d |
| 439 | 1.3.15.5 | Pintura vinílica MD-06 Nano White | 8d | 2026-12-12 | 2026-12-22 | 444, 445, 458, 488, 489, 484, 482 | 2026-11-21 | 2026-12-01 | 8d | 2026-11-27 | 2026-12-08 | 23d | 10d |
| 440 | 1.3.15.6 | Yeso pulido en plafones | 10d | 2026-10-16 | 2026-10-28 | 396, 397 | 2026-09-25 | 2026-10-07 | 10d | 2026-10-01 | 2026-10-14 | 15d | 2d |
| 441 | 1.3.15.7 | Perfilado de puertas y ventanas | 4d | 2026-10-31 | 2026-11-05 | 435SS+4d | 2026-10-09 | 2026-10-15 | 4d | 2026-10-16 | 2026-10-21 | 73d |  |
| 442 | 1.3.16 | **PISOS Y AZULEJOS** | 24d | 2026-11-06 | 2026-12-08 |  | 2026-10-16 | 2026-11-17 | 24d | 2026-10-22 | 2026-11-23 | 13d |  |
| 443 | 1.3.16.1 | **AREA SOCIAL** | 15d | 2026-11-10 | 2026-11-30 |  | 2026-10-20 | 2026-11-07 | 15d | 2026-10-27 | 2026-11-13 | 13d |  |
| 444 | 1.3.16.1.1 | Piso Adhara 44X89 | 14d | 2026-11-10 | 2026-11-28 | 435FS-2d, 531, 530, 447FS-5d | 2026-10-20 | 2026-11-06 | 14d | 2026-10-27 | 2026-11-12 | 13d | 0d |
| 445 | 1.3.16.1.2 | Zoclo Adhara 44X89 | 5d | 2026-11-24 | 2026-11-30 | 444FS-4d | 2026-11-02 | 2026-11-07 | 5d | 2026-11-07 | 2026-11-13 | 30d | 10d |
| 446 | 1.3.16.2 | **RECAMARAS** | 8d | 2026-11-06 | 2026-11-18 |  | 2026-10-16 | 2026-10-26 | 8d | 2026-10-22 | 2026-11-02 | 13d |  |
| 447 | 1.3.16.2.1 | Acabado aparente de pisos - pulido | 8d | 2026-11-06 | 2026-11-18 | 435FS-5d | 2026-10-16 | 2026-10-26 | 8d | 2026-10-22 | 2026-11-02 | 13d | 0d |
| 448 | 1.3.16.3 | **BAÑOS** | 17d | 2026-11-07 | 2026-11-30 |  | 2026-10-17 | 2026-11-07 | 17d | 2026-10-23 | 2026-11-13 | 24d |  |
| 449 | 1.3.16.3.1 | Azulejo Mod. Ornamenta 60x30 | 5d | 2026-11-18 | 2026-11-24 | 450FS-1d, 520, 521, 531 | 2026-10-27 | 2026-11-02 | 5d | 2026-11-02 | 2026-11-07 | 24d | 0d |
| 450 | 1.3.16.3.2 | Impermeabilización en regadera | 2d | 2026-11-17 | 2026-11-19 | 435, 454 | 2026-10-26 | 2026-10-27 | 2d | 2026-10-31 | 2026-11-03 | 24d | 0d |
| 451 | 1.3.16.3.3 | Piso Mod. Valparaiso 20x20 | 4d | 2026-11-24 | 2026-11-28 | 449 | 2026-11-02 | 2026-11-06 | 4d | 2026-11-07 | 2026-11-12 | 24d | 0d |
| 452 | 1.3.16.3.4 | Zoclo Adhara 44X89 | 2d | 2026-11-27 | 2026-11-30 | 451FS-1d | 2026-11-05 | 2026-11-07 | 2d | 2026-11-11 | 2026-11-13 | 54d |  |
| 453 | 1.3.16.3.5 | Piso Adhara 44X89 | 3d | 2026-11-24 | 2026-11-27 | 449 | 2026-11-02 | 2026-11-05 | 3d | 2026-11-07 | 2026-11-11 | 56d |  |
| 454 | 1.3.16.3.6 | Fabricacion de nicho decorativo en baños | 6d | 2026-11-07 | 2026-11-17 | 435FS-4d | 2026-10-17 | 2026-10-24 | 6d | 2026-10-23 | 2026-10-30 | 24d | 0d |
| 455 | 1.3.16.3.7 | Sardinel en regadera | 4d | 2026-11-24 | 2026-11-28 | 449 | 2026-11-02 | 2026-11-06 | 4d | 2026-11-07 | 2026-11-12 | 55d |  |

| ID | WBS | Task | Duration | Start | Finish | Predecessors | Baseline start | Baseline finish | Baseline duration | Baseline 1 start | Baseline 1 finish | Total slack | Free slack |
| --- | --- | --- | --- | --- | --- | --- | --- | --- | --- | --- | --- | --- | --- |
| 456 | 1.3.16.4 | **ESCALERA** | 9d | 2026-11-26 | 2026-12-08 |  | 2026-11-04 | 2026-11-17 | 9d | 2026-11-10 | 2026-11-23 | 13d |  |
| 457 | 1.3.16.4.1 | Piso Adhara 44X89 | 7d | 2026-11-26 | 2026-12-04 | 323, 435, 444FS-2d | 2026-11-04 | 2026-11-12 | 7d | 2026-11-10 | 2026-11-20 | 13d | 0d |
| 458 | 1.3.16.4.2 | Zoclo Adhara 44X89 | 4d | 2026-12-02 | 2026-12-08 | 457FS-2d | 2026-11-10 | 2026-11-17 | 4d | 2026-11-18 | 2026-11-23 | 13d | 0d |
| 459 | 1.3.17 | **EXTERIOR** | 3d | 2026-10-22 | 2026-10-26 |  | 2026-10-01 | 2026-10-05 | 3d | 2026-10-07 | 2026-10-12 | 18d |  |
| 460 | 1.3.17.1 | Rastrilleo, afine y nivelado de tierra | 3d | 2026-10-22 | 2026-10-26 | 410, 413 | 2026-10-01 | 2026-10-05 | 3d | 2026-10-07 | 2026-10-12 | 18d | 0d |
| 461 | 1.3.18 | **SEGUNDA LIMPIEZA DE OBRA** | 4d | 2026-12-08 | 2026-12-12 |  | 2026-11-17 | 2026-11-21 | 4d | 2026-11-23 | 2026-11-27 | 37d |  |
| 462 | 1.3.18.1 | Segunda limpieza de obra | 2d | 2026-12-08 | 2026-12-10 | 457, 458 | 2026-11-17 | 2026-11-19 | 2d | 2026-11-23 | 2026-11-25 | 37d | 0d |
| 463 | 1.3.18.2 | Segunda carga y acarreo de escombro | 2d | 2026-12-10 | 2026-12-12 | 462 | 2026-11-19 | 2026-11-21 | 2d | 2026-11-25 | 2026-11-27 | 37d | 24d |
| 464 | 1.3.19 | **CANCELERIA PUERTAS Y VENTANAS DE ALUMINIO** | 17d | 2026-11-26 | 2026-12-17 |  | 2026-11-04 | 2026-11-26 | 17d | 2026-11-10 | 2026-12-02 | 14d |  |
| 465 | 1.3.19.1 | Fijo medidas 0.30x4.90m | 7d | 2026-11-28 | 2026-12-08 | 435, 444 | 2026-11-06 | 2026-11-17 | 7d | 2026-11-12 | 2026-11-23 | 22d | 9d |
| 466 | 1.3.19.2 | Ventana Corrediza 1.80x1.60m | 4d | 2026-11-26 | 2026-12-01 | 435FS+10d | 2026-11-04 | 2026-11-09 | 4d | 2026-11-10 | 2026-11-17 | 27d | 14d |
| 467 | 1.3.19.3 | Ventana Corrediza 0.60x0.40m | 4d | 2026-11-28 | 2026-12-03 | 435FS+12d | 2026-11-06 | 2026-11-11 | 4d | 2026-11-12 | 2026-11-19 | 25d | 12d |
| 468 | 1.3.19.4 | Ventana Corrediza 1.54x0.50m | 4d | 2026-11-28 | 2026-12-03 | 435FS+12d | 2026-11-06 | 2026-11-11 | 4d | 2026-11-12 | 2026-11-19 | 25d | 12d |
| 469 | 1.3.19.5 | Fijo medidas 1.40x2.50m | 4d | 2026-12-02 | 2026-12-08 | 435FS+10d, 444FS+3d | 2026-11-10 | 2026-11-17 | 4d | 2026-11-18 | 2026-11-23 | 16d | 0d |
| 470 | 1.3.19.6 | Ventana Corrediza 1.80x1.50m | 4d | 2026-12-04 | 2026-12-10 | 435FS+7d, 444FS+2d, 457 | 2026-11-12 | 2026-11-19 | 4d | 2026-11-20 | 2026-11-25 | 14d | 0d |
| 471 | 1.3.19.7 | Ventana Corrediza 1.40x1.60m | 4d | 2026-12-04 | 2026-12-10 | 435, 444, 457 | 2026-11-12 | 2026-11-19 | 4d | 2026-11-20 | 2026-11-25 | 14d | 0d |
| 472 | 1.3.19.8 | Ventana Corrediza 0.95x0.40m | 4d | 2026-12-04 | 2026-12-10 | 435, 444, 457 | 2026-11-12 | 2026-11-19 | 4d | 2026-11-20 | 2026-11-25 | 14d | 0d |
| 473 | 1.3.19.9 | Puerta corrediza 3.85x2.10m | 6d | 2026-12-08 | 2026-12-15 | 469 | 2026-11-17 | 2026-11-24 | 6d | 2026-11-23 | 2026-11-30 | 16d | 3d |
| 474 | 1.3.19.10 | Barandal de Cristal Templado | 6d | 2026-12-10 | 2026-12-17 | 470, 471, 472 | 2026-11-19 | 2026-11-26 | 6d | 2026-11-25 | 2026-12-02 | 14d | 1d |
| 475 | 1.3.20 | **CARPINTERIA, PUERTAS EXTERIORES E INTERIORES** | 9d | 2026-12-08 | 2026-12-18 |  | 2026-11-17 | 2026-11-27 | 9d | 2026-11-23 | 2026-12-03 | 13d |  |
| 476 | 1.3.20.1 | Puerta P-01 de seguridad | 5d | 2026-12-08 | 2026-12-14 | 458 | 2026-11-17 | 2026-11-23 | 5d | 2026-11-23 | 2026-11-28 | 17d | 4d |
| 477 | 1.3.20.2 | Puerta P-01 interior | 8d | 2026-12-08 | 2026-12-17 | 458 | 2026-11-17 | 2026-11-26 | 8d | 2026-11-23 | 2026-12-02 | 14d | 1d |
| 478 | 1.3.20.3 | Puerta P-02 interior | 8d | 2026-12-08 | 2026-12-17 | 458 | 2026-11-17 | 2026-11-26 | 8d | 2026-11-23 | 2026-12-02 | 14d | 1d |
| 479 | 1.3.20.4 | Puerta P-03 interior | 4d | 2026-12-14 | 2026-12-18 | 458FS+5d | 2026-11-23 | 2026-11-27 | 4d | 2026-11-28 | 2026-12-03 | 13d | 0d |
| 480 | 1.3.20.5 | Puerta P-04 interior | 4d | 2026-12-14 | 2026-12-18 | 458FS+5d | 2026-11-23 | 2026-11-27 | 4d | 2026-11-28 | 2026-12-03 | 13d | 0d |

| ID | WBS | Task | Duration | Start | Finish | Predecessors | Baseline start | Baseline finish | Baseline duration | Baseline 1 start | Baseline 1 finish | Total slack | Free slack |
| --- | --- | --- | --- | --- | --- | --- | --- | --- | --- | --- | --- | --- | --- |
| 481 | 1.3.21 | **VOLADOS, BARANDAL Y ESCALERA** | 33d | 2026-10-31 | 2026-12-12 |  | 2026-10-09 | 2026-11-21 | 33d | 2026-10-16 | 2026-11-27 | 21d |  |
| 482 | 1.3.21.1 | Barandal de Herreria en escalera | 4d | 2026-11-19 | 2026-11-24 | 483FS-4d | 2026-10-28 | 2026-11-02 | 4d | 2026-11-03 | 2026-11-07 | 36d | 15d |
| 483 | 1.3.21.2 | Escalera de herreria | 18d | 2026-10-31 | 2026-11-24 | 424 | 2026-10-09 | 2026-11-02 | 18d | 2026-10-16 | 2026-11-07 | 21d | 0d |
| 484 | 1.3.21.3 | Techumbre en acceso Principal | 14d | 2026-11-18 | 2026-12-04 | 483FS-5d | 2026-10-27 | 2026-11-12 | 14d | 2026-11-02 | 2026-11-20 | 27d | 6d |
| 485 | 1.3.21.4 | Techumbre en 1.80x0.50m | 7d | 2026-11-18 | 2026-11-26 | 483FS-5d | 2026-10-27 | 2026-11-04 | 7d | 2026-11-02 | 2026-11-10 | 21d | 0d |
| 486 | 1.3.21.5 | Techumbre en 1.40x0.50m | 7d | 2026-11-26 | 2026-12-04 | 485 | 2026-11-04 | 2026-11-12 | 7d | 2026-11-10 | 2026-11-20 | 21d | 0d |
| 487 | 1.3.21.6 | Imper con manto prefabricado | 5d | 2026-11-30 | 2026-12-07 | 485, 486FS-4d | 2026-11-07 | 2026-11-13 | 5d | 2026-11-13 | 2026-11-21 | 21d | 0d |
| 488 | 1.3.21.7 | Plafon hoja tablaroca std | 5d | 2026-12-07 | 2026-12-12 | 487 | 2026-11-13 | 2026-11-21 | 5d | 2026-11-21 | 2026-11-27 | 21d | 0d |
| 489 | 1.3.21.8 | Acabado Woodstock en parte inf. Cubierta | 5d | 2026-12-07 | 2026-12-12 | 487 | 2026-11-13 | 2026-11-21 | 5d | 2026-11-21 | 2026-11-27 | 21d | 0d |
| 490 | 1.3.22 | **INSTALACION ELECTRICA** | 16d | 2026-11-07 | 2026-11-28 |  | 2026-10-17 | 2026-11-06 | 16d | 2026-10-23 | 2026-11-12 | 42d |  |
| 491 | 1.3.22.1 | Alimentación eléctrica base a centro de carga | 5d | 2026-11-12 | 2026-11-20 | 414, 435 | 2026-10-22 | 2026-10-28 | 5d | 2026-10-29 | 2026-11-04 | 46d | 0d |
| 492 | 1.3.22.2 | Interruptor termomagnético 1x20 A | 1d | 2026-11-20 | 2026-11-21 | 491 | 2026-10-29 | 2026-10-29 | 1d | 2026-11-04 | 2026-11-05 | 46d | 4d |
| 493 | 1.3.22.3 | Interruptor termomagnético 2x20 A | 1d | 2026-11-20 | 2026-11-21 | 491 | 2026-10-29 | 2026-10-29 | 1d | 2026-11-04 | 2026-11-05 | 46d | 4d |
| 494 | 1.3.22.4 | Salida para apagador 3 vías | 4d | 2026-11-07 | 2026-11-12 | 396, 435FS-4d | 2026-10-17 | 2026-10-22 | 4d | 2026-10-23 | 2026-10-28 | 42d | 0d |
| 495 | 1.3.22.5 | Salida para apagador doble | 3d | 2026-11-12 | 2026-11-18 | 494 | 2026-10-22 | 2026-10-26 | 3d | 2026-10-29 | 2026-11-02 | 44d | 0d |
| 496 | 1.3.22.6 | Salida para apagador sencillo | 3d | 2026-11-12 | 2026-11-18 | 494 | 2026-10-22 | 2026-10-26 | 3d | 2026-10-29 | 2026-11-02 | 44d | 0d |
| 497 | 1.3.22.7 | Salida de alumbrado en losa | 5d | 2026-11-12 | 2026-11-20 | 494 | 2026-10-22 | 2026-10-28 | 5d | 2026-10-29 | 2026-11-04 | 42d | 0d |
| 498 | 1.3.22.8 | Salida para contacto exterior doble | 2d | 2026-11-12 | 2026-11-17 | 494 | 2026-10-22 | 2026-10-24 | 2d | 2026-10-29 | 2026-10-30 | 45d | 3d |
| 499 | 1.3.22.9 | Salida para contacto 220 V | 3d | 2026-11-17 | 2026-11-20 | 494FS+2d | 2026-10-26 | 2026-10-28 | 3d | 2026-10-31 | 2026-11-04 | 42d | 0d |
| 500 | 1.3.22.10 | Salida para contacto doble | 5d | 2026-11-17 | 2026-11-23 | 494FS+2d | 2026-10-26 | 2026-10-30 | 5d | 2026-10-31 | 2026-11-06 | 45d | 3d |
| 501 | 1.3.22.11 | Salida para contacto doble área húmeda | 2d | 2026-11-20 | 2026-11-23 | 498, 499 | 2026-10-29 | 2026-10-30 | 2d | 2026-11-04 | 2026-11-06 | 45d | 3d |
| 502 | 1.3.22.12 | Salida TV / telefonía / intercom | 4d | 2026-11-20 | 2026-11-25 | 498, 499 | 2026-10-29 | 2026-11-03 | 4d | 2026-11-04 | 2026-11-09 | 43d | 1d |
| 503 | 1.3.22.13 | Extractor 4 baño | 5d | 2026-11-20 | 2026-11-26 | 498, 499 | 2026-10-29 | 2026-11-04 | 5d | 2026-11-04 | 2026-11-10 | 42d | 0d |
| 504 | 1.3.22.14 | Prueba eléctrica | 2d | 2026-11-26 | 2026-11-28 | 491, 492, 493, 494, 495, 496, 497, 498, 499, 500, 501, 502, 503, 557, 558, 564, 559, 560, 562, 563, 566, 568 | 2026-11-04 | 2026-11-06 | 2d | 2026-11-10 | 2026-11-12 | 42d | 29d |

| ID | WBS | Task | Duration | Start | Finish | Predecessors | Baseline start | Baseline finish | Baseline duration | Baseline 1 start | Baseline 1 finish | Total slack | Free slack |
| --- | --- | --- | --- | --- | --- | --- | --- | --- | --- | --- | --- | --- | --- |
| 505 | 1.3.23 | **INSTALACIÓN HIDRO-SANITARIA** | 11d | 2026-10-22 | 2026-11-05 |  | 2026-10-01 | 2026-10-15 | 11d | 2026-10-07 | 2026-10-21 | 13d |  |
| 506 | 1.3.23.1 | Tubería condensados PVC 1 | 5d | 2026-10-22 | 2026-10-28 | 410 | 2026-10-01 | 2026-10-07 | 5d | 2026-10-07 | 2026-10-14 | 13d | 0d |
| 507 | 1.3.23.2 | Tubería sanitaria PVC 4 | 5d | 2026-10-22 | 2026-10-28 | 413 | 2026-10-01 | 2026-10-07 | 5d | 2026-10-07 | 2026-10-14 | 21d | 0d |
| 508 | 1.3.23.3 | Coladera H-444 | 1d | 2026-10-29 | 2026-10-29 | 507 | 2026-10-07 | 2026-10-08 | 1d | 2026-10-14 | 2026-10-15 | 21d | 4d |
| 509 | 1.3.23.4 | Caja PVC para lavadora | 3d | 2026-10-22 | 2026-10-26 | 410 | 2026-10-01 | 2026-10-05 | 3d | 2026-10-07 | 2026-10-12 | 13d | 0d |
| 510 | 1.3.23.5 | Salida para secadora PVC 4 | 3d | 2026-10-22 | 2026-10-26 | 413 | 2026-10-01 | 2026-10-05 | 3d | 2026-10-07 | 2026-10-12 | 13d | 0d |
| 511 | 1.3.23.6 | Salida hidráulica para boiler | 2d | 2026-10-22 | 2026-10-24 | 410 | 2026-10-01 | 2026-10-03 | 2d | 2026-10-07 | 2026-10-09 | 14d | 1d |
| 512 | 1.3.23.7 | Salida hidráulica para llave de jardín | 3d | 2026-10-22 | 2026-10-26 | 410 | 2026-10-01 | 2026-10-05 | 3d | 2026-10-07 | 2026-10-12 | 13d | 0d |
| 513 | 1.3.23.8 | Salida hidráulica para lavabo | 4d | 2026-10-22 | 2026-10-27 | 410 | 2026-10-01 | 2026-10-06 | 4d | 2026-10-07 | 2026-10-13 | 13d | 0d |
| 514 | 1.3.23.9 | Salida hidráulica para purificación | 4d | 2026-10-22 | 2026-10-27 | 410 | 2026-10-01 | 2026-10-06 | 4d | 2026-10-07 | 2026-10-13 | 13d | 0d |
| 515 | 1.3.23.10 | Salida sanitaria para lavabo | 2d | 2026-10-26 | 2026-10-27 | 410FS+2d | 2026-10-03 | 2026-10-06 | 2d | 2026-10-09 | 2026-10-13 | 13d | 0d |
| 516 | 1.3.23.11 | Salida hidráulica para lavadero | 2d | 2026-10-26 | 2026-10-27 | 410FS+2d | 2026-10-03 | 2026-10-06 | 2d | 2026-10-09 | 2026-10-13 | 13d | 0d |
| 517 | 1.3.23.12 | Salida sanitaria para lavadero | 2d | 2026-10-27 | 2026-10-28 | 410FS+3d | 2026-10-05 | 2026-10-07 | 2d | 2026-10-12 | 2026-10-14 | 13d | 0d |
| 518 | 1.3.23.13 | Salida hidráulica para lavadora | 2d | 2026-10-27 | 2026-10-28 | 410FS+3d | 2026-10-05 | 2026-10-07 | 2d | 2026-10-12 | 2026-10-14 | 13d | 0d |
| 519 | 1.3.23.14 | Salida sanitaria para lavadora | 2d | 2026-10-28 | 2026-10-29 | 413FS+4d | 2026-10-06 | 2026-10-08 | 2d | 2026-10-13 | 2026-10-15 | 13d | 0d |
| 520 | 1.3.23.15 | Salida hidráulica para regadera | 5d | 2026-10-28 | 2026-11-03 | 410FS+4d | 2026-10-06 | 2026-10-13 | 5d | 2026-10-13 | 2026-10-19 | 18d | 0d |
| 521 | 1.3.23.16 | Salida sanitaria para regadera | 4d | 2026-10-28 | 2026-11-02 | 413FS+4d | 2026-10-06 | 2026-10-12 | 4d | 2026-10-13 | 2026-10-17 | 19d | 2d |
| 522 | 1.3.23.17 | Salida hidráulica para WC | 2d | 2026-10-26 | 2026-10-27 | 413FS+2d | 2026-10-03 | 2026-10-06 | 2d | 2026-10-09 | 2026-10-13 | 13d | 0d |
| 523 | 1.3.23.18 | Salida sanitaria para WC | 4d | 2026-10-28 | 2026-11-02 | 413FS+4d | 2026-10-06 | 2026-10-12 | 4d | 2026-10-13 | 2026-10-17 | 13d | 0d |
| 524 | 1.3.23.19 | Salida hidráulica para zinc | 4d | 2026-10-28 | 2026-11-02 | 413FS+4d | 2026-10-06 | 2026-10-12 | 4d | 2026-10-13 | 2026-10-17 | 13d | 0d |
| 525 | 1.3.23.20 | Salida sanitaria para zinc | 3d | 2026-10-30 | 2026-11-03 | 413FS+6d | 2026-10-08 | 2026-10-13 | 3d | 2026-10-15 | 2026-10-19 | 13d | 0d |
| 526 | 1.3.23.21 | Tubo para ventila de baño 2 | 5d | 2026-10-22 | 2026-10-28 | 506SS | 2026-10-01 | 2026-10-07 | 5d | 2026-10-07 | 2026-10-14 | 13d | 0d |
| 527 | 1.3.23.22 | Tubo para minisplit PVC 3 | 5d | 2026-10-29 | 2026-11-04 | 526 | 2026-10-07 | 2026-10-14 | 5d | 2026-10-14 | 2026-10-20 | 13d | 0d |
| 528 | 1.3.23.23 | Cuadro de medición | 5d | 2026-10-27 | 2026-11-02 | 460 | 2026-10-05 | 2026-10-12 | 5d | 2026-10-12 | 2026-10-17 | 18d | 0d |
| 529 | 1.3.23.24 | Pozo de absorción 0.50x0.50x0.50 | 3d | 2026-10-27 | 2026-10-29 | 460 | 2026-10-05 | 2026-10-08 | 3d | 2026-10-12 | 2026-10-15 | 21d | 0d |
| 530 | 1.3.23.25 | Prueba sanitaria final | 1d | 2026-11-04 | 2026-11-05 | 506, 507, 508, 510, 515, 517, 519, 521, 523, 526, 527 | 2026-10-14 | 2026-10-15 | 1d | 2026-10-20 | 2026-10-21 | 17d | 4d |
| 531 | 1.3.23.26 | Prueba hidrostática final | 1d | 2026-11-03 | 2026-11-04 | 511, 512, 513, 514, 516, 518, 520, 522, 524, 528, 529, 534, 535, 533, 532 | 2026-10-13 | 2026-10-14 | 1d | 2026-10-19 | 2026-10-20 | 18d | 5d |
| 532 | 1.3.23.27 | Salida válvula control 19 mm | 1d | 2026-11-02 | 2026-11-03 | 528 | 2026-10-12 | 2026-10-13 | 1d | 2026-10-17 | 2026-10-19 | 18d | 0d |
| 533 | 1.3.23.28 | Salida válvula control 13 mm | 1d | 2026-11-02 | 2026-11-03 | 528 | 2026-10-12 | 2026-10-13 | 1d | 2026-10-17 | 2026-10-19 | 18d | 0d |
| 534 | 1.3.23.29 | Salida hidráulica para tanque hidroneumático | 3d | 2026-10-27 | 2026-10-29 | 460 | 2026-10-05 | 2026-10-08 | 3d | 2026-10-12 | 2026-10-15 | 21d | 3d |
| 535 | 1.3.23.30 | Salida hidráulica para Active Driver | 3d | 2026-10-27 | 2026-10-29 | 460 | 2026-10-05 | 2026-10-08 | 3d | 2026-10-12 | 2026-10-15 | 21d | 3d |

| ID | WBS | Task | Duration | Start | Finish | Predecessors | Baseline start | Baseline finish | Baseline duration | Baseline 1 start | Baseline 1 finish | Total slack | Free slack |
| --- | --- | --- | --- | --- | --- | --- | --- | --- | --- | --- | --- | --- | --- |
| 536 | 1.3.24 | **INSTALACION DE GAS** | 8d | 2026-10-20 | 2026-10-29 |  | 2026-09-29 | 2026-10-08 | 8d | 2026-10-05 | 2026-10-15 | 46d |  |
| 537 | 1.3.24.1 | Ramaleo para gas 1/2 | 5d | 2026-10-23 | 2026-10-29 | 460FS-2d, 538 | 2026-10-02 | 2026-10-08 | 5d | 2026-10-08 | 2026-10-15 | 46d | 0d |
| 538 | 1.3.24.2 | Excavación a mano material tipo B | 3d | 2026-10-20 | 2026-10-23 | 460FF-2d | 2026-09-29 | 2026-10-02 | 3d | 2026-10-05 | 2026-10-08 | 46d | 0d |
| 539 | 1.3.25 | **MUEBLES SANITARIOS** | 29d | 2026-11-28 | 2027-01-08 |  | 2026-11-06 | 2026-12-14 | 29d | 2026-11-12 | 2026-12-19 | 25d |  |
| 540 | 1.3.25.1 | WC completo Austral | 2d | 2026-11-28 | 2026-12-01 | 444, 451, 530, 531 | 2026-11-06 | 2026-11-09 | 2d | 2026-11-12 | 2026-11-17 | 27d | 14d |
| 541 | 1.3.25.2 | Lavabo Senna con pedestal | 4d | 2026-11-28 | 2026-12-03 | 444, 449, 451, 530, 531 | 2026-11-06 | 2026-11-11 | 4d | 2026-11-12 | 2026-11-19 | 25d | 12d |
| 542 | 1.3.25.3 | Tarja / lavabo combo Guinea 80x45 | 2d | 2026-11-28 | 2026-12-01 | 288, 444, 449, 451, 531 | 2026-11-06 | 2026-11-09 | 2d | 2026-11-12 | 2026-11-17 | 53d |  |
| 543 | 1.3.25.4 | Regadera con monomando | 3d | 2026-12-01 | 2026-12-04 | 444, 449FS+2d, 451FS+2d, 530, 531 | 2026-11-09 | 2026-11-12 | 3d | 2026-11-17 | 2026-11-20 | 24d | 11d |
| 544 | 1.3.25.5 | Coladera inserto cerámico | 2d | 2026-12-02 | 2026-12-04 | 449, 451FS+3d, 531 | 2026-11-10 | 2026-11-12 | 2d | 2026-11-18 | 2026-11-20 | 24d | 11d |
| 545 | 1.3.25.6 | Toallero sencillo | 1d | 2027-01-07 | 2027-01-08 | 437FS-1d | 2026-12-12 | 2026-12-14 | 1d | 2026-12-18 | 2026-12-19 | 13d | 0d |
| 546 | 1.3.25.7 | Toallero barra | 1d | 2027-01-07 | 2027-01-08 | 437FS-1d | 2026-12-12 | 2026-12-14 | 1d | 2026-12-18 | 2026-12-19 | 13d | 0d |
| 547 | 1.3.25.8 | Portapapel | 1d | 2027-01-07 | 2027-01-08 | 437FS-1d | 2026-12-12 | 2026-12-14 | 1d | 2026-12-18 | 2026-12-19 | 13d | 0d |
| 548 | 1.3.25.9 | Gancho baño | 1d | 2027-01-07 | 2027-01-08 | 437FS-1d | 2026-12-12 | 2026-12-14 | 1d | 2026-12-18 | 2026-12-19 | 13d | 0d |
| 549 | 1.3.26 | **EQUIPAMIENTO** | 6d | 2026-10-14 | 2026-10-21 |  | 2026-09-23 | 2026-09-30 | 6d | 2026-09-29 | 2026-10-06 | 72d |  |
| 550 | 1.3.26.1 | Electronivel Rotoplas 5 m | 2d | 2026-10-15 | 2026-10-17 | 555 | 2026-09-24 | 2026-09-26 | 2d | 2026-09-30 | 2026-10-02 | 75d | 62d |
| 551 | 1.3.26.2 | Manómetro | 1d | 2026-10-15 | 2026-10-16 | 555 | 2026-09-24 | 2026-09-25 | 1d | 2026-09-30 | 2026-10-01 | 76d | 63d |
| 552 | 1.3.26.3 | Interruptor de presión 30-50 PSI | 1d | 2026-10-15 | 2026-10-16 | 555 | 2026-09-24 | 2026-09-25 | 1d | 2026-09-30 | 2026-10-01 | 76d | 63d |
| 553 | 1.3.26.4 | Tanque hidroneumático FPS-24LX | 3d | 2026-10-15 | 2026-10-19 | 555 | 2026-09-24 | 2026-09-28 | 3d | 2026-09-30 | 2026-10-03 | 72d | 0d |
| 554 | 1.3.26.5 | Bomba sumergible Dominator 1.2 HP | 2d | 2026-10-19 | 2026-10-21 | 553 | 2026-09-28 | 2026-09-30 | 2d | 2026-10-03 | 2026-10-06 | 72d | 59d |
| 555 | 1.3.26.6 | Cisterna prefabricada 2800 L | 1d | 2026-10-14 | 2026-10-15 | 417FF | 2026-09-23 | 2026-09-24 | 1d | 2026-09-29 | 2026-09-30 | 72d | 0d |
| 556 | 1.3.27 | **LUMINARIAS** | 5d | 2026-11-20 | 2026-11-26 |  | 2026-10-29 | 2026-11-04 | 5d | 2026-11-04 | 2026-11-10 | 42d |  |
| 557 | 1.3.27.1 | Roseta cerámica | 3d | 2026-11-20 | 2026-11-24 | 497 | 2026-10-29 | 2026-11-02 | 3d | 2026-11-04 | 2026-11-07 | 44d | 2d |
| 558 | 1.3.27.2 | Luminaria lagartijera LED | 3d | 2026-11-20 | 2026-11-24 | 497 | 2026-10-29 | 2026-11-02 | 3d | 2026-11-04 | 2026-11-07 | 44d | 2d |
| 559 | 1.3.27.3 | Spot 6W Tecnolite | 3d | 2026-11-20 | 2026-11-24 | 497 | 2026-10-29 | 2026-11-02 | 3d | 2026-11-04 | 2026-11-07 | 44d | 2d |
| 560 | 1.3.27.4 | Spot 7W Tecnolite | 3d | 2026-11-20 | 2026-11-24 | 497 | 2026-10-29 | 2026-11-02 | 3d | 2026-11-04 | 2026-11-07 | 44d | 2d |
| 561 | 1.3.27.5 | Arbotante exterior | 2d | 2026-11-20 | 2026-11-23 | 497 | 2026-10-29 | 2026-10-30 | 2d | 2026-11-04 | 2026-11-06 | 42d | 0d |
| 562 | 1.3.27.6 | Estaca LED exterior | 3d | 2026-11-23 | 2026-11-26 | 561 | 2026-10-31 | 2026-11-04 | 3d | 2026-11-06 | 2026-11-10 | 42d | 0d |
| 563 | 1.3.27.7 | Tira LED | 3d | 2026-11-23 | 2026-11-26 | 561 | 2026-10-31 | 2026-11-04 | 3d | 2026-11-06 | 2026-11-10 | 42d | 0d |
| 564 | 1.3.27.8 | Spot exterior 50W | 2d | 2026-11-20 | 2026-11-23 | 497 | 2026-10-29 | 2026-10-30 | 2d | 2026-11-04 | 2026-11-06 | 45d | 3d |

| ID | WBS | Task | Type | Duration | Start | Finish | Predecessors | Complete | Remaining | Baseline start | Baseline finish | Baseline duration | Baseline 1 start | Baseline 1 finish | Total slack | Free slack |
| --- | --- | --- | --- | --- | --- | --- | --- | --- | --- | --- | --- | --- | --- | --- | --- | --- |
| 565 | 1.3.28 | **TIMBRE** |  | 2d | 2026-11-21 | 2026-11-24 |  |  |  | 2026-10-30 | 2026-11-02 | 2d | 2026-11-05 | 2026-11-07 | 44d |  |
| 566 | 1.3.28.1 | Timbre inalámbrico con bocina |  | 2d | 2026-11-21 | 2026-11-24 | 495FS+3d, 496FS+3d |  |  | 2026-10-30 | 2026-11-02 | 2d | 2026-11-05 | 2026-11-07 | 44d | 2d |
| 567 | 1.3.29 | **OBRA EXTERIOR - BARDA** |  | 18d | 2026-10-27 | 2026-11-19 |  |  |  | 2026-10-05 | 2026-10-27 | 18d | 2026-10-12 | 2026-11-03 | 50d |  |
| 568 | 1.3.29.1 | Murete convencional |  | 5d | 2026-11-02 | 2026-11-07 | 460FS+5d |  |  | 2026-10-12 | 2026-10-17 | 5d | 2026-10-17 | 2026-10-23 | 56d | 14d |
| 569 | 1.3.29.2 | Barda de block aparente |  | 18d | 2026-10-27 | 2026-11-19 | 460 |  |  | 2026-10-05 | 2026-10-27 | 18d | 2026-10-12 | 2026-11-03 | 50d | 37d |
| 570 | 1.3.30 | **TERCER LIMPIEZA DE OBRA** |  | 13d | 2027-01-08 | 2027-01-25 |  |  |  | 2026-12-14 | 2027-01-04 | 13d | 2026-12-21 | 2027-01-11 | 13d |  |
| 571 | 1.3.30.1 | Limpieza fina para entrega |  | 6d | 2027-01-08 | 2027-01-16 | 437, 438, 439, 470, 479, 480, 504, 530, 531, 545, 546, 547, 548, 550, 551, 552, 553, 554, 569 |  |  | 2026-12-14 | 2026-12-21 | 6d | 2026-12-21 | 2026-12-30 | 13d | 0d |
| 572 | 1.3.30.2 | Tercera limpieza de obra |  | 4d | 2027-01-16 | 2027-01-21 | 571, 463 |  |  | 2026-12-22 | 2026-12-29 | 4d | 2026-12-30 | 2027-01-06 | 13d | 0d |
| 573 | 1.3.30.3 | Tercera carga y acarreo de escombro |  | 3d | 2027-01-21 | 2027-01-25 | 572 |  |  | 2026-12-29 | 2027-01-04 | 3d | 2027-01-06 | 2027-01-11 | 13d | 0d |
| 574 | 1.4 | **LOTE 03 M-661 CORSAC-A** |  | 200d | 2026-05-20 A | 2027-02-01 |  | 6% | 187.98d | 2026-05-20 | 2027-01-07 | 181d | 2026-05-20 | 2027-01-14 | 8d |  |
| 575 | 1.4.1 | **HITOS IMPORTANTES DEL LOTE** |  | 200d | 2026-05-20 A | 2027-02-01 |  |  | 200d | 2026-05-20 | 2027-01-07 | 181d | 2026-05-20 | 2027-01-14 | 8d |  |
| 576 | 1.4.1.1 | Inicio del Lote-03 M-661 Corsac-A | milestone | 0d | 2026-05-20 A | 2026-05-20 A | 6 | 100% |  | 2026-05-20 | 2026-05-20 |  | 2026-05-20 | 2026-05-20 |  |  |
| 577 | 1.4.1.2 | Colado de Losa de Cimentación | milestone | 0d | 2026-07-08 A | 2026-07-08 A | 608 | 100% |  | 2026-06-10 | 2026-06-10 |  | 2026-06-16 | 2026-06-16 |  |  |
| 578 | 1.4.1.3 | Colado de Losa de Entrepiso | milestone | 0d | 2026-08-14 | 2026-08-14 | 644 |  |  | 2026-07-17 | 2026-07-17 |  | 2026-07-23 | 2026-07-23 | 138d |  |
| 579 | 1.4.1.4 | Colado de Losa de Azotea | milestone | 0d | 2026-09-23 | 2026-09-23 | 684 |  |  | 2026-08-24 | 2026-08-24 |  | 2026-08-29 | 2026-08-29 | 108d |  |
| 580 | 1.4.1.5 | Entrega de vivienda | milestone | 0d | 2027-02-01 | 2027-02-01 | 876, 877, 878 |  |  | 2027-01-07 | 2027-01-07 |  | 2027-01-14 | 2027-01-14 | 8d |  |
| 581 | 1.4.2 | **TRABAJOS PRELIMINARES** |  | 2d | 2026-05-20 A | 2026-05-22 A |  | 100% |  | 2026-05-20 | 2026-05-22 | 2d | 2026-05-20 | 2026-05-22 |  |  |
| 582 | 1.4.2.1 | Trazo y nivelación |  | 2d | 2026-05-20 A | 2026-05-22 A | 576 | 100% |  | 2026-05-20 | 2026-05-22 | 2d | 2026-05-20 | 2026-05-22 |  |  |
| 583 | 1.4.3 | **EXCAVACIONES** |  | 3d | 2026-05-22 A | 2026-05-26 A |  | 100% |  | 2026-05-22 | 2026-05-26 | 3d | 2026-05-22 | 2026-05-26 |  |  |
| 584 | 1.4.3.1 | Excavación a mano material tipo B |  | 3d | 2026-05-22 A | 2026-05-26 A | 582 | 100% |  | 2026-05-22 | 2026-05-26 | 3d | 2026-05-22 | 2026-05-26 |  |  |
| 585 | 1.4.3.2 | Acarreo en carretilla 20 m |  | 2d | 2026-05-23 A | 2026-05-26 A | 584SS+1d | 100% |  | 2026-05-23 | 2026-05-26 | 2d | 2026-05-23 | 2026-05-26 |  |  |
| 586 | 1.4.4 | **CIMENTACION** |  | 18d | 2026-06-17 A | 2026-07-09 A |  | 100% |  | 2026-05-26 | 2026-06-11 | 13d | 2026-05-26 | 2026-06-17 |  |  |
| 587 | 1.4.4.1 | Cimbra perimetral losa de cimentación |  | 3d | 2026-06-17 A | 2026-06-22 A | 584FS+18d, 585 | 100% |  | 2026-05-26 | 2026-05-29 | 3d | 2026-05-26 | 2026-05-29 |  |  |
| 588 | 1.4.4.2 | Sistema antitermitas PVC |  | 3d | 2026-06-17 A | 2026-06-22 A | 584FS+18d, 585 | 100% |  | 2026-05-26 | 2026-05-29 | 3d | 2026-05-26 | 2026-05-29 |  |  |
| 589 | 1.4.4.3 | Hule negro en cimentación |  | 1d | 2026-06-22 A | 2026-06-23 A | 588 | 100% |  | 2026-05-29 | 2026-06-01 | 1d | 2026-05-29 | 2026-06-01 |  |  |
| 590 | 1.4.4.4 | Ramaleo poliducto eléctrico cimentación |  | 2d | 2026-06-23 A | 2026-06-25 A | 589 | 100% |  | 2026-06-01 | 2026-06-03 | 2d | 2026-06-01 | 2026-06-03 |  |  |
| 591 | 1.4.4.5 | Ramaleo eléctrico base-medición a centro de carga |  | 1d | 2026-06-23 A | 2026-06-24 A | 589 | 100% |  | 2026-06-01 | 2026-06-02 | 1d | 2026-06-01 | 2026-06-02 |  |  |
| 592 | 1.4.4.6 | Ramaleo eléctrico exterior |  | 1d | 2026-06-25 A | 2026-06-26 A | 590, 591 | 100% |  | 2026-06-03 | 2026-06-04 | 1d | 2026-06-03 | 2026-06-04 |  |  |
| 593 | 1.4.4.7 | Ramaleo para cable poliducto 3/4 |  | 1d | 2026-06-25 A | 2026-06-26 A | 590, 591 | 100% |  | 2026-06-03 | 2026-06-04 | 1d | 2026-06-03 | 2026-06-04 |  |  |
| 594 | 1.4.4.8 | Ramaleo para TV poliducto 3/4 |  | 1d | 2026-06-25 A | 2026-06-26 A | 590, 591 | 100% |  | 2026-06-03 | 2026-06-04 | 1d | 2026-06-03 | 2026-06-04 |  |  |
| 595 | 1.4.4.9 | Ramaleo hidráulico CPVC 1-1/4" cimentación |  | 1d | 2026-06-23 A | 2026-06-24 A | 589 | 100% |  | 2026-06-01 | 2026-06-02 | 1d | 2026-06-01 | 2026-06-02 |  |  |
| 596 | 1.4.4.10 | Ramaleo hidráulico CPVC 1 cimentación |  | 1d | 2026-06-23 A | 2026-06-24 A | 589, 595SS | 100% |  | 2026-06-01 | 2026-06-02 | 1d | 2026-06-01 | 2026-06-02 |  |  |
| 597 | 1.4.4.11 | Ramaleo hidráulico CPVC 3/4 cimentación |  | 2d | 2026-06-24 A | 2026-06-26 A | 596 | 100% |  | 2026-06-02 | 2026-06-04 | 2d | 2026-06-02 | 2026-06-04 |  |  |
| 598 | 1.4.4.12 | Ramaleo hidráulico CPVC 1/2 cimentación |  | 2d | 2026-06-26 A | 2026-06-29 A | 597 | 100% |  | 2026-06-04 | 2026-06-06 | 2d | 2026-06-04 | 2026-06-06 |  |  |
| 599 | 1.4.4.13 | Prueba hidráulica |  | 1d | 2026-06-29 A | 2026-06-30 A | 595, 596, 597, 598 | 100% |  | 2026-06-06 | 2026-06-08 | 1d | 2026-06-06 | 2026-06-08 |  |  |
| 600 | 1.4.4.14 | Ramaleo sanitario PVC 4 cimentación |  | 2d | 2026-06-24 A | 2026-06-26 A | 589FS+1d | 100% |  | 2026-06-02 | 2026-06-04 | 2d | 2026-06-02 | 2026-06-04 |  |  |
| 601 | 1.4.4.15 | Ramaleo sanitario PVC 2 cimentación |  | 1d | 2026-06-26 A | 2026-06-27 A | 600 | 100% |  | 2026-06-04 | 2026-06-05 | 1d | 2026-06-04 | 2026-06-05 |  |  |
| 602 | 1.4.4.16 | Prueba sanitaria |  | 1d | 2026-06-27 A | 2026-06-29 A | 600, 601 | 100% |  | 2026-06-05 | 2026-06-06 | 1d | 2026-06-05 | 2026-06-06 |  |  |
| 603 | 1.4.4.17 | Acero contratrabe CT-1 |  | 4d | 2026-06-27 A | 2026-07-02 A | 587FS+5d | 100% |  | 2026-05-29 | 2026-06-04 | 4d | 2026-06-05 | 2026-06-10 |  |  |
| 604 | 1.4.4.18 | Acero contratrabe CT-2 |  | 4d | 2026-06-27 A | 2026-07-02 A | 587FS+5d | 100% |  | 2026-05-29 | 2026-06-04 | 4d | 2026-06-05 | 2026-06-10 |  |  |
| 605 | 1.4.4.19 | Malla electrosoldada 6-6/8-8 |  | 2d | 2026-07-06 A | 2026-07-07 A | 603, 604, 606, 607 | 100% |  | 2026-06-06 | 2026-06-09 | 2d | 2026-06-12 | 2026-06-15 |  |  |
| 606 | 1.4.4.20 | Bastón de refuerzo LS |  | 2d | 2026-07-02 A | 2026-07-04 A | 603, 604 | 100% |  | 2026-06-04 | 2026-06-06 | 2d | 2026-06-10 | 2026-06-12 |  |  |
| 607 | 1.4.4.21 | Bastón de refuerzo LI |  | 2d | 2026-07-02 A | 2026-07-04 A | 603, 604 | 100% |  | 2026-06-04 | 2026-06-06 | 2d | 2026-06-10 | 2026-06-12 |  |  |
| 608 | 1.4.4.22 | Colado losa de cimentación f’c=200 |  | 1d | 2026-07-08 A | 2026-07-08 A | 587, 589, 592, 593, 594, 599, 602, 603, 604, 605, 606, 607, 610, 611 | 100% |  | 2026-06-09 | 2026-06-10 | 1d | 2026-06-15 | 2026-06-16 |  |  |
| 609 | 1.4.4.23 | Curado de concreto |  | 1d | 2026-07-09 A | 2026-07-09 A | 608 | 100% |  | 2026-06-10 | 2026-06-11 | 1d | 2026-06-16 | 2026-06-17 |  |  |
| 610 | 1.4.4.24 | Acero zapata ZT-1 |  | 4d | 2026-07-02 A | 2026-07-07 A | 603, 604 | 100% |  | 2026-06-04 | 2026-06-09 | 4d | 2026-06-10 | 2026-06-15 |  |  |
| 611 | 1.4.4.25 | Acero zapata ZT-2 |  | 4d | 2026-07-02 A | 2026-07-07 A | 603, 604 | 100% |  | 2026-06-04 | 2026-06-09 | 4d | 2026-06-10 | 2026-06-15 |  |  |

| ID | WBS | Task | Duration | Start | Finish | Predecessors | Complete | Remaining | Baseline start | Baseline finish | Baseline duration | Baseline 1 start | Baseline 1 finish | Total slack | Free slack |
| --- | --- | --- | --- | --- | --- | --- | --- | --- | --- | --- | --- | --- | --- | --- | --- |
| 612 | 1.4.5 | **MUROS, PLANTA BAJA. CASTILLOS Y CERRAMIENTOS** | 20d | 2026-07-03 A | 2026-07-29 |  | 12% | 17.61d | 2026-06-05 | 2026-06-30 | 20d | 2026-06-11 | 2026-07-06 | 152d |  |
| 613 | 1.4.5.1 | Anclaje de castillos y Columnas PB | 5d | 2026-07-03 A | 2026-07-09 A | 603FS+1d, 604FS+1d | 100% |  | 2026-06-05 | 2026-06-11 | 5d | 2026-06-11 | 2026-06-17 |  |  |
| 614 | 1.4.5.2 | Castillo K1 | 4d | 2026-07-10 A | 2026-07-15 | 609, 613 | 41% | 2.38d | 2026-06-11 | 2026-06-16 | 4d | 2026-06-17 | 2026-06-23 | 155d | 0d |
| 615 | 1.4.5.3 | Castillo K3 | 3d | 2026-07-13 | 2026-07-16 | 614FS-2d |  |  | 2026-06-13 | 2026-06-17 | 3d | 2026-06-19 | 2026-06-24 | 155d | 0d |
| 616 | 1.4.5.4 | Castillo K4 | 3d | 2026-07-13 | 2026-07-16 | 614FS-2d |  |  | 2026-06-13 | 2026-06-17 | 3d | 2026-06-19 | 2026-06-24 | 155d | 0d |
| 617 | 1.4.5.5 | Castillo K5 | 3d | 2026-07-15 | 2026-07-18 | 615FS-1d, 616FS-1d |  |  | 2026-06-16 | 2026-06-19 | 3d | 2026-06-23 | 2026-06-26 | 155d | 0d |
| 618 | 1.4.5.6 | Refuerzo de muro K6 | 3d | 2026-07-16 | 2026-07-20 | 617FS-2d |  |  | 2026-06-17 | 2026-06-22 | 3d | 2026-06-24 | 2026-06-27 | 155d | 0d |
| 619 | 1.4.5.7 | Dala de cerramiento CR-1 | 4d | 2026-07-16 | 2026-07-21 | 614, 615 |  |  | 2026-06-17 | 2026-06-23 | 4d | 2026-06-24 | 2026-06-29 | 158d |  |
| 620 | 1.4.5.8 | Dala de cerramiento CR-2 | 3d | 2026-07-16 | 2026-07-20 | 614, 615 |  |  | 2026-06-17 | 2026-06-22 | 3d | 2026-06-24 | 2026-06-27 | 159d |  |
| 621 | 1.4.5.9 | Cadena block dala | 4d | 2026-07-20 | 2026-07-24 | 618 |  |  | 2026-06-22 | 2026-06-26 | 4d | 2026-06-27 | 2026-07-02 | 155d |  |
| 622 | 1.4.5.10 | Muro de ladrillo aparente | 15d | 2026-07-10 A | 2026-07-29 | 609 | 11% | 13.38d | 2026-06-11 | 2026-06-30 | 15d | 2026-06-17 | 2026-07-06 | 8d | 0d |
| 623 | 1.4.5.11 | Muro de block planta baja | 13d | 2026-07-13 | 2026-07-29 | 609FS+2d |  |  | 2026-06-13 | 2026-06-30 | 13d | 2026-06-19 | 2026-07-06 | 8d | 0d |
| 624 | 1.4.5.12 | Ramaleo electrico en Muros Planta Baja | 4d | 2026-07-16 | 2026-07-21 | 622SS+5d |  |  | 2026-06-17 | 2026-06-23 | 4d | 2026-06-24 | 2026-06-29 | 11d | 0d |
| 625 | 1.4.5.13 | Ramaleo para cable poliducto 3/4 | 2d | 2026-07-21 | 2026-07-23 | 624 |  |  | 2026-06-23 | 2026-06-25 | 2d | 2026-06-29 | 2026-07-01 | 11d | 0d |
| 626 | 1.4.5.14 | Ramaleo para TV poliducto 3/4 | 3d | 2026-07-23 | 2026-07-28 | 625 |  |  | 2026-06-25 | 2026-06-29 | 3d | 2026-07-01 | 2026-07-04 | 11d | 2d |
| 627 | 1.4.6 | **ESCALERA** | 10d | 2026-08-14 | 2026-08-27 |  |  |  | 2026-07-17 | 2026-07-30 | 10d | 2026-07-23 | 2026-08-05 | 85d |  |
| 628 | 1.4.6.1 | Escalera de concreto armado | 10d | 2026-08-14 | 2026-08-27 | 644 |  |  | 2026-07-17 | 2026-07-30 | 10d | 2026-07-23 | 2026-08-05 | 85d | 77d |
| 629 | 1.4.7 | **LOSA DE ENTREPISO (viegueta y caseton)** | 17d | 2026-07-27 | 2026-08-17 |  |  |  | 2026-06-27 | 2026-07-18 | 17d | 2026-07-03 | 2026-07-24 | 11d |  |
| 630 | 1.4.7.1 | Dala de coronamiento 10cm | 3d | 2026-08-04 | 2026-08-07 | 646FS-1d, 632, 633, 634, 635, 636, 637 |  |  | 2026-07-07 | 2026-07-09 | 3d | 2026-07-13 | 2026-07-16 | 11d | 3d |
| 631 | 1.4.7.2 | Dala de coronamiento 12cm | 3d | 2026-08-05 | 2026-08-08 | 646, 632, 633, 634, 635, 636, 637 |  |  | 2026-07-08 | 2026-07-10 | 3d | 2026-07-14 | 2026-07-17 | 10d | 2d |
| 632 | 1.4.7.3 | Trabe TR-1 | 3d | 2026-07-27 | 2026-07-30 | 622FS-2d, 623FS-2d |  |  | 2026-06-27 | 2026-07-01 | 3d | 2026-07-03 | 2026-07-07 | 12d | 4d |
| 633 | 1.4.7.4 | Trabe TR-2 | 4d | 2026-07-28 | 2026-08-01 | 622FS-1d, 623FS-1d |  |  | 2026-06-29 | 2026-07-03 | 4d | 2026-07-06 | 2026-07-09 | 10d | 2d |
| 634 | 1.4.7.5 | Nervadura NR-1 | 4d | 2026-07-29 | 2026-08-03 | 622, 623 |  |  | 2026-06-30 | 2026-07-04 | 4d | 2026-07-07 | 2026-07-10 | 9d | 1d |
| 635 | 1.4.7.6 | Nervadura NR-2 | 4d | 2026-07-30 | 2026-08-04 | 622FS+1d, 623FS+1d |  |  | 2026-07-01 | 2026-07-06 | 4d | 2026-07-08 | 2026-07-13 | 8d | 0d |
| 636 | 1.4.7.7 | Nervadura NR-3 | 4d | 2026-07-30 | 2026-08-04 | 622FS+1d, 623FS+1d |  |  | 2026-07-01 | 2026-07-06 | 4d | 2026-07-08 | 2026-07-13 | 8d | 0d |
| 637 | 1.4.7.8 | Nervadura NR-4 | 4d | 2026-07-30 | 2026-08-04 | 622FS+1d, 623FS+1d |  |  | 2026-07-01 | 2026-07-06 | 4d | 2026-07-08 | 2026-07-13 | 8d | 0d |
| 638 | 1.4.7.9 | Acero de refuerzo en nervios #3 | 2d | 2026-08-04 | 2026-08-06 | 632, 633, 634, 635, 636, 637 |  |  | 2026-07-07 | 2026-07-08 | 2d | 2026-07-13 | 2026-07-15 | 8d | 0d |
| 639 | 1.4.7.10 | Acero de refuerzo long. #3 | 3d | 2026-08-05 | 2026-08-08 | 632, 633, 634, 635, 636, 637, 646 |  |  | 2026-07-08 | 2026-07-10 | 3d | 2026-07-14 | 2026-07-17 | 9d | 0d |
| 640 | 1.4.7.11 | Acero de refuerzo long. #4 | 3d | 2026-08-05 | 2026-08-08 | 639SS |  |  | 2026-07-08 | 2026-07-10 | 3d | 2026-07-14 | 2026-07-17 | 9d | 0d |
| 641 | 1.4.7.12 | Malla 66-10/10 losa de compresión | 2d | 2026-08-11 | 2026-08-13 | 630, 631, 638, 651, 654, 643 |  |  | 2026-07-14 | 2026-07-16 | 2d | 2026-07-20 | 2026-07-22 | 8d | 0d |
| 642 | 1.4.7.13 | Acero de Losa Maciza | 3d | 2026-08-04 | 2026-08-07 | 634, 635, 636, 637 |  |  | 2026-07-07 | 2026-07-09 | 3d | 2026-07-13 | 2026-07-16 | 13d | 5d |
| 643 | 1.4.7.14 | Caseton de 60x60x20cm | 2d | 2026-08-04 | 2026-08-06 | 634, 635, 636, 637 |  |  | 2026-07-07 | 2026-07-08 | 2d | 2026-07-13 | 2026-07-15 | 12d | 4d |
| 644 | 1.4.7.15 | Concreto losa de entrepiso f’c=200 | 1d | 2026-08-13 | 2026-08-14 | 639, 640, 641, 642, 651, 654, 647, 656 |  |  | 2026-07-16 | 2026-07-17 | 1d | 2026-07-22 | 2026-07-23 | 8d | 0d |
| 645 | 1.4.7.16 | Curado de concreto | 1d | 2026-08-14 | 2026-08-17 | 644 |  |  | 2026-07-17 | 2026-07-18 | 1d | 2026-07-23 | 2026-07-24 | 8d | 0d |
| 646 | 1.4.7.17 | Cimbra losa de azotea | 5d | 2026-07-30 | 2026-08-05 | 622FS+1d, 623FS+1d, 626 |  |  | 2026-07-01 | 2026-07-07 | 5d | 2026-07-08 | 2026-07-14 | 9d | 0d |
| 647 | 1.4.7.18 | Cimbra exterior corta losa | 3d | 2026-08-07 | 2026-08-11 | 639FS-1d, 640FS-1d |  |  | 2026-07-10 | 2026-07-14 | 3d | 2026-07-16 | 2026-07-20 | 10d | 2d |
| 648 | 1.4.7.19 | Ramaleo poliducto eléctrico entrepiso | 2d | 2026-08-06 | 2026-08-08 | 638 |  |  | 2026-07-09 | 2026-07-10 | 2d | 2026-07-15 | 2026-07-17 | 143d |  |
| 649 | 1.4.7.20 | Ramaleo hidráulico CPVC 3/4" | 2d | 2026-08-07 | 2026-08-10 | 638FS+1d |  |  | 2026-07-10 | 2026-07-13 | 2d | 2026-07-16 | 2026-07-18 | 8d | 0d |
| 650 | 1.4.7.21 | Ramaleo hidráulico CPVC 1/2" | 1d | 2026-08-10 | 2026-08-11 | 649 |  |  | 2026-07-13 | 2026-07-14 | 1d | 2026-07-18 | 2026-07-20 | 8d | 0d |
| 651 | 1.4.7.22 | Prueba hidráulica | 1d | 2026-08-10 | 2026-08-11 | 649, 650FS-1d |  |  | 2026-07-13 | 2026-07-14 | 1d | 2026-07-18 | 2026-07-20 | 8d | 0d |
| 652 | 1.4.7.23 | Ramaleo sanitario PVC 4" | 2d | 2026-08-07 | 2026-08-10 | 638FS+1d |  |  | 2026-07-10 | 2026-07-13 | 2d | 2026-07-16 | 2026-07-18 | 8d | 0d |
| 653 | 1.4.7.24 | Ramaleo sanitario PVC 2" | 1d | 2026-08-10 | 2026-08-11 | 652 |  |  | 2026-07-13 | 2026-07-14 | 1d | 2026-07-18 | 2026-07-20 | 8d | 0d |
| 654 | 1.4.7.25 | Prueba sanitaria | 1d | 2026-08-10 | 2026-08-11 | 652, 653FS-1d |  |  | 2026-07-13 | 2026-07-14 | 1d | 2026-07-18 | 2026-07-20 | 8d | 0d |

| ID | WBS | Task | Duration | Start | Finish | Predecessors | Baseline start | Baseline finish | Baseline duration | Baseline 1 start | Baseline 1 finish | Total slack | Free slack |
| --- | --- | --- | --- | --- | --- | --- | --- | --- | --- | --- | --- | --- | --- |
| 655 | 1.4.8 | **MUROS EN PLANTA ALTA, CASTILLOS Y CERRM.** | 22d | 2026-08-07 | 2026-09-03 |  | 2026-07-10 | 2026-08-06 | 22d | 2026-07-16 | 2026-08-12 | 9d |  |
| 656 | 1.4.8.1 | Anclaje de castillos y Columnas PA | 4d | 2026-08-07 | 2026-08-12 | 639FS-1d, 640FS-1d | 2026-07-10 | 2026-07-15 | 4d | 2026-07-16 | 2026-07-21 | 9d | 1d |
| 657 | 1.4.8.2 | Castillo K1 | 4d | 2026-08-17 | 2026-08-21 | 645 | 2026-07-18 | 2026-07-23 | 4d | 2026-07-24 | 2026-07-30 | 12d | 0d |
| 658 | 1.4.8.3 | Castillo K2 | 4d | 2026-08-18 | 2026-08-22 | 645FS+1d | 2026-07-20 | 2026-07-24 | 4d | 2026-07-27 | 2026-07-31 | 11d | 0d |
| 659 | 1.4.8.4 | Castillo K4 | 3d | 2026-08-21 | 2026-08-25 | 657 | 2026-07-23 | 2026-07-28 | 3d | 2026-07-30 | 2026-08-03 | 12d | 1d |
| 660 | 1.4.8.5 | Castillo K5 | 3d | 2026-08-21 | 2026-08-25 | 657 | 2026-07-23 | 2026-07-28 | 3d | 2026-07-30 | 2026-08-03 | 12d | 1d |
| 661 | 1.4.8.6 | Castillo K6 | 3d | 2026-08-21 | 2026-08-25 | 657 | 2026-07-23 | 2026-07-28 | 3d | 2026-07-30 | 2026-08-03 | 12d | 1d |
| 662 | 1.4.8.7 | Refuerzo de muro | 3d | 2026-08-22 | 2026-08-26 | 657, 658 | 2026-07-24 | 2026-07-29 | 3d | 2026-07-31 | 2026-08-04 | 11d | 0d |
| 663 | 1.4.8.8 | Dala de cerramiento CR-1 | 4d | 2026-08-26 | 2026-08-31 | 659, 660, 661, 662 | 2026-07-29 | 2026-08-03 | 4d | 2026-08-04 | 2026-08-08 | 11d | 0d |
| 664 | 1.4.8.9 | Dala de cerramiento CR-2 | 4d | 2026-08-26 | 2026-08-31 | 659, 660, 661, 662 | 2026-07-29 | 2026-08-03 | 4d | 2026-08-04 | 2026-08-08 | 11d | 0d |
| 665 | 1.4.8.10 | Cadena block dala | 3d | 2026-09-01 | 2026-09-03 | 662, 663, 664 | 2026-08-03 | 2026-08-06 | 3d | 2026-08-08 | 2026-08-12 | 11d | 0d |
| 666 | 1.4.8.11 | Muro de ladrillo aparente | 15d | 2026-08-17 | 2026-09-03 | 645 | 2026-07-18 | 2026-08-06 | 15d | 2026-07-24 | 2026-08-12 | 8d | 0d |
| 667 | 1.4.8.12 | Muro de block planta alta | 14d | 2026-08-18 | 2026-09-03 | 645FS+1d | 2026-07-20 | 2026-08-06 | 14d | 2026-07-27 | 2026-08-12 | 8d | 0d |
| 668 | 1.4.8.13 | Ramaleo electrico en Muros Planta Alta | 4d | 2026-08-26 | 2026-08-31 | 666SS+8d | 2026-07-29 | 2026-08-03 | 4d | 2026-08-04 | 2026-08-08 | 19d | 3d |
| 669 | 1.4.9 | **LOSA AZOTEA** | 15d | 2026-09-04 | 2026-09-24 |  | 2026-08-06 | 2026-08-25 | 15d | 2026-08-12 | 2026-08-31 | 8d |  |
| 670 | 1.4.9.1 | Cortalosa CL-1 | 2d | 2026-09-18 | 2026-09-22 | 682 | 2026-08-20 | 2026-08-22 | 2d | 2026-08-26 | 2026-08-28 | 8d | 0d |
| 671 | 1.4.9.2 | Cortalosa CL-2 | 2d | 2026-09-18 | 2026-09-22 | 682 | 2026-08-20 | 2026-08-22 | 2d | 2026-08-26 | 2026-08-28 | 8d | 0d |
| 672 | 1.4.9.3 | Vigueta pretensada V11-30 125 | 5d | 2026-09-04 | 2026-09-10 | 665, 666, 667 | 2026-08-06 | 2026-08-12 | 5d | 2026-08-12 | 2026-08-19 | 11d | 3d |
| 673 | 1.4.9.4 | Vigueta pretensada V11-30 185 | 5d | 2026-09-04 | 2026-09-10 | 666, 667 | 2026-08-06 | 2026-08-12 | 5d | 2026-08-12 | 2026-08-19 | 11d | 3d |
| 674 | 1.4.9.5 | Vigueta pretensada V11-30 190 | 5d | 2026-09-04 | 2026-09-10 | 666, 667 | 2026-08-06 | 2026-08-12 | 5d | 2026-08-12 | 2026-08-19 | 11d | 3d |
| 675 | 1.4.9.6 | Vigueta pretensada V11-30 205 | 5d | 2026-09-07 | 2026-09-12 | 666FS+2d, 667FS+2d | 2026-08-08 | 2026-08-14 | 5d | 2026-08-14 | 2026-08-21 | 9d | 1d |
| 676 | 1.4.9.7 | Vigueta pretensada V11-30 215 | 5d | 2026-09-07 | 2026-09-12 | 666FS+2d, 667FS+2d | 2026-08-08 | 2026-08-14 | 5d | 2026-08-14 | 2026-08-21 | 9d | 1d |
| 677 | 1.4.9.8 | Vigueta pretensada V11-30 260 | 5d | 2026-09-08 | 2026-09-14 | 666FS+3d, 667FS+3d | 2026-08-10 | 2026-08-17 | 5d | 2026-08-17 | 2026-08-22 | 8d | 0d |
| 678 | 1.4.9.9 | Vigueta pretensada V11-30 285 | 5d | 2026-09-08 | 2026-09-14 | 666FS+3d, 667FS+3d | 2026-08-10 | 2026-08-17 | 5d | 2026-08-17 | 2026-08-22 | 8d | 0d |
| 679 | 1.4.9.10 | Vigueta pretensada V11-40 330 | 5d | 2026-09-08 | 2026-09-14 | 666FS+3d, 667 | 2026-08-10 | 2026-08-17 | 5d | 2026-08-17 | 2026-08-22 | 8d | 0d |
| 680 | 1.4.9.11 | Vigueta pretensada V11-40 335 | 5d | 2026-09-08 | 2026-09-14 | 666FS+3d, 667 | 2026-08-10 | 2026-08-17 | 5d | 2026-08-17 | 2026-08-22 | 8d | 0d |
| 681 | 1.4.9.12 | Vigueta pretensada V11-40 505 | 5d | 2026-09-08 | 2026-09-14 | 666FS+3d, 667 | 2026-08-10 | 2026-08-17 | 5d | 2026-08-17 | 2026-08-22 | 8d | 0d |
| 682 | 1.4.9.13 | Bovedilla poliestireno azotea | 3d | 2026-09-14 | 2026-09-18 | 672, 673, 674, 675, 676, 677, 678, 679, 680, 681 | 2026-08-17 | 2026-08-20 | 3d | 2026-08-22 | 2026-08-26 | 8d | 0d |
| 683 | 1.4.9.14 | Malla 66-10/10 losa de compresión | 2d | 2026-09-18 | 2026-09-22 | 682 | 2026-08-20 | 2026-08-22 | 2d | 2026-08-26 | 2026-08-28 | 8d | 0d |
| 684 | 1.4.9.15 | Concreto losa de azotea f’c=200 | 1d | 2026-09-22 | 2026-09-23 | 670, 671, 682, 683, 687, 686 | 2026-08-22 | 2026-08-24 | 1d | 2026-08-28 | 2026-08-29 | 8d | 0d |
| 685 | 1.4.9.16 | Curado de concreto | 1d | 2026-09-23 | 2026-09-24 | 684 | 2026-08-24 | 2026-08-25 | 1d | 2026-08-31 | 2026-08-31 | 8d | 0d |
| 686 | 1.4.9.17 | Cimbra losa de azotea | 5d | 2026-09-04 | 2026-09-10 | 666, 667, 668 | 2026-08-06 | 2026-08-12 | 5d | 2026-08-12 | 2026-08-19 | 16d | 8d |
| 687 | 1.4.9.18 | Ramaleo de poliducto para inst. electrica en azotea | 2d | 2026-09-18 | 2026-09-22 | 682 | 2026-08-20 | 2026-08-22 | 2d | 2026-08-26 | 2026-08-28 | 8d | 0d |

| ID | WBS | Task | Duration | Start | Finish | Predecessors | Baseline start | Baseline finish | Baseline duration | Baseline 1 start | Baseline 1 finish | Total slack | Free slack |
| --- | --- | --- | --- | --- | --- | --- | --- | --- | --- | --- | --- | --- | --- |
| 688 | 1.4.10 | **PRETIL Y ACABADOS DE AZOTEA** | 19d | 2026-09-24 | 2026-10-17 |  | 2026-08-25 | 2026-09-18 | 19d | 2026-09-01 | 2026-09-25 | 8d |  |
| 689 | 1.4.10.1 | Castillo K1 | 5d | 2026-09-26 | 2026-10-02 | 691SS+2d | 2026-08-27 | 2026-09-02 | 5d | 2026-09-03 | 2026-09-09 | 8d | 0d |
| 690 | 1.4.10.2 | Dala de cerramiento en pretil | 4d | 2026-09-30 | 2026-10-05 | 689FS-2d, 691FS-2d | 2026-09-01 | 2026-09-04 | 4d | 2026-09-07 | 2026-09-11 | 8d | 0d |
| 691 | 1.4.10.3 | Muro de block 12x15x40 | 5d | 2026-09-24 | 2026-09-30 | 685 | 2026-08-25 | 2026-08-31 | 5d | 2026-09-01 | 2026-09-07 | 8d | 0d |
| 692 | 1.4.10.4 | Chaflán en azotea | 4d | 2026-10-02 | 2026-10-07 | 689, 691 | 2026-09-03 | 2026-09-08 | 4d | 2026-09-09 | 2026-09-14 | 8d | 0d |
| 693 | 1.4.10.5 | Diamante de entortado | 4d | 2026-10-02 | 2026-10-07 | 689, 691 | 2026-09-03 | 2026-09-08 | 4d | 2026-09-09 | 2026-09-14 | 8d | 0d |
| 694 | 1.4.10.6 | Aplanado exterior Mortermax fino | 5d | 2026-10-05 | 2026-10-12 | 690, 692FS-2d, 693FS-2d | 2026-09-05 | 2026-09-11 | 5d | 2026-09-11 | 2026-09-18 | 8d | 0d |
| 695 | 1.4.10.7 | Entortado de Losa | 4d | 2026-10-13 | 2026-10-17 | 696 | 2026-09-12 | 2026-09-18 | 4d | 2026-09-21 | 2026-09-25 | 8d | 0d |
| 696 | 1.4.10.8 | Curado de concreto | 1d | 2026-10-12 | 2026-10-13 | 692, 694 | 2026-09-11 | 2026-09-12 | 1d | 2026-09-18 | 2026-09-21 | 8d | 0d |
| 697 | 1.4.11 | **PRIMERA LIMPIEZA DE OBRA** | 4d | 2026-09-24 | 2026-09-29 |  | 2026-08-25 | 2026-08-29 | 4d | 2026-09-01 | 2026-09-04 | 64d |  |
| 698 | 1.4.11.1 | Primera limpieza de obra | 2d | 2026-09-24 | 2026-09-26 | 685 | 2026-08-25 | 2026-08-27 | 2d | 2026-09-01 | 2026-09-02 | 64d | 0d |
| 699 | 1.4.11.2 | Primera carga y acarreo de escombro | 2d | 2026-09-26 | 2026-09-29 | 698 | 2026-08-27 | 2026-08-29 | 2d | 2026-09-03 | 2026-09-04 | 64d | 1d |
| 700 | 1.4.12 | **IMPERMEABILIZACION** | 5d | 2026-10-17 | 2026-10-23 |  | 2026-09-18 | 2026-09-25 | 5d | 2026-09-25 | 2026-10-01 | 8d |  |
| 701 | 1.4.12.1 | Impermeabilización de pretil Kover 5 años | 4d | 2026-10-17 | 2026-10-22 | 695 | 2026-09-18 | 2026-09-24 | 4d | 2026-09-25 | 2026-09-30 | 9d | 1d |
| 702 | 1.4.12.2 | Impermeabilización de losa Kover 5 años | 5d | 2026-10-17 | 2026-10-23 | 695 | 2026-09-18 | 2026-09-25 | 5d | 2026-09-25 | 2026-10-01 | 8d | 0d |
| 703 | 1.4.13 | **ALBAÑILERIA** | 62d | 2026-09-30 | 2026-12-17 |  | 2026-09-01 | 2026-11-19 | 62d | 2026-09-07 | 2026-11-25 | 27d |  |
| 704 | 1.4.13.1 | Lavadero de granito | 4d | 2026-11-12 | 2026-11-19 | 740SS+8d | 2026-10-15 | 2026-10-20 | 4d | 2026-10-21 | 2026-10-26 | 63d |  |
| 705 | 1.4.13.2 | Ranurado y resane general inst. en muros | 3d | 2026-10-21 | 2026-10-24 | 702FS-2d | 2026-09-23 | 2026-09-26 | 3d | 2026-09-29 | 2026-10-02 | 10d | 1d |
| 706 | 1.4.13.3 | Ranurado y resane eléctrico 1/2 a 3/4 | 3d | 2026-10-21 | 2026-10-24 | 702FS-2d | 2026-09-23 | 2026-09-26 | 3d | 2026-09-29 | 2026-10-02 | 10d | 1d |
| 707 | 1.4.13.4 | Ranurado y resane hidráulico 1/2 a 1 | 2d | 2026-10-23 | 2026-10-26 | 702 | 2026-09-25 | 2026-09-28 | 2d | 2026-10-01 | 2026-10-03 | 9d | 0d |
| 708 | 1.4.13.5 | Resane sanitario tubería 2 | 2d | 2026-10-23 | 2026-10-26 | 702 | 2026-09-25 | 2026-09-28 | 2d | 2026-10-01 | 2026-10-03 | 9d | 0d |
| 709 | 1.4.13.6 | Resane sanitario tubería 4 | 2d | 2026-10-23 | 2026-10-26 | 702 | 2026-09-25 | 2026-09-28 | 2d | 2026-10-01 | 2026-10-03 | 9d | 0d |
| 710 | 1.4.13.7 | Resane minisplit tubería 3 | 2d | 2026-10-23 | 2026-10-26 | 702 | 2026-09-25 | 2026-09-28 | 2d | 2026-10-01 | 2026-10-03 | 9d | 0d |
| 711 | 1.4.13.8 | Ramaleo hidráulico exterior CPVC 1 1/4 | 3d | 2026-10-23 | 2026-10-27 | 701, 702 | 2026-09-25 | 2026-09-29 | 3d | 2026-10-01 | 2026-10-05 | 8d | 0d |
| 712 | 1.4.13.9 | Ramaleo hidráulico exterior CPVC 1 | 2d | 2026-10-23 | 2026-10-26 | 711SS | 2026-09-25 | 2026-09-28 | 2d | 2026-10-01 | 2026-10-03 | 8d | 0d |
| 713 | 1.4.13.10 | Ramaleo hidráulico exterior CPVC 3/4 | 2d | 2026-10-27 | 2026-10-28 | 712 | 2026-09-28 | 2026-09-30 | 2d | 2026-10-03 | 2026-10-06 | 8d | 0d |
| 714 | 1.4.13.11 | Ramaleo hidráulico exterior CPVC 1/2 | 2d | 2026-10-27 | 2026-10-28 | 712 | 2026-09-28 | 2026-09-30 | 2d | 2026-10-03 | 2026-10-06 | 8d | 0d |
| 715 | 1.4.13.12 | Prueba hidráulica | 1d | 2026-10-29 | 2026-10-29 | 707, 711, 712, 713, 714 | 2026-09-30 | 2026-10-01 | 1d | 2026-10-06 | 2026-10-07 | 8d | 0d |
| 716 | 1.4.13.13 | Ramaleo sanitario exterior PVC 4 | 4d | 2026-10-23 | 2026-10-28 | 701, 702 | 2026-09-25 | 2026-09-30 | 4d | 2026-10-01 | 2026-10-06 | 8d | 0d |
| 717 | 1.4.13.14 | Ramaleo sanitario exterior PVC 2 | 3d | 2026-10-26 | 2026-10-28 | 716SS+1d | 2026-09-26 | 2026-09-30 | 3d | 2026-10-02 | 2026-10-06 | 8d | 0d |
| 718 | 1.4.13.15 | Prueba sanitaria | 1d | 2026-10-29 | 2026-10-29 | 708, 709, 710, 716, 717 | 2026-09-30 | 2026-10-01 | 1d | 2026-10-06 | 2026-10-07 | 8d | 0d |
| 719 | 1.4.13.16 | Centro de carga muros PB | 4d | 2026-10-28 | 2026-11-02 | 701FS+3d, 702FS+3d | 2026-09-29 | 2026-10-03 | 4d | 2026-10-05 | 2026-10-09 | 10d | 2d |
| 720 | 1.4.13.17 | Firme de concreto 8 cm | 4d | 2026-10-30 | 2026-11-04 | 715, 718, 722 | 2026-10-01 | 2026-10-06 | 4d | 2026-10-07 | 2026-10-13 | 57d | 0d |
| 721 | 1.4.13.18 | Curado de concreto | 1d | 2026-11-04 | 2026-11-05 | 720 | 2026-10-06 | 2026-10-07 | 1d | 2026-10-13 | 2026-10-14 | 57d | 17d |
| 722 | 1.4.13.19 | Cisterna 2800 L con instalación | 18d | 2026-09-30 | 2026-10-22 | 691, 698, 699 | 2026-09-01 | 2026-09-24 | 18d | 2026-09-07 | 2026-09-30 | 63d | 0d |
| 723 | 1.4.13.20 | Banqueta y huellas de concreto | 8d | 2026-11-06 | 2026-11-18 | 715, 718, 765, 833FS-2d, 842, 834 | 2026-10-08 | 2026-10-19 | 8d | 2026-10-15 | 2026-10-24 | 40d | 0d |
| 724 | 1.4.13.21 | Curado de concreto | 1d | 2026-11-18 | 2026-11-19 | 723 | 2026-10-19 | 2026-10-20 | 1d | 2026-10-26 | 2026-10-26 | 40d | 0d |
| 725 | 1.4.13.22 | Número oficial | 1d | 2026-12-16 | 2026-12-17 | 733, 734 | 2026-11-18 | 2026-11-19 | 1d | 2026-11-24 | 2026-11-25 | 40d |  |
| 726 | 1.4.13.23 | Detallado de rodapié exterior | 4d | 2026-11-02 | 2026-11-06 | 731 | 2026-10-03 | 2026-10-08 | 4d | 2026-10-09 | 2026-10-15 | 72d |  |
| 727 | 1.4.13.24 | Detalle de losas y volados acabado fino | 4d | 2026-10-23 | 2026-10-28 | 701, 702 | 2026-09-25 | 2026-09-30 | 4d | 2026-10-01 | 2026-10-06 | 12d | 4d |
| 728 | 1.4.13.25 | Detalle fino en muros interiores | 5d | 2026-10-27 | 2026-11-02 | 705, 706, 707, 708, 709, 710 | 2026-09-28 | 2026-10-03 | 5d | 2026-10-03 | 2026-10-09 | 9d | 1d |
| 729 | 1.4.13.26 | Jardín interior bajo escalera con pozo de absorción | 12d | 2026-10-23 | 2026-11-07 | 708FS-2d, 709FS-2d, 710FS-2d | 2026-09-25 | 2026-10-09 | 12d | 2026-10-01 | 2026-10-16 | 12d | 0d |

| ID | WBS | Task | Duration | Start | Finish | Predecessors | Baseline start | Baseline finish | Baseline duration | Baseline 1 start | Baseline 1 finish | Total slack | Free slack |
| --- | --- | --- | --- | --- | --- | --- | --- | --- | --- | --- | --- | --- | --- |
| 730 | 1.4.14 | **ACABADOS EN FACHADA A** | 47d | 2026-10-17 | 2026-12-16 |  | 2026-09-18 | 2026-11-18 | 47d | 2026-09-25 | 2026-11-24 | 40d |  |
| 731 | 1.4.14.1 | Aplanado grueso fachada | 12d | 2026-10-17 | 2026-11-02 | 695 | 2026-09-18 | 2026-10-03 | 12d | 2026-09-25 | 2026-10-09 | 46d | 0d |
| 732 | 1.4.14.2 | Aplanado fino estuco fachada | 10d | 2026-10-27 | 2026-11-07 | 731SS+7d | 2026-09-28 | 2026-10-09 | 10d | 2026-10-03 | 2026-10-16 | 46d | 0d |
| 733 | 1.4.14.3 | Pintura acrílica 1-0102P | 8d | 2026-12-03 | 2026-12-14 | 721FS+5d, 724FS+12d, 735, 738 | 2026-11-04 | 2026-11-13 | 8d | 2026-11-10 | 2026-11-21 | 42d | 2d |
| 734 | 1.4.14.4 | Pintura acrílica 1-1404D | 10d | 2026-12-03 | 2026-12-16 | 721FS+5d, 724FS+12d, 735, 738 | 2026-11-04 | 2026-11-18 | 10d | 2026-11-10 | 2026-11-24 | 40d | 0d |
| 735 | 1.4.14.5 | Cantera 40x60cm | 14d | 2026-11-07 | 2026-11-26 | 731, 732 | 2026-10-09 | 2026-10-27 | 14d | 2026-10-16 | 2026-11-03 | 46d | 6d |
| 736 | 1.4.14.6 | Lambrin de permabase 1 cara | 3d | 2026-11-02 | 2026-11-05 | 731 | 2026-10-03 | 2026-10-07 | 3d | 2026-10-09 | 2026-10-14 | 53d | 0d |
| 737 | 1.4.14.7 | Enchapado de Permabase | 4d | 2026-11-05 | 2026-11-10 | 736 | 2026-10-07 | 2026-10-13 | 4d | 2026-10-14 | 2026-10-19 | 53d | 0d |
| 738 | 1.4.14.8 | Cubierta de Permabase | 5d | 2026-11-10 | 2026-11-18 | 737 | 2026-10-13 | 2026-10-19 | 5d | 2026-10-19 | 2026-10-24 | 53d | 13d |
| 739 | 1.4.15 | **APLANADOS Y PINTURA** | 63d | 2026-10-23 | 2027-01-16 |  | 2026-09-25 | 2026-12-14 | 63d | 2026-10-01 | 2026-12-19 | 10d |  |
| 740 | 1.4.15.1 | Yeso pulido en muros | 14d | 2026-11-03 | 2026-11-21 | 705, 706, 719FS-1d, 727, 728, 729FS-8d, 745FS-4d, 811FS-2d, 814, 815, 816, 817, 818FS-1d, 819FS-1d, 820FS-1d, 821FS-1d, 822FS-2d, 823FS-2d, 824FS-3d, 827FS-1d, 828FS-5d, 829FS-5d, 830FS-6d, 831FS-2d, 832FS-7d, 741 | 2026-10-05 | 2026-10-22 | 14d | 2026-10-12 | 2026-10-28 | 8d | 0d |
| 741 | 1.4.15.2 | Aplanado en muros enjarre grueso | 5d | 2026-10-23 | 2026-10-29 | 701, 702 | 2026-09-25 | 2026-10-01 | 5d | 2026-10-01 | 2026-10-07 | 11d | 3d |
| 742 | 1.4.15.3 | Pintura vinílica OR-W13 SHOELACE | 13d | 2026-12-29 | 2027-01-16 | 749FS-2d, 750FS-2d, 763FS-2d, 770, 771, 772, 773, 774, 775, 781, 782, 783, 784, 845, 846, 848, 849, 778, 779, 776, 777, 785 | 2026-11-27 | 2026-12-14 | 13d | 2026-12-03 | 2026-12-19 | 8d | 0d |
| 743 | 1.4.15.4 | Pintura vinílica PPUI5-13 Creamy M. | 10d | 2026-12-21 | 2027-01-06 | 749, 750, 763, 793, 794, 789, 787 | 2026-11-21 | 2026-12-03 | 10d | 2026-11-27 | 2026-12-10 | 16d | 8d |
| 744 | 1.4.15.5 | Pintura vinílica MD-06 Nano White | 8d | 2026-12-21 | 2027-01-04 | 749, 750, 763, 793, 794, 789, 787 | 2026-11-21 | 2026-12-01 | 8d | 2026-11-27 | 2026-12-08 | 18d | 10d |
| 745 | 1.4.15.6 | Yeso pulido en plafones | 10d | 2026-10-23 | 2026-11-05 | 701, 702 | 2026-09-25 | 2026-10-07 | 10d | 2026-10-01 | 2026-10-14 | 10d | 2d |
| 746 | 1.4.15.7 | Perfilado de puertas y ventanas | 4d | 2026-11-07 | 2026-11-12 | 740SS+4d | 2026-10-09 | 2026-10-15 | 4d | 2026-10-16 | 2026-10-21 | 67d |  |
| 747 | 1.4.16 | **PISOS Y AZULEJOS** | 24d | 2026-11-13 | 2026-12-15 |  | 2026-10-16 | 2026-11-17 | 24d | 2026-10-22 | 2026-11-23 | 8d |  |
| 748 | 1.4.16.1 | **AREA SOCIAL** | 15d | 2026-11-19 | 2026-12-08 |  | 2026-10-20 | 2026-11-07 | 15d | 2026-10-27 | 2026-11-13 | 8d |  |
| 749 | 1.4.16.1.1 | Piso Adhara 44X89 | 14d | 2026-11-19 | 2026-12-07 | 740FS-2d, 836, 835, 752FS-5d | 2026-10-20 | 2026-11-06 | 14d | 2026-10-27 | 2026-11-12 | 8d | 0d |
| 750 | 1.4.16.1.2 | Zoclo Adhara 44X89 | 5d | 2026-12-01 | 2026-12-08 | 749FS-4d | 2026-11-02 | 2026-11-07 | 5d | 2026-11-07 | 2026-11-13 | 25d | 10d |
| 751 | 1.4.16.2 | **RECAMARAS** | 8d | 2026-11-13 | 2026-11-25 |  | 2026-10-16 | 2026-10-26 | 8d | 2026-10-22 | 2026-11-02 | 8d |  |
| 752 | 1.4.16.2.1 | Acabado aparente de pisos - pulido | 8d | 2026-11-13 | 2026-11-25 | 740FS-5d | 2026-10-16 | 2026-10-26 | 8d | 2026-10-22 | 2026-11-02 | 8d | 0d |
| 753 | 1.4.16.3 | **BAÑOS** | 17d | 2026-11-17 | 2026-12-08 |  | 2026-10-17 | 2026-11-07 | 17d | 2026-10-23 | 2026-11-13 | 19d |  |
| 754 | 1.4.16.3.1 | Azulejo Mod. Ornamenta 60x30 | 5d | 2026-11-25 | 2026-12-01 | 755FS-1d, 825, 826, 836 | 2026-10-27 | 2026-11-02 | 5d | 2026-11-02 | 2026-11-07 | 19d | 0d |
| 755 | 1.4.16.3.2 | Impermeabilización en regadera | 2d | 2026-11-24 | 2026-11-26 | 740, 759 | 2026-10-26 | 2026-10-27 | 2d | 2026-10-31 | 2026-11-03 | 19d | 0d |
| 756 | 1.4.16.3.3 | Piso Mod. Valparaiso 20x20 | 4d | 2026-12-01 | 2026-12-07 | 754 | 2026-11-02 | 2026-11-06 | 4d | 2026-11-07 | 2026-11-12 | 19d | 0d |
| 757 | 1.4.16.3.4 | Zoclo Adhara 44X89 | 2d | 2026-12-04 | 2026-12-08 | 756FS-1d | 2026-11-05 | 2026-11-07 | 2d | 2026-11-11 | 2026-11-13 | 48d |  |
| 758 | 1.4.16.3.5 | Piso Adhara 44X89 | 3d | 2026-12-01 | 2026-12-04 | 754 | 2026-11-02 | 2026-11-05 | 3d | 2026-11-07 | 2026-11-11 | 50d |  |
| 759 | 1.4.16.3.6 | Fabricacion de nicho decorativo en baños | 6d | 2026-11-17 | 2026-11-24 | 740FS-4d | 2026-10-17 | 2026-10-24 | 6d | 2026-10-23 | 2026-10-30 | 19d | 0d |
| 760 | 1.4.16.3.7 | Sardinel en regadera | 4d | 2026-12-01 | 2026-12-07 | 754 | 2026-11-02 | 2026-11-06 | 4d | 2026-11-07 | 2026-11-12 | 49d |  |

| ID | WBS | Task | Duration | Start | Finish | Predecessors | Baseline start | Baseline finish | Baseline duration | Baseline 1 start | Baseline 1 finish | Total slack | Free slack |
| --- | --- | --- | --- | --- | --- | --- | --- | --- | --- | --- | --- | --- | --- |
| 761 | 1.4.16.4 | **ESCALERA** | 9d | 2026-12-03 | 2026-12-15 |  | 2026-11-04 | 2026-11-17 | 9d | 2026-11-10 | 2026-11-23 | 8d |  |
| 762 | 1.4.16.4.1 | Piso Adhara 44X89 | 7d | 2026-12-03 | 2026-12-12 | 628, 740, 749FS-2d | 2026-11-04 | 2026-11-12 | 7d | 2026-11-10 | 2026-11-20 | 8d | 0d |
| 763 | 1.4.16.4.2 | Zoclo Adhara 44X89 | 4d | 2026-12-10 | 2026-12-15 | 762FS-2d | 2026-11-10 | 2026-11-17 | 4d | 2026-11-18 | 2026-11-23 | 8d | 0d |
| 764 | 1.4.17 | **EXTERIOR** | 3d | 2026-10-30 | 2026-11-03 |  | 2026-10-01 | 2026-10-05 | 3d | 2026-10-07 | 2026-10-12 | 13d |  |
| 765 | 1.4.17.1 | Rastrilleo, afine y nivelado de tierra | 3d | 2026-10-30 | 2026-11-03 | 715, 718 | 2026-10-01 | 2026-10-05 | 3d | 2026-10-07 | 2026-10-12 | 13d | 0d |
| 766 | 1.4.18 | **SEGUNDA LIMPIEZA DE OBRA** | 4d | 2026-12-15 | 2026-12-19 |  | 2026-11-17 | 2026-11-21 | 4d | 2026-11-23 | 2026-11-27 | 29d |  |
| 767 | 1.4.18.1 | Segunda limpieza de obra | 2d | 2026-12-15 | 2026-12-17 | 762, 763 | 2026-11-17 | 2026-11-19 | 2d | 2026-11-23 | 2026-11-25 | 29d | 0d |
| 768 | 1.4.18.2 | Segunda carga y acarreo de escombro | 2d | 2026-12-17 | 2026-12-19 | 767 | 2026-11-19 | 2026-11-21 | 2d | 2026-11-25 | 2026-11-27 | 29d | 21d |
| 769 | 1.4.19 | **CANCELERIA PUERTAS Y VENTANAS DE ALUMINIO** | 17d | 2026-12-03 | 2026-12-28 |  | 2026-11-04 | 2026-11-26 | 17d | 2026-11-10 | 2026-12-02 | 9d |  |
| 770 | 1.4.19.1 | Fijo medidas 0.30x4.90m | 7d | 2026-12-07 | 2026-12-15 | 740, 749 | 2026-11-06 | 2026-11-17 | 7d | 2026-11-12 | 2026-11-23 | 17d | 9d |
| 771 | 1.4.19.2 | Ventana Corrediza 1.80x1.60m | 4d | 2026-12-03 | 2026-12-09 | 740FS+10d | 2026-11-04 | 2026-11-09 | 4d | 2026-11-10 | 2026-11-17 | 22d | 14d |
| 772 | 1.4.19.3 | Ventana Corrediza 0.60x0.40m | 4d | 2026-12-07 | 2026-12-11 | 740FS+12d | 2026-11-06 | 2026-11-11 | 4d | 2026-11-12 | 2026-11-19 | 20d | 12d |
| 773 | 1.4.19.4 | Ventana Corrediza 1.54x0.50m | 4d | 2026-12-07 | 2026-12-11 | 740FS+12d | 2026-11-06 | 2026-11-11 | 4d | 2026-11-12 | 2026-11-19 | 20d | 12d |
| 774 | 1.4.19.5 | Fijo medidas 1.40x2.50m | 4d | 2026-12-10 | 2026-12-15 | 740FS+10d, 749FS+3d | 2026-11-10 | 2026-11-17 | 4d | 2026-11-18 | 2026-11-23 | 11d | 0d |
| 775 | 1.4.19.6 | Ventana Corrediza 1.80x1.50m | 4d | 2026-12-12 | 2026-12-17 | 740FS+7d, 749FS+2d, 762 | 2026-11-12 | 2026-11-19 | 4d | 2026-11-20 | 2026-11-25 | 9d | 0d |
| 776 | 1.4.19.7 | Ventana Corrediza 1.40x1.60m | 4d | 2026-12-12 | 2026-12-17 | 740, 749, 762 | 2026-11-12 | 2026-11-19 | 4d | 2026-11-20 | 2026-11-25 | 9d | 0d |
| 777 | 1.4.19.8 | Ventana Corrediza 0.95x0.40m | 4d | 2026-12-12 | 2026-12-17 | 740, 749, 762 | 2026-11-12 | 2026-11-19 | 4d | 2026-11-20 | 2026-11-25 | 9d | 0d |
| 778 | 1.4.19.9 | Puerta corrediza 3.85x2.10m | 6d | 2026-12-15 | 2026-12-22 | 774 | 2026-11-17 | 2026-11-24 | 6d | 2026-11-23 | 2026-11-30 | 11d | 3d |
| 779 | 1.4.19.10 | Barandal de Cristal Templado | 6d | 2026-12-17 | 2026-12-28 | 775, 776, 777 | 2026-11-19 | 2026-11-26 | 6d | 2026-11-25 | 2026-12-02 | 9d | 1d |
| 780 | 1.4.20 | **CARPINTERIA, PUERTAS EXTERIORES E INTERIORES** | 9d | 2026-12-15 | 2026-12-29 |  | 2026-11-17 | 2026-11-27 | 9d | 2026-11-23 | 2026-12-03 | 8d |  |
| 781 | 1.4.20.1 | Puerta P-01 de seguridad | 5d | 2026-12-15 | 2026-12-21 | 763 | 2026-11-17 | 2026-11-23 | 5d | 2026-11-23 | 2026-11-28 | 12d | 4d |
| 782 | 1.4.20.2 | Puerta P-01 interior | 8d | 2026-12-15 | 2026-12-28 | 763 | 2026-11-17 | 2026-11-26 | 8d | 2026-11-23 | 2026-12-02 | 9d | 1d |
| 783 | 1.4.20.3 | Puerta P-02 interior | 8d | 2026-12-15 | 2026-12-28 | 763 | 2026-11-17 | 2026-11-26 | 8d | 2026-11-23 | 2026-12-02 | 9d | 1d |
| 784 | 1.4.20.4 | Puerta P-03 interior | 4d | 2026-12-22 | 2026-12-29 | 763FS+5d | 2026-11-23 | 2026-11-27 | 4d | 2026-11-28 | 2026-12-03 | 8d | 0d |
| 785 | 1.4.20.5 | Puerta P-04 interior | 4d | 2026-12-22 | 2026-12-29 | 763FS+5d | 2026-11-23 | 2026-11-27 | 4d | 2026-11-28 | 2026-12-03 | 8d | 0d |

| ID | WBS | Task | Duration | Start | Finish | Predecessors | Baseline start | Baseline finish | Baseline duration | Baseline 1 start | Baseline 1 finish | Total slack | Free slack |
| --- | --- | --- | --- | --- | --- | --- | --- | --- | --- | --- | --- | --- | --- |
| 786 | 1.4.21 | **VOLADOS, BARANDAL Y ESCALERA** | 33d | 2026-11-07 | 2026-12-19 |  | 2026-10-09 | 2026-11-21 | 33d | 2026-10-16 | 2026-11-27 | 16d |  |
| 787 | 1.4.21.1 | Barandal de Herreria en escalera | 4d | 2026-11-26 | 2026-12-01 | 788FS-4d | 2026-10-28 | 2026-11-02 | 4d | 2026-11-03 | 2026-11-07 | 31d | 15d |
| 788 | 1.4.21.2 | Escalera de herreria | 18d | 2026-11-07 | 2026-12-01 | 729 | 2026-10-09 | 2026-11-02 | 18d | 2026-10-16 | 2026-11-07 | 16d | 0d |
| 789 | 1.4.21.3 | Techumbre en acceso Principal | 14d | 2026-11-25 | 2026-12-12 | 788FS-5d | 2026-10-27 | 2026-11-12 | 14d | 2026-11-02 | 2026-11-20 | 22d | 6d |
| 790 | 1.4.21.4 | Techumbre en 1.80x0.50m | 7d | 2026-11-25 | 2026-12-03 | 788FS-5d | 2026-10-27 | 2026-11-04 | 7d | 2026-11-02 | 2026-11-10 | 16d | 0d |
| 791 | 1.4.21.5 | Techumbre en 1.40x0.50m | 7d | 2026-12-03 | 2026-12-12 | 790 | 2026-11-04 | 2026-11-12 | 7d | 2026-11-10 | 2026-11-20 | 16d | 0d |
| 792 | 1.4.21.6 | Imper con manto prefabricado | 5d | 2026-12-08 | 2026-12-14 | 790, 791FS-4d | 2026-11-07 | 2026-11-13 | 5d | 2026-11-13 | 2026-11-21 | 16d | 0d |
| 793 | 1.4.21.7 | Plafon hoja tablaroca std | 5d | 2026-12-14 | 2026-12-19 | 792 | 2026-11-13 | 2026-11-21 | 5d | 2026-11-21 | 2026-11-27 | 16d | 0d |
| 794 | 1.4.21.8 | Acabado Woodstock en parte inf. Cubierta | 5d | 2026-12-14 | 2026-12-19 | 792 | 2026-11-13 | 2026-11-21 | 5d | 2026-11-21 | 2026-11-27 | 16d | 0d |
| 795 | 1.4.22 | **INSTALACION ELECTRICA** | 16d | 2026-11-17 | 2026-12-07 |  | 2026-10-17 | 2026-11-06 | 16d | 2026-10-23 | 2026-11-12 | 37d |  |
| 796 | 1.4.22.1 | Alimentación eléctrica base a centro de carga | 5d | 2026-11-21 | 2026-11-27 | 719, 740 | 2026-10-22 | 2026-10-28 | 5d | 2026-10-29 | 2026-11-04 | 41d | 0d |
| 797 | 1.4.22.2 | Interruptor termomagnético 1x20 A | 1d | 2026-11-27 | 2026-11-28 | 796 | 2026-10-29 | 2026-10-29 | 1d | 2026-11-04 | 2026-11-05 | 41d | 4d |
| 798 | 1.4.22.3 | Interruptor termomagnético 2x20 A | 1d | 2026-11-27 | 2026-11-28 | 796 | 2026-10-29 | 2026-10-29 | 1d | 2026-11-04 | 2026-11-05 | 41d | 4d |
| 799 | 1.4.22.4 | Salida para apagador 3 vías | 4d | 2026-11-17 | 2026-11-21 | 701, 740FS-4d | 2026-10-17 | 2026-10-22 | 4d | 2026-10-23 | 2026-10-28 | 37d | 0d |
| 800 | 1.4.22.5 | Salida para apagador doble | 3d | 2026-11-21 | 2026-11-25 | 799 | 2026-10-22 | 2026-10-26 | 3d | 2026-10-29 | 2026-11-02 | 39d | 0d |
| 801 | 1.4.22.6 | Salida para apagador sencillo | 3d | 2026-11-21 | 2026-11-25 | 799 | 2026-10-22 | 2026-10-26 | 3d | 2026-10-29 | 2026-11-02 | 39d | 0d |
| 802 | 1.4.22.7 | Salida de alumbrado en losa | 5d | 2026-11-21 | 2026-11-27 | 799 | 2026-10-22 | 2026-10-28 | 5d | 2026-10-29 | 2026-11-04 | 37d | 0d |
| 803 | 1.4.22.8 | Salida para contacto exterior doble | 2d | 2026-11-21 | 2026-11-24 | 799 | 2026-10-22 | 2026-10-24 | 2d | 2026-10-29 | 2026-10-30 | 40d | 3d |
| 804 | 1.4.22.9 | Salida para contacto 220 V | 3d | 2026-11-24 | 2026-11-27 | 799FS+2d | 2026-10-26 | 2026-10-28 | 3d | 2026-10-31 | 2026-11-04 | 37d | 0d |
| 805 | 1.4.22.10 | Salida para contacto doble | 5d | 2026-11-24 | 2026-11-30 | 799FS+2d | 2026-10-26 | 2026-10-30 | 5d | 2026-10-31 | 2026-11-06 | 40d | 3d |
| 806 | 1.4.22.11 | Salida para contacto doble área húmeda | 2d | 2026-11-27 | 2026-11-30 | 803, 804 | 2026-10-29 | 2026-10-30 | 2d | 2026-11-04 | 2026-11-06 | 40d | 3d |
| 807 | 1.4.22.12 | Salida TV / telefonía / intercom | 4d | 2026-11-27 | 2026-12-02 | 803, 804 | 2026-10-29 | 2026-11-03 | 4d | 2026-11-04 | 2026-11-09 | 38d | 1d |
| 808 | 1.4.22.13 | Extractor 4 baño | 5d | 2026-11-27 | 2026-12-03 | 803, 804 | 2026-10-29 | 2026-11-04 | 5d | 2026-11-04 | 2026-11-10 | 37d | 0d |
| 809 | 1.4.22.14 | Prueba eléctrica | 2d | 2026-12-03 | 2026-12-07 | 796, 797, 798, 799, 800, 801, 802, 803, 804, 805, 806, 807, 808, 862, 863, 869, 864, 865, 867, 868, 871, 873 | 2026-11-04 | 2026-11-06 | 2d | 2026-11-10 | 2026-11-12 | 37d | 29d |

| ID | WBS | Task | Duration | Start | Finish | Predecessors | Baseline start | Baseline finish | Baseline duration | Baseline 1 start | Baseline 1 finish | Total slack | Free slack |
| --- | --- | --- | --- | --- | --- | --- | --- | --- | --- | --- | --- | --- | --- |
| 810 | 1.4.23 | **INSTALACIÓN HIDRO-SANITARIA** | 11d | 2026-10-30 | 2026-11-12 |  | 2026-10-01 | 2026-10-15 | 11d | 2026-10-07 | 2026-10-21 | 8d |  |
| 811 | 1.4.23.1 | Tubería condensados PVC 1 | 5d | 2026-10-30 | 2026-11-05 | 715 | 2026-10-01 | 2026-10-07 | 5d | 2026-10-07 | 2026-10-14 | 8d | 0d |
| 812 | 1.4.23.2 | Tubería sanitaria PVC 4 | 5d | 2026-10-30 | 2026-11-05 | 718 | 2026-10-01 | 2026-10-07 | 5d | 2026-10-07 | 2026-10-14 | 16d | 0d |
| 813 | 1.4.23.3 | Coladera H-444 | 1d | 2026-11-05 | 2026-11-06 | 812 | 2026-10-07 | 2026-10-08 | 1d | 2026-10-14 | 2026-10-15 | 16d | 4d |
| 814 | 1.4.23.4 | Caja PVC para lavadora | 3d | 2026-10-30 | 2026-11-03 | 715 | 2026-10-01 | 2026-10-05 | 3d | 2026-10-07 | 2026-10-12 | 8d | 0d |
| 815 | 1.4.23.5 | Salida para secadora PVC 4 | 3d | 2026-10-30 | 2026-11-03 | 718 | 2026-10-01 | 2026-10-05 | 3d | 2026-10-07 | 2026-10-12 | 8d | 0d |
| 816 | 1.4.23.6 | Salida hidráulica para boiler | 2d | 2026-10-30 | 2026-11-02 | 715 | 2026-10-01 | 2026-10-03 | 2d | 2026-10-07 | 2026-10-09 | 9d | 1d |
| 817 | 1.4.23.7 | Salida hidráulica para llave de jardín | 3d | 2026-10-30 | 2026-11-03 | 715 | 2026-10-01 | 2026-10-05 | 3d | 2026-10-07 | 2026-10-12 | 8d | 0d |
| 818 | 1.4.23.8 | Salida hidráulica para lavabo | 4d | 2026-10-30 | 2026-11-04 | 715 | 2026-10-01 | 2026-10-06 | 4d | 2026-10-07 | 2026-10-13 | 8d | 0d |
| 819 | 1.4.23.9 | Salida hidráulica para purificación | 4d | 2026-10-30 | 2026-11-04 | 715 | 2026-10-01 | 2026-10-06 | 4d | 2026-10-07 | 2026-10-13 | 8d | 0d |
| 820 | 1.4.23.10 | Salida sanitaria para lavabo | 2d | 2026-11-02 | 2026-11-04 | 715FS+2d | 2026-10-03 | 2026-10-06 | 2d | 2026-10-09 | 2026-10-13 | 8d | 0d |
| 821 | 1.4.23.11 | Salida hidráulica para lavadero | 2d | 2026-11-02 | 2026-11-04 | 715FS+2d | 2026-10-03 | 2026-10-06 | 2d | 2026-10-09 | 2026-10-13 | 8d | 0d |
| 822 | 1.4.23.12 | Salida sanitaria para lavadero | 2d | 2026-11-03 | 2026-11-05 | 715FS+3d | 2026-10-05 | 2026-10-07 | 2d | 2026-10-12 | 2026-10-14 | 8d | 0d |
| 823 | 1.4.23.13 | Salida hidráulica para lavadora | 2d | 2026-11-03 | 2026-11-05 | 715FS+3d | 2026-10-05 | 2026-10-07 | 2d | 2026-10-12 | 2026-10-14 | 8d | 0d |
| 824 | 1.4.23.14 | Salida sanitaria para lavadora | 2d | 2026-11-04 | 2026-11-06 | 718FS+4d | 2026-10-06 | 2026-10-08 | 2d | 2026-10-13 | 2026-10-15 | 8d | 0d |
| 825 | 1.4.23.15 | Salida hidráulica para regadera | 5d | 2026-11-04 | 2026-11-10 | 715FS+4d | 2026-10-06 | 2026-10-13 | 5d | 2026-10-13 | 2026-10-19 | 13d | 0d |
| 826 | 1.4.23.16 | Salida sanitaria para regadera | 4d | 2026-11-04 | 2026-11-09 | 718FS+4d | 2026-10-06 | 2026-10-12 | 4d | 2026-10-13 | 2026-10-17 | 14d | 2d |
| 827 | 1.4.23.17 | Salida hidráulica para WC | 2d | 2026-11-02 | 2026-11-04 | 718FS+2d | 2026-10-03 | 2026-10-06 | 2d | 2026-10-09 | 2026-10-13 | 8d | 0d |
| 828 | 1.4.23.18 | Salida sanitaria para WC | 4d | 2026-11-04 | 2026-11-09 | 718FS+4d | 2026-10-06 | 2026-10-12 | 4d | 2026-10-13 | 2026-10-17 | 8d | 0d |
| 829 | 1.4.23.19 | Salida hidráulica para zinc | 4d | 2026-11-04 | 2026-11-09 | 718FS+4d | 2026-10-06 | 2026-10-12 | 4d | 2026-10-13 | 2026-10-17 | 8d | 0d |
| 830 | 1.4.23.20 | Salida sanitaria para zinc | 3d | 2026-11-06 | 2026-11-10 | 718FS+6d | 2026-10-08 | 2026-10-13 | 3d | 2026-10-15 | 2026-10-19 | 8d | 0d |
| 831 | 1.4.23.21 | Tubo para ventila de baño 2 | 5d | 2026-10-30 | 2026-11-05 | 811SS | 2026-10-01 | 2026-10-07 | 5d | 2026-10-07 | 2026-10-14 | 8d | 0d |
| 832 | 1.4.23.22 | Tubo para minisplit PVC 3 | 5d | 2026-11-05 | 2026-11-11 | 831 | 2026-10-07 | 2026-10-14 | 5d | 2026-10-14 | 2026-10-20 | 8d | 0d |
| 833 | 1.4.23.23 | Cuadro de medición | 5d | 2026-11-03 | 2026-11-09 | 765 | 2026-10-05 | 2026-10-12 | 5d | 2026-10-12 | 2026-10-17 | 13d | 0d |
| 834 | 1.4.23.24 | Pozo de absorción 0.50x0.50x0.50 | 3d | 2026-11-03 | 2026-11-06 | 765 | 2026-10-05 | 2026-10-08 | 3d | 2026-10-12 | 2026-10-15 | 16d | 0d |
| 835 | 1.4.23.25 | Prueba sanitaria final | 1d | 2026-11-11 | 2026-11-12 | 811, 812, 813, 815, 820, 822, 824, 826, 828, 831, 832 | 2026-10-14 | 2026-10-15 | 1d | 2026-10-20 | 2026-10-21 | 12d | 4d |
| 836 | 1.4.23.26 | Prueba hidrostática final | 1d | 2026-11-10 | 2026-11-11 | 816, 817, 818, 819, 821, 823, 825, 827, 829, 833, 834, 839, 840, 838, 837 | 2026-10-13 | 2026-10-14 | 1d | 2026-10-19 | 2026-10-20 | 13d | 5d |
| 837 | 1.4.23.27 | Salida válvula control 19 mm | 1d | 2026-11-09 | 2026-11-10 | 833 | 2026-10-12 | 2026-10-13 | 1d | 2026-10-17 | 2026-10-19 | 13d | 0d |
| 838 | 1.4.23.28 | Salida válvula control 13 mm | 1d | 2026-11-09 | 2026-11-10 | 833 | 2026-10-12 | 2026-10-13 | 1d | 2026-10-17 | 2026-10-19 | 13d | 0d |
| 839 | 1.4.23.29 | Salida hidráulica para tanque hidroneumático | 3d | 2026-11-03 | 2026-11-06 | 765 | 2026-10-05 | 2026-10-08 | 3d | 2026-10-12 | 2026-10-15 | 16d | 3d |
| 840 | 1.4.23.30 | Salida hidráulica para Active Driver | 3d | 2026-11-03 | 2026-11-06 | 765 | 2026-10-05 | 2026-10-08 | 3d | 2026-10-12 | 2026-10-15 | 16d | 3d |

| ID | WBS | Task | Duration | Start | Finish | Predecessors | Baseline start | Baseline finish | Baseline duration | Baseline 1 start | Baseline 1 finish | Total slack | Free slack |
| --- | --- | --- | --- | --- | --- | --- | --- | --- | --- | --- | --- | --- | --- |
| 841 | 1.4.24 | **INSTALACION DE GAS** | 8d | 2026-10-28 | 2026-11-06 |  | 2026-09-29 | 2026-10-08 | 8d | 2026-10-05 | 2026-10-15 | 40d |  |
| 842 | 1.4.24.1 | Ramaleo para gas 1/2 | 5d | 2026-10-31 | 2026-11-06 | 765FS-2d, 843 | 2026-10-02 | 2026-10-08 | 5d | 2026-10-08 | 2026-10-15 | 40d | 0d |
| 843 | 1.4.24.2 | Excavación a mano material tipo B | 3d | 2026-10-28 | 2026-10-30 | 765FF-2d | 2026-09-29 | 2026-10-02 | 3d | 2026-10-05 | 2026-10-08 | 40d | 0d |
| 844 | 1.4.25 | **MUEBLES SANITARIOS** | 29d | 2026-12-07 | 2027-01-16 |  | 2026-11-06 | 2026-12-14 | 29d | 2026-11-12 | 2026-12-19 | 20d |  |
| 845 | 1.4.25.1 | WC completo Austral | 2d | 2026-12-07 | 2026-12-09 | 749, 756, 835, 836 | 2026-11-06 | 2026-11-09 | 2d | 2026-11-12 | 2026-11-17 | 22d | 14d |
| 846 | 1.4.25.2 | Lavabo Senna con pedestal | 4d | 2026-12-07 | 2026-12-11 | 749, 754, 756, 835, 836 | 2026-11-06 | 2026-11-11 | 4d | 2026-11-12 | 2026-11-19 | 20d | 12d |
| 847 | 1.4.25.3 | Tarja / lavabo combo Guinea 80x45 | 2d | 2026-12-07 | 2026-12-09 | 593, 749, 754, 756, 836 | 2026-11-06 | 2026-11-09 | 2d | 2026-11-12 | 2026-11-17 | 47d |  |
| 848 | 1.4.25.4 | Regadera con monomando | 3d | 2026-12-09 | 2026-12-12 | 749, 754FS+2d, 756FS+2d, 835, 836 | 2026-11-09 | 2026-11-12 | 3d | 2026-11-17 | 2026-11-20 | 19d | 11d |
| 849 | 1.4.25.5 | Coladera inserto cerámico | 2d | 2026-12-10 | 2026-12-12 | 754, 756FS+3d, 836 | 2026-11-10 | 2026-11-12 | 2d | 2026-11-18 | 2026-11-20 | 19d | 11d |
| 850 | 1.4.25.6 | Toallero sencillo | 1d | 2027-01-15 | 2027-01-16 | 742FS-1d | 2026-12-12 | 2026-12-14 | 1d | 2026-12-18 | 2026-12-19 | 8d | 0d |
| 851 | 1.4.25.7 | Toallero barra | 1d | 2027-01-15 | 2027-01-16 | 742FS-1d | 2026-12-12 | 2026-12-14 | 1d | 2026-12-18 | 2026-12-19 | 8d | 0d |
| 852 | 1.4.25.8 | Portapapel | 1d | 2027-01-15 | 2027-01-16 | 742FS-1d | 2026-12-12 | 2026-12-14 | 1d | 2026-12-18 | 2026-12-19 | 8d | 0d |
| 853 | 1.4.25.9 | Gancho baño | 1d | 2027-01-15 | 2027-01-16 | 742FS-1d | 2026-12-12 | 2026-12-14 | 1d | 2026-12-18 | 2026-12-19 | 8d | 0d |
| 854 | 1.4.26 | **EQUIPAMIENTO** | 6d | 2026-10-21 | 2026-10-28 |  | 2026-09-23 | 2026-09-30 | 6d | 2026-09-29 | 2026-10-06 | 67d |  |
| 855 | 1.4.26.1 | Electronivel Rotoplas 5 m | 2d | 2026-10-22 | 2026-10-24 | 860 | 2026-09-24 | 2026-09-26 | 2d | 2026-09-30 | 2026-10-02 | 70d | 62d |
| 856 | 1.4.26.2 | Manómetro | 1d | 2026-10-22 | 2026-10-23 | 860 | 2026-09-24 | 2026-09-25 | 1d | 2026-09-30 | 2026-10-01 | 71d | 63d |
| 857 | 1.4.26.3 | Interruptor de presión 30-50 PSI | 1d | 2026-10-22 | 2026-10-23 | 860 | 2026-09-24 | 2026-09-25 | 1d | 2026-09-30 | 2026-10-01 | 71d | 63d |
| 858 | 1.4.26.4 | Tanque hidroneumático FPS-24LX | 3d | 2026-10-22 | 2026-10-26 | 860 | 2026-09-24 | 2026-09-28 | 3d | 2026-09-30 | 2026-10-03 | 67d | 0d |
| 859 | 1.4.26.5 | Bomba sumergible Dominator 1.2 HP | 2d | 2026-10-27 | 2026-10-28 | 858 | 2026-09-28 | 2026-09-30 | 2d | 2026-10-03 | 2026-10-06 | 67d | 59d |
| 860 | 1.4.26.6 | Cisterna prefabricada 2800 L | 1d | 2026-10-21 | 2026-10-22 | 722FF | 2026-09-23 | 2026-09-24 | 1d | 2026-09-29 | 2026-09-30 | 67d | 0d |
| 861 | 1.4.27 | **LUMINARIAS** | 5d | 2026-11-27 | 2026-12-03 |  | 2026-10-29 | 2026-11-04 | 5d | 2026-11-04 | 2026-11-10 | 37d |  |
| 862 | 1.4.27.1 | Roseta cerámica | 3d | 2026-11-27 | 2026-12-01 | 802 | 2026-10-29 | 2026-11-02 | 3d | 2026-11-04 | 2026-11-07 | 39d | 2d |
| 863 | 1.4.27.2 | Luminaria lagartijera LED | 3d | 2026-11-27 | 2026-12-01 | 802 | 2026-10-29 | 2026-11-02 | 3d | 2026-11-04 | 2026-11-07 | 39d | 2d |
| 864 | 1.4.27.3 | Spot 6W Tecnolite | 3d | 2026-11-27 | 2026-12-01 | 802 | 2026-10-29 | 2026-11-02 | 3d | 2026-11-04 | 2026-11-07 | 39d | 2d |
| 865 | 1.4.27.4 | Spot 7W Tecnolite | 3d | 2026-11-27 | 2026-12-01 | 802 | 2026-10-29 | 2026-11-02 | 3d | 2026-11-04 | 2026-11-07 | 39d | 2d |
| 866 | 1.4.27.5 | Arbotante exterior | 2d | 2026-11-27 | 2026-11-30 | 802 | 2026-10-29 | 2026-10-30 | 2d | 2026-11-04 | 2026-11-06 | 37d | 0d |
| 867 | 1.4.27.6 | Estaca LED exterior | 3d | 2026-11-30 | 2026-12-03 | 866 | 2026-10-31 | 2026-11-04 | 3d | 2026-11-06 | 2026-11-10 | 37d | 0d |
| 868 | 1.4.27.7 | Tira LED | 3d | 2026-11-30 | 2026-12-03 | 866 | 2026-10-31 | 2026-11-04 | 3d | 2026-11-06 | 2026-11-10 | 37d | 0d |
| 869 | 1.4.27.8 | Spot exterior 50W | 2d | 2026-11-27 | 2026-11-30 | 802 | 2026-10-29 | 2026-10-30 | 2d | 2026-11-04 | 2026-11-06 | 40d | 3d |

| ID | WBS | Task | Type | Duration | Start | Finish | Predecessors | Complete | Remaining | Baseline start | Baseline finish | Baseline duration | Baseline 1 start | Baseline 1 finish | Total slack | Free slack |
| --- | --- | --- | --- | --- | --- | --- | --- | --- | --- | --- | --- | --- | --- | --- | --- | --- |
| 870 | 1.4.28 | **TIMBRE** |  | 2d | 2026-11-28 | 2026-12-01 |  |  |  | 2026-10-30 | 2026-11-02 | 2d | 2026-11-05 | 2026-11-07 | 39d |  |
| 871 | 1.4.28.1 | Timbre inalámbrico con bocina |  | 2d | 2026-11-28 | 2026-12-01 | 800FS+3d, 801FS+3d |  |  | 2026-10-30 | 2026-11-02 | 2d | 2026-11-05 | 2026-11-07 | 39d | 2d |
| 872 | 1.4.29 | **OBRA EXTERIOR - BARDA** |  | 18d | 2026-11-03 | 2026-11-26 |  |  |  | 2026-10-05 | 2026-10-27 | 18d | 2026-10-12 | 2026-11-03 | 45d |  |
| 873 | 1.4.29.1 | Murete convencional |  | 5d | 2026-11-09 | 2026-11-17 | 765FS+5d |  |  | 2026-10-12 | 2026-10-17 | 5d | 2026-10-17 | 2026-10-23 | 51d | 14d |
| 874 | 1.4.29.2 | Barda de block aparente |  | 18d | 2026-11-03 | 2026-11-26 | 765 |  |  | 2026-10-05 | 2026-10-27 | 18d | 2026-10-12 | 2026-11-03 | 45d | 37d |
| 875 | 1.4.30 | **TERCER LIMPIEZA DE OBRA** |  | 12d | 2027-01-16 | 2027-02-01 |  |  |  | 2026-12-14 | 2027-01-07 | 16d | 2026-12-21 | 2027-01-14 | 8d |  |
| 876 | 1.4.30.1 | Limpieza fina para entrega |  | 5d | 2027-01-16 | 2027-01-22 | 742, 743, 744, 775, 784, 785, 809, 835, 836, 850, 851, 852, 853, 855, 856, 857, 858, 859, 874 |  |  | 2026-12-14 | 2026-12-19 | 5d | 2026-12-21 | 2026-12-29 | 8d | 0d |
| 877 | 1.4.30.2 | Tercera limpieza de obra |  | 5d | 2027-01-20 | 2027-01-26 | 876FS-2d, 768 |  |  | 2026-12-21 | 2026-12-29 | 5d | 2026-12-29 | 2027-01-06 | 8d | 0d |
| 878 | 1.4.30.3 | Tercera carga y acarreo de escombro |  | 6d | 2027-01-23 | 2027-02-01 | 877FS-2d |  |  | 2026-12-29 | 2027-01-07 | 6d | 2027-01-06 | 2027-01-14 | 8d | 0d |
| 879 | 1.5 | **LOTE 22 M-663 CORSAC-B** |  | 194d | 2026-05-29 A | 2027-02-03 |  | 9% | 176.07d | 2026-06-10 | 2027-01-20 | 174d | 2026-06-10 | 2027-01-20 | 6d |  |
| 880 | 1.5.1 | **HITOS IMPORTANTES DEL LOTE** |  | 194d | 2026-05-29 A | 2027-02-03 |  |  | 194d | 2026-06-10 | 2027-01-20 | 174d | 2026-06-10 | 2027-01-20 | 6d |  |
| 881 | 1.5.1.1 | Inicio del Lote-22 M-663 Corsac-B | milestone | 0d | 2026-05-29 A | 2026-05-29 A | 7 | 100% |  | 2026-06-10 | 2026-06-10 |  | 2026-06-10 | 2026-06-10 |  |  |
| 882 | 1.5.1.2 | Colado de Losa de Cimentación | milestone | 0d | 2026-07-15 | 2026-07-15 | 912 |  |  | 2026-07-01 | 2026-07-01 |  | 2026-07-01 | 2026-07-01 | 163d |  |
| 883 | 1.5.1.3 | Colado de Losa de Entrepiso | milestone | 0d | 2026-08-22 | 2026-08-22 | 949 |  |  | 2026-08-08 | 2026-08-08 |  | 2026-08-08 | 2026-08-08 | 132d |  |
| 884 | 1.5.1.4 | Colado de Losa de Azotea | milestone | 0d | 2026-09-30 | 2026-09-30 | 984 |  |  | 2026-09-15 | 2026-09-15 |  | 2026-09-15 | 2026-09-15 | 102d |  |
| 885 | 1.5.1.5 | Entrega de vivienda | milestone | 0d | 2027-02-03 | 2027-02-03 | 1133, 1134, 1135 |  |  | 2027-01-20 | 2027-01-20 |  | 2027-01-20 | 2027-01-20 | 6d |  |
| 886 | 1.5.2 | **TRABAJOS PRELIMINARES** |  | 10d | 2026-05-29 A | 2026-06-11 A |  | 100% |  | 2026-06-10 | 2026-06-12 | 2d | 2026-06-10 | 2026-06-12 |  |  |
| 887 | 1.5.2.1 | Trazo y nivelación |  | 10d | 2026-05-29 A | 2026-06-11 A | 881 | 100% |  | 2026-06-10 | 2026-06-12 | 2d | 2026-06-10 | 2026-06-12 |  |  |
| 888 | 1.5.3 | **EXCAVACIONES** |  | 11d | 2026-06-11 A | 2026-06-25 A |  | 100% |  | 2026-06-12 | 2026-06-16 | 3d | 2026-06-12 | 2026-06-16 |  |  |
| 889 | 1.5.3.1 | Excavación a mano material tipo B |  | 10d | 2026-06-11 A | 2026-06-24 A | 887 | 100% |  | 2026-06-12 | 2026-06-16 | 3d | 2026-06-12 | 2026-06-16 |  |  |
| 890 | 1.5.3.2 | Acarreo en carretilla 20 m |  | 10d | 2026-06-12 A | 2026-06-25 A | 889SS+1d | 100% |  | 2026-06-13 | 2026-06-16 | 2d | 2026-06-13 | 2026-06-16 |  |  |
| 891 | 1.5.4 | **CIMENTACION** |  | 17d | 2026-06-25 A | 2026-07-16 |  | 84% | 2.74d | 2026-06-16 | 2026-07-02 | 13d | 2026-06-16 | 2026-07-02 | 162d |  |
| 892 | 1.5.4.1 | Cimbra perimetral losa de cimentación |  | 5d | 2026-06-25 A | 2026-07-01 A | 889, 890 | 100% |  | 2026-06-16 | 2026-06-19 | 3d | 2026-06-16 | 2026-06-19 |  |  |
| 893 | 1.5.4.2 | Sistema antitermitas PVC |  | 5d | 2026-06-25 A | 2026-07-01 A | 889, 890 | 100% |  | 2026-06-16 | 2026-06-19 | 3d | 2026-06-16 | 2026-06-19 |  |  |
| 894 | 1.5.4.3 | Hule negro en cimentación |  | 1d | 2026-07-01 A | 2026-07-02 A | 893 | 100% |  | 2026-06-19 | 2026-06-22 | 1d | 2026-06-19 | 2026-06-22 |  |  |
| 895 | 1.5.4.4 | Ramaleo poliducto eléctrico cimentación |  | 2d | 2026-07-02 A | 2026-07-04 A | 894 | 100% |  | 2026-06-22 | 2026-06-24 | 2d | 2026-06-22 | 2026-06-24 |  |  |
| 896 | 1.5.4.5 | Ramaleo eléctrico base-medición a centro de carga |  | 1d | 2026-07-02 A | 2026-07-03 A | 894 | 100% |  | 2026-06-22 | 2026-06-23 | 1d | 2026-06-22 | 2026-06-23 |  |  |
| 897 | 1.5.4.6 | Ramaleo eléctrico exterior |  | 1d | 2026-07-06 A | 2026-07-06 A | 895, 896 | 100% |  | 2026-06-24 | 2026-06-25 | 1d | 2026-06-24 | 2026-06-25 |  |  |
| 898 | 1.5.4.7 | Ramaleo para cable poliducto 3/4 |  | 1d | 2026-07-06 A | 2026-07-06 A | 895, 896 | 100% |  | 2026-06-24 | 2026-06-25 | 1d | 2026-06-24 | 2026-06-25 |  |  |
| 899 | 1.5.4.8 | Ramaleo para TV poliducto 3/4 |  | 1d | 2026-07-06 A | 2026-07-06 A | 895, 896 | 100% |  | 2026-06-24 | 2026-06-25 | 1d | 2026-06-24 | 2026-06-25 |  |  |
| 900 | 1.5.4.9 | Ramaleo hidráulico CPVC 1 cimentación |  | 1d | 2026-07-02 A | 2026-07-03 A | 894 | 100% |  | 2026-06-22 | 2026-06-23 | 1d | 2026-06-22 | 2026-06-23 |  |  |
| 901 | 1.5.4.10 | Ramaleo hidráulico CPVC 3/4 cimentación |  | 2d | 2026-07-03 A | 2026-07-06 A | 900 | 100% |  | 2026-06-23 | 2026-06-25 | 2d | 2026-06-23 | 2026-06-25 |  |  |
| 902 | 1.5.4.11 | Ramaleo hidráulico CPVC 1/2 cimentación |  | 2d | 2026-07-07 A | 2026-07-08 A | 901 | 100% |  | 2026-06-25 | 2026-06-27 | 2d | 2026-06-25 | 2026-06-27 |  |  |
| 903 | 1.5.4.12 | Prueba hidráulica |  | 1d | 2026-07-09 A | 2026-07-09 A | 900, 901, 902 | 100% |  | 2026-06-27 | 2026-06-29 | 1d | 2026-06-27 | 2026-06-29 |  |  |
| 904 | 1.5.4.13 | Ramaleo sanitario PVC 4 cimentación |  | 2d | 2026-07-03 A | 2026-07-06 A | 894FS+1d | 100% |  | 2026-06-23 | 2026-06-25 | 2d | 2026-06-23 | 2026-06-25 |  |  |
| 905 | 1.5.4.14 | Ramaleo sanitario PVC 2 cimentación |  | 1d | 2026-07-07 A | 2026-07-07 A | 904 | 100% |  | 2026-06-25 | 2026-06-26 | 1d | 2026-06-25 | 2026-06-26 |  |  |
| 906 | 1.5.4.15 | Prueba sanitaria |  | 1d | 2026-07-08 A | 2026-07-08 A | 904, 905 | 100% |  | 2026-06-26 | 2026-06-27 | 1d | 2026-06-26 | 2026-06-27 |  |  |
| 907 | 1.5.4.16 | Acero contratrabe CT-1 |  | 6d | 2026-07-01 A | 2026-07-08 A | 892 | 100% |  | 2026-06-19 | 2026-06-25 | 4d | 2026-06-19 | 2026-06-25 |  |  |
| 908 | 1.5.4.17 | Acero contratrabe CT-2 |  | 6d | 2026-07-01 A | 2026-07-08 A | 892 | 100% |  | 2026-06-19 | 2026-06-25 | 4d | 2026-06-19 | 2026-06-25 |  |  |
| 909 | 1.5.4.18 | Malla electrosoldada 6-6/8-8 |  | 2d | 2026-07-11 A | 2026-07-14 | 907, 908, 910, 911 | 31% | 1.38d | 2026-06-27 | 2026-06-30 | 2d | 2026-06-27 | 2026-06-30 | 6d | 0d |
| 910 | 1.5.4.19 | Bastón de refuerzo LS |  | 2d | 2026-07-09 A | 2026-07-10 A | 907, 908 | 100% |  | 2026-06-25 | 2026-06-27 | 2d | 2026-06-25 | 2026-06-27 |  |  |
| 911 | 1.5.4.20 | Bastón de refuerzo LI |  | 2d | 2026-07-09 A | 2026-07-10 A | 907, 908 | 100% |  | 2026-06-25 | 2026-06-27 | 2d | 2026-06-25 | 2026-06-27 |  |  |
| 912 | 1.5.4.21 | Colado losa de cimentación f’c=200 |  | 1d | 2026-07-14 | 2026-07-15 | 892, 894, 897, 898, 899, 903, 906, 907, 908, 909, 910, 911 |  |  | 2026-06-30 | 2026-07-01 | 1d | 2026-06-30 | 2026-07-01 | 6d | 0d |
| 913 | 1.5.4.22 | Curado de concreto |  | 1d | 2026-07-15 | 2026-07-16 | 912 |  |  | 2026-07-01 | 2026-07-02 | 1d | 2026-07-01 | 2026-07-02 | 6d | 0d |
| 914 | 1.5.4.23 | Acero zapata ZT-1 |  | 4d | 2026-07-09 A | 2026-07-14 | 907, 908 | 66% | 1.38d | 2026-06-25 | 2026-06-30 | 4d | 2026-06-25 | 2026-06-30 | 0.62d | 0d |
| 915 | 1.5.4.24 | Acero zapata ZT-2 |  | 4d | 2026-07-09 A | 2026-07-14 | 907, 908 | 66% | 1.38d | 2026-06-25 | 2026-06-30 | 4d | 2026-06-25 | 2026-06-30 | 0.62d | 0d |
| 916 | 1.5.4.25 | Colado zapatas aisladas f’c=200 |  | 1d | 2026-07-15 | 2026-07-16 | 917 |  |  | 2026-07-01 | 2026-07-02 | 1d | 2026-07-01 | 2026-07-02 | 162d |  |
| 917 | 1.5.4.26 | Cimbra frontera zapatas |  | 3d | 2026-07-11 A | 2026-07-15 | 914FS-2d, 915FS-2d | 21% | 2.38d | 2026-06-27 | 2026-07-01 | 3d | 2026-06-27 | 2026-07-01 | 162d | 0d |

| ID | WBS | Task | Duration | Start | Finish | Predecessors | Complete | Remaining | Baseline start | Baseline finish | Baseline duration | Baseline 1 start | Baseline 1 finish | Total slack | Free slack |
| --- | --- | --- | --- | --- | --- | --- | --- | --- | --- | --- | --- | --- | --- | --- | --- |
| 918 | 1.5.5 | **MUROS, PLANTA BAJA. CASTILLOS Y CERRAMIENTOS** | 20d | 2026-07-10 A | 2026-08-04 |  | 2% | 19.55d | 2026-06-26 | 2026-07-21 | 20d | 2026-06-26 | 2026-07-21 | 147d |  |
| 919 | 1.5.5.1 | Anclaje de castillos y Columnas PB | 5d | 2026-07-10 A | 2026-07-16 | 907FS+1d, 908FS+1d | 33% | 3.38d | 2026-06-26 | 2026-07-02 | 5d | 2026-06-26 | 2026-07-02 | 150d | 0d |
| 920 | 1.5.5.2 | Castillo K1 | 4d | 2026-07-16 | 2026-07-21 | 913, 919 |  |  | 2026-07-02 | 2026-07-07 | 4d | 2026-07-02 | 2026-07-07 | 150d | 0d |
| 921 | 1.5.5.3 | Castillo K2 | 4d | 2026-07-16 | 2026-07-21 | 913, 919 |  |  | 2026-07-02 | 2026-07-07 | 4d | 2026-07-02 | 2026-07-07 | 154d | 1d |
| 922 | 1.5.5.4 | Castillo K3 | 3d | 2026-07-18 | 2026-07-22 | 920FS-2d |  |  | 2026-07-06 | 2026-07-08 | 3d | 2026-07-06 | 2026-07-08 | 150d | 0d |
| 923 | 1.5.5.5 | Castillo K4 | 3d | 2026-07-18 | 2026-07-22 | 920FS-2d |  |  | 2026-07-06 | 2026-07-08 | 3d | 2026-07-06 | 2026-07-08 | 150d | 0d |
| 924 | 1.5.5.6 | Castillo K5 | 3d | 2026-07-21 | 2026-07-24 | 922FS-1d, 923FS-1d |  |  | 2026-07-08 | 2026-07-10 | 3d | 2026-07-08 | 2026-07-10 | 150d | 0d |
| 925 | 1.5.5.7 | Refuerzo de muro K6 | 3d | 2026-07-22 | 2026-07-27 | 924FS-2d |  |  | 2026-07-09 | 2026-07-13 | 3d | 2026-07-09 | 2026-07-13 | 150d | 0d |
| 926 | 1.5.5.8 | Columna C1 | 4d | 2026-07-16 | 2026-07-21 | 913, 919 |  |  | 2026-07-02 | 2026-07-07 | 4d | 2026-07-02 | 2026-07-07 | 154d | 0d |
| 927 | 1.5.5.9 | Columna C2 | 4d | 2026-07-21 | 2026-07-27 | 926 |  |  | 2026-07-08 | 2026-07-13 | 4d | 2026-07-08 | 2026-07-13 | 154d |  |
| 928 | 1.5.5.10 | Dala de cerramiento CR-1 | 4d | 2026-07-22 | 2026-07-28 | 920, 921, 922 |  |  | 2026-07-09 | 2026-07-14 | 4d | 2026-07-09 | 2026-07-14 | 153d |  |
| 929 | 1.5.5.11 | Dala de cerramiento CR-2 | 3d | 2026-07-22 | 2026-07-27 | 920, 921, 922 |  |  | 2026-07-09 | 2026-07-13 | 3d | 2026-07-09 | 2026-07-13 | 154d |  |
| 930 | 1.5.5.12 | Cadena block dala | 4d | 2026-07-27 | 2026-07-31 | 925 |  |  | 2026-07-13 | 2026-07-17 | 4d | 2026-07-13 | 2026-07-17 | 150d |  |
| 931 | 1.5.5.13 | Muro de ladrillo aparente | 15d | 2026-07-16 | 2026-08-04 | 913 |  |  | 2026-07-02 | 2026-07-21 | 15d | 2026-07-02 | 2026-07-21 | 6d | 0d |
| 932 | 1.5.5.14 | Muro de block planta baja | 13d | 2026-07-18 | 2026-08-04 | 913FS+2d |  |  | 2026-07-06 | 2026-07-21 | 13d | 2026-07-06 | 2026-07-21 | 6d | 0d |
| 933 | 1.5.6 | **ESCALERA** | 14d | 2026-08-22 | 2026-09-09 |  |  |  | 2026-08-08 | 2026-08-26 | 14d | 2026-08-08 | 2026-08-26 | 118d |  |
| 934 | 1.5.6.1 | Escalera de concreto armado | 14d | 2026-08-22 | 2026-09-09 | 949 |  |  | 2026-08-08 | 2026-08-26 | 14d | 2026-08-08 | 2026-08-26 | 118d |  |
| 935 | 1.5.7 | **LOSA DE ENTREPISO (viegueta y caseton)** | 18d | 2026-08-01 | 2026-08-24 |  |  |  | 2026-07-18 | 2026-08-10 | 18d | 2026-07-18 | 2026-08-10 | 9d |  |
| 936 | 1.5.7.1 | Vigueta pretensada 1.40 m | 3d | 2026-08-01 | 2026-08-05 | 931FS-2d, 932FS-2d |  |  | 2026-07-18 | 2026-07-22 | 3d | 2026-07-18 | 2026-07-22 | 11d | 4d |
| 937 | 1.5.7.2 | Vigueta pretensada 1.95 m | 4d | 2026-08-03 | 2026-08-07 | 931FS-1d, 932FS-1d |  |  | 2026-07-20 | 2026-07-24 | 4d | 2026-07-20 | 2026-07-24 | 9d | 2d |
| 938 | 1.5.7.3 | Vigueta pretensada 3.35 m | 4d | 2026-08-04 | 2026-08-08 | 931, 932 |  |  | 2026-07-21 | 2026-07-27 | 4d | 2026-07-21 | 2026-07-27 | 8d | 1d |
| 939 | 1.5.7.4 | Vigueta pretensada 3.50 m | 4d | 2026-08-05 | 2026-08-10 | 931FS+1d, 932FS+1d |  |  | 2026-07-22 | 2026-07-28 | 4d | 2026-07-22 | 2026-07-28 | 7d | 0d |
| 940 | 1.5.7.5 | Vigueta pretensada 3.75 m | 4d | 2026-08-05 | 2026-08-10 | 931FS+1d, 932FS+1d |  |  | 2026-07-22 | 2026-07-28 | 4d | 2026-07-22 | 2026-07-28 | 7d | 0d |
| 941 | 1.5.7.6 | Vigueta pretensada 3.90 m | 4d | 2026-08-05 | 2026-08-10 | 931FS+1d, 932FS+1d |  |  | 2026-07-22 | 2026-07-28 | 4d | 2026-07-22 | 2026-07-28 | 7d | 0d |
| 942 | 1.5.7.7 | Bovedilla poliestireno entrepiso | 2d | 2026-08-10 | 2026-08-12 | 936, 937, 938, 939, 940, 941 |  |  | 2026-07-28 | 2026-07-30 | 2d | 2026-07-28 | 2026-07-30 | 7d | 0d |
| 943 | 1.5.7.8 | Dala de coronamiento | 3d | 2026-08-10 | 2026-08-13 | 936, 937, 938, 939, 940, 941, 948FS-1d |  |  | 2026-07-28 | 2026-07-31 | 3d | 2026-07-28 | 2026-07-31 | 10d | 3d |
| 944 | 1.5.7.9 | Nervadura NR-1 | 3d | 2026-08-11 | 2026-08-14 | 936, 937, 938, 939, 940, 941, 948 |  |  | 2026-07-29 | 2026-08-01 | 3d | 2026-07-29 | 2026-08-01 | 6d | 0d |
| 945 | 1.5.7.10 | Nervadura NR-2 | 3d | 2026-08-11 | 2026-08-14 | 944SS |  |  | 2026-07-29 | 2026-08-01 | 3d | 2026-07-29 | 2026-08-01 | 8d | 0d |
| 946 | 1.5.7.11 | Trabe TR-1 | 5d | 2026-08-11 | 2026-08-18 | 944SS |  |  | 2026-07-29 | 2026-08-04 | 5d | 2026-07-29 | 2026-08-04 | 6d | 0d |
| 947 | 1.5.7.12 | Malla 66-10/10 losa de compresión | 2d | 2026-08-18 | 2026-08-20 | 942, 943, 957, 960 |  |  | 2026-08-04 | 2026-08-06 | 2d | 2026-08-04 | 2026-08-06 | 7d | 1d |
| 948 | 1.5.7.13 | Cimbra losa de azotea | 5d | 2026-08-05 | 2026-08-11 | 931FS+1d, 932FS+1d |  |  | 2026-07-22 | 2026-07-29 | 5d | 2026-07-22 | 2026-07-29 | 6d | 0d |
| 949 | 1.5.7.14 | Concreto losa de entrepiso f’c=200 | 1d | 2026-08-21 | 2026-08-22 | 944, 945, 946, 947, 954, 957, 960, 951, 962 |  |  | 2026-08-07 | 2026-08-08 | 1d | 2026-08-07 | 2026-08-08 | 6d | 0d |
| 950 | 1.5.7.15 | Curado de concreto | 1d | 2026-08-22 | 2026-08-24 | 949 |  |  | 2026-08-08 | 2026-08-10 | 1d | 2026-08-08 | 2026-08-10 | 6d | 0d |
| 951 | 1.5.7.16 | Cimbra exterior corta losa | 3d | 2026-08-13 | 2026-08-18 | 944FS-1d, 945FS-1d |  |  | 2026-07-31 | 2026-08-04 | 3d | 2026-07-31 | 2026-08-04 | 9d | 3d |
| 952 | 1.5.7.17 | Ramaleo poliducto eléctrico entrepiso | 2d | 2026-08-12 | 2026-08-14 | 942 |  |  | 2026-07-30 | 2026-08-01 | 2d | 2026-07-30 | 2026-08-01 | 10d | 0d |
| 953 | 1.5.7.18 | Ramaleo para cable poliducto 3/4 | 1d | 2026-08-12 | 2026-08-13 | 942 |  |  | 2026-07-30 | 2026-07-31 | 1d | 2026-07-30 | 2026-07-31 | 139d |  |
| 954 | 1.5.7.19 | Ramaleo para TV poliducto 3/4 | 1d | 2026-08-14 | 2026-08-17 | 952 |  |  | 2026-08-01 | 2026-08-03 | 1d | 2026-08-01 | 2026-08-03 | 10d | 4d |
| 955 | 1.5.7.20 | Ramaleo hidráulico CPVC 3/4 | 2d | 2026-08-13 | 2026-08-17 | 942FS+1d |  |  | 2026-07-31 | 2026-08-03 | 2d | 2026-07-31 | 2026-08-03 | 7d | 0d |
| 956 | 1.5.7.21 | Ramaleo hidráulico CPVC 1/2 | 1d | 2026-08-17 | 2026-08-18 | 955 |  |  | 2026-08-03 | 2026-08-04 | 1d | 2026-08-03 | 2026-08-04 | 7d | 0d |
| 957 | 1.5.7.22 | Prueba hidráulica | 1d | 2026-08-17 | 2026-08-18 | 955, 956FS-1d |  |  | 2026-08-03 | 2026-08-04 | 1d | 2026-08-03 | 2026-08-04 | 7d | 0d |
| 958 | 1.5.7.23 | Ramaleo sanitario PVC 4 | 2d | 2026-08-13 | 2026-08-17 | 942FS+1d |  |  | 2026-07-31 | 2026-08-03 | 2d | 2026-07-31 | 2026-08-03 | 7d | 0d |
| 959 | 1.5.7.24 | Ramaleo sanitario PVC 2 | 1d | 2026-08-17 | 2026-08-18 | 958 |  |  | 2026-08-03 | 2026-08-04 | 1d | 2026-08-03 | 2026-08-04 | 7d | 0d |
| 960 | 1.5.7.25 | Prueba sanitaria | 1d | 2026-08-17 | 2026-08-18 | 958, 959FS-1d |  |  | 2026-08-03 | 2026-08-04 | 1d | 2026-08-03 | 2026-08-04 | 7d | 0d |

| ID | WBS | Task | Duration | Start | Finish | Predecessors | Baseline start | Baseline finish | Baseline duration | Baseline 1 start | Baseline 1 finish | Total slack | Free slack |
| --- | --- | --- | --- | --- | --- | --- | --- | --- | --- | --- | --- | --- | --- |
| 961 | 1.5.8 | **MUROS EN PLANTA ALTA, CASTILLOS Y CERRM.** | 21d | 2026-08-17 | 2026-09-11 |  | 2026-08-03 | 2026-08-28 | 21d | 2026-08-03 | 2026-08-28 | 6d |  |
| 962 | 1.5.8.1 | Anclaje de castillos y Columnas PA | 4d | 2026-08-17 | 2026-08-21 | 944FS-1d, 945FS-1d, 946FS-1d | 2026-08-03 | 2026-08-07 | 4d | 2026-08-03 | 2026-08-07 | 6d | 0d |
| 963 | 1.5.8.2 | Castillo K1 | 4d | 2026-08-24 | 2026-08-28 | 950 | 2026-08-10 | 2026-08-14 | 4d | 2026-08-10 | 2026-08-14 | 10d | 0d |
| 964 | 1.5.8.3 | Castillo K2 | 4d | 2026-08-25 | 2026-08-29 | 950FS+1d | 2026-08-11 | 2026-08-17 | 4d | 2026-08-11 | 2026-08-17 | 9d | 0d |
| 965 | 1.5.8.4 | Castillo K3 | 3d | 2026-08-26 | 2026-08-29 | 950FS+2d | 2026-08-12 | 2026-08-17 | 3d | 2026-08-12 | 2026-08-17 | 9d | 0d |
| 966 | 1.5.8.5 | Castillo K4 | 3d | 2026-08-28 | 2026-09-01 | 963 | 2026-08-14 | 2026-08-19 | 3d | 2026-08-14 | 2026-08-19 | 10d | 1d |
| 967 | 1.5.8.6 | Castillo K5 | 3d | 2026-08-28 | 2026-09-01 | 963 | 2026-08-14 | 2026-08-19 | 3d | 2026-08-14 | 2026-08-19 | 10d | 1d |
| 968 | 1.5.8.7 | Refuerzo de muro K6 | 3d | 2026-08-31 | 2026-09-02 | 963, 964, 965 | 2026-08-17 | 2026-08-20 | 3d | 2026-08-17 | 2026-08-20 | 9d | 0d |
| 969 | 1.5.8.8 | Dala de cerramiento CR-1 | 4d | 2026-09-03 | 2026-09-08 | 966, 967, 968 | 2026-08-20 | 2026-08-25 | 4d | 2026-08-20 | 2026-08-25 | 9d | 0d |
| 970 | 1.5.8.9 | Cadena block dala | 3d | 2026-09-08 | 2026-09-11 | 968, 969 | 2026-08-25 | 2026-08-28 | 3d | 2026-08-25 | 2026-08-28 | 9d | 0d |
| 971 | 1.5.8.10 | Muro de ladrillo aparente | 15d | 2026-08-24 | 2026-09-11 | 950 | 2026-08-10 | 2026-08-28 | 15d | 2026-08-10 | 2026-08-28 | 6d | 0d |
| 972 | 1.5.8.11 | Muro de block planta alta | 14d | 2026-08-25 | 2026-09-11 | 950FS+1d | 2026-08-11 | 2026-08-28 | 14d | 2026-08-11 | 2026-08-28 | 6d | 0d |
| 973 | 1.5.9 | **LOSA AZOTEA** | 15d | 2026-09-11 | 2026-10-01 |  | 2026-08-28 | 2026-09-17 | 15d | 2026-08-28 | 2026-09-17 | 6d |  |
| 974 | 1.5.9.1 | Cortalosa CL-1 | 2d | 2026-09-26 | 2026-09-29 | 982 | 2026-09-11 | 2026-09-14 | 2d | 2026-09-11 | 2026-09-14 | 6d | 0d |
| 975 | 1.5.9.2 | Vigueta pretensada V11-40 390 | 5d | 2026-09-11 | 2026-09-18 | 970, 971, 972 | 2026-08-28 | 2026-09-03 | 5d | 2026-08-28 | 2026-09-03 | 9d | 3d |
| 976 | 1.5.9.3 | Vigueta pretensada V11-30 280 | 5d | 2026-09-11 | 2026-09-18 | 971, 972 | 2026-08-28 | 2026-09-03 | 5d | 2026-08-28 | 2026-09-03 | 9d | 3d |
| 977 | 1.5.9.4 | Vigueta pretensada V11-30 285 | 5d | 2026-09-11 | 2026-09-18 | 971, 972 | 2026-08-28 | 2026-09-03 | 5d | 2026-08-28 | 2026-09-03 | 9d | 3d |
| 978 | 1.5.9.5 | Vigueta pretensada V11-30 220 | 5d | 2026-09-14 | 2026-09-22 | 971FS+2d, 972FS+2d | 2026-09-01 | 2026-09-07 | 5d | 2026-09-01 | 2026-09-07 | 7d | 1d |
| 979 | 1.5.9.6 | Vigueta pretensada V11-40 75 | 5d | 2026-09-14 | 2026-09-22 | 971FS+2d, 972FS+2d | 2026-09-01 | 2026-09-07 | 5d | 2026-09-01 | 2026-09-07 | 7d | 1d |
| 980 | 1.5.9.7 | Vigueta pretensada V11-40 195 | 5d | 2026-09-15 | 2026-09-23 | 971FS+3d, 972FS+3d | 2026-09-02 | 2026-09-08 | 5d | 2026-09-02 | 2026-09-08 | 6d | 0d |
| 981 | 1.5.9.8 | Vigueta pretensada V11-50 450 | 5d | 2026-09-15 | 2026-09-23 | 971FS+3d, 972FS+3d | 2026-09-02 | 2026-09-08 | 5d | 2026-09-02 | 2026-09-08 | 6d | 0d |
| 982 | 1.5.9.9 | Bovedilla poliestireno azotea | 3d | 2026-09-23 | 2026-09-26 | 975, 976, 977, 978, 979, 980, 981 | 2026-09-08 | 2026-09-11 | 3d | 2026-09-08 | 2026-09-11 | 6d | 0d |
| 983 | 1.5.9.10 | Malla 66-10/10 losa de compresión | 2d | 2026-09-26 | 2026-09-29 | 982 | 2026-09-11 | 2026-09-14 | 2d | 2026-09-11 | 2026-09-14 | 6d | 0d |
| 984 | 1.5.9.11 | Concreto losa de azotea f’c=200 | 1d | 2026-09-29 | 2026-09-30 | 974, 982, 983, 987, 986 | 2026-09-14 | 2026-09-15 | 1d | 2026-09-14 | 2026-09-15 | 6d | 0d |
| 985 | 1.5.9.12 | Curado de concreto | 1d | 2026-09-30 | 2026-10-01 | 984 | 2026-09-15 | 2026-09-17 | 1d | 2026-09-15 | 2026-09-17 | 6d | 0d |
| 986 | 1.5.9.13 | Cimbra losa de azotea | 5d | 2026-09-11 | 2026-09-18 | 971, 972 | 2026-08-28 | 2026-09-03 | 5d | 2026-08-28 | 2026-09-03 | 14d | 8d |
| 987 | 1.5.9.14 | Ramaleo de poliducto para inst. electrica en azotea | 2d | 2026-09-26 | 2026-09-29 | 982 | 2026-09-11 | 2026-09-14 | 2d | 2026-09-11 | 2026-09-14 | 6d | 0d |

| ID | WBS | Task | Duration | Start | Finish | Predecessors | Baseline start | Baseline finish | Baseline duration | Baseline 1 start | Baseline 1 finish | Total slack | Free slack |
| --- | --- | --- | --- | --- | --- | --- | --- | --- | --- | --- | --- | --- | --- |
| 988 | 1.5.10 | **PRETIL Y ACABADOS DE AZOTEA** | 19d | 2026-10-01 | 2026-10-24 |  | 2026-09-17 | 2026-10-12 | 19d | 2026-09-17 | 2026-10-12 | 6d |  |
| 989 | 1.5.10.1 | Castillo K1 | 5d | 2026-10-03 | 2026-10-09 | 991SS+2d | 2026-09-21 | 2026-09-26 | 5d | 2026-09-21 | 2026-09-26 | 6d | 0d |
| 990 | 1.5.10.2 | Dala de cerramiento en pretil | 4d | 2026-10-07 | 2026-10-13 | 989FS-2d, 991FS-2d | 2026-09-24 | 2026-09-29 | 4d | 2026-09-24 | 2026-09-29 | 6d | 0d |
| 991 | 1.5.10.3 | Muro de block 12x15x40 | 5d | 2026-10-01 | 2026-10-07 | 985 | 2026-09-17 | 2026-09-24 | 5d | 2026-09-17 | 2026-09-24 | 6d | 0d |
| 992 | 1.5.10.4 | Chaflán en azotea | 4d | 2026-10-09 | 2026-10-15 | 989, 991 | 2026-09-26 | 2026-10-01 | 4d | 2026-09-26 | 2026-10-01 | 6d | 0d |
| 993 | 1.5.10.5 | Aplanado exterior Mortermax fino | 5d | 2026-10-13 | 2026-10-19 | 990, 992FS-2d | 2026-09-29 | 2026-10-05 | 5d | 2026-09-29 | 2026-10-05 | 6d | 0d |
| 994 | 1.5.10.6 | Acabado de azotea para impermeabilizar | 4d | 2026-10-20 | 2026-10-24 | 995 | 2026-10-06 | 2026-10-12 | 4d | 2026-10-06 | 2026-10-12 | 6d | 0d |
| 995 | 1.5.10.7 | Curado de concreto | 1d | 2026-10-19 | 2026-10-20 | 992, 993 | 2026-10-05 | 2026-10-06 | 1d | 2026-10-05 | 2026-10-06 | 6d | 0d |
| 996 | 1.5.11 | **PRIMERA LIMPIEZA DE OBRA** | 4d | 2026-10-01 | 2026-10-06 |  | 2026-09-17 | 2026-09-23 | 4d | 2026-09-17 | 2026-09-23 | 58d |  |
| 997 | 1.5.11.1 | Primera limpieza de obra | 2d | 2026-10-01 | 2026-10-03 | 985 | 2026-09-17 | 2026-09-21 | 2d | 2026-09-17 | 2026-09-21 | 58d | 0d |
| 998 | 1.5.11.2 | Primera carga y acarreo de escombro | 2d | 2026-10-03 | 2026-10-06 | 997 | 2026-09-21 | 2026-09-23 | 2d | 2026-09-21 | 2026-09-23 | 58d | 1d |
| 999 | 1.5.12 | **IMPERMEABILIZACION** | 5d | 2026-10-26 | 2026-10-30 |  | 2026-10-12 | 2026-10-17 | 5d | 2026-10-12 | 2026-10-17 | 6d |  |
| 1000 | 1.5.12.1 | Impermeabilización de pretil Kover 5 años | 4d | 2026-10-26 | 2026-10-29 | 994 | 2026-10-12 | 2026-10-16 | 4d | 2026-10-12 | 2026-10-16 | 7d | 1d |
| 1001 | 1.5.12.2 | Impermeabilización de losa Kover 5 años | 5d | 2026-10-26 | 2026-10-30 | 994 | 2026-10-12 | 2026-10-17 | 5d | 2026-10-12 | 2026-10-17 | 6d | 0d |
| 1002 | 1.5.13 | **ALBAÑILERIA** | 62d | 2026-10-07 | 2026-12-28 |  | 2026-09-24 | 2026-12-11 | 62d | 2026-09-24 | 2026-12-11 | 25d |  |
| 1003 | 1.5.13.1 | Lavadero de granito | 4d | 2026-11-21 | 2026-11-26 | 1027SS+8d | 2026-11-06 | 2026-11-11 | 4d | 2026-11-06 | 2026-11-11 | 57d |  |
| 1004 | 1.5.13.2 | Ramaleo hidráulico exterior CPVC 1 1/4 | 3d | 2026-10-31 | 2026-11-04 | 1000, 1001 | 2026-10-17 | 2026-10-21 | 3d | 2026-10-17 | 2026-10-21 | 6d | 0d |
| 1005 | 1.5.13.3 | Ramaleo hidráulico exterior CPVC 1 | 2d | 2026-10-31 | 2026-11-03 | 1004SS | 2026-10-17 | 2026-10-20 | 2d | 2026-10-17 | 2026-10-20 | 6d | 0d |
| 1006 | 1.5.13.4 | Ramaleo hidráulico exterior CPVC 3/4 | 2d | 2026-11-03 | 2026-11-05 | 1005 | 2026-10-20 | 2026-10-22 | 2d | 2026-10-20 | 2026-10-22 | 6d | 0d |
| 1007 | 1.5.13.5 | Ramaleo hidráulico exterior CPVC 1/2 | 2d | 2026-11-03 | 2026-11-05 | 1005 | 2026-10-20 | 2026-10-22 | 2d | 2026-10-20 | 2026-10-22 | 6d | 0d |
| 1008 | 1.5.13.6 | Prueba hidráulica | 1d | 2026-11-05 | 2026-11-06 | 1004, 1005, 1006, 1007 | 2026-10-22 | 2026-10-23 | 1d | 2026-10-22 | 2026-10-23 | 6d | 0d |
| 1009 | 1.5.13.7 | Ramaleo sanitario exterior PVC 4 | 4d | 2026-10-31 | 2026-11-05 | 1000, 1001 | 2026-10-17 | 2026-10-22 | 4d | 2026-10-17 | 2026-10-22 | 6d | 0d |
| 1010 | 1.5.13.8 | Ramaleo sanitario exterior PVC 2 | 3d | 2026-11-02 | 2026-11-05 | 1009SS+1d | 2026-10-19 | 2026-10-22 | 3d | 2026-10-19 | 2026-10-22 | 6d | 0d |
| 1011 | 1.5.13.9 | Prueba sanitaria | 1d | 2026-11-05 | 2026-11-06 | 1009, 1010 | 2026-10-22 | 2026-10-23 | 1d | 2026-10-22 | 2026-10-23 | 6d | 0d |
| 1012 | 1.5.13.10 | Centro de carga muros PB | 4d | 2026-11-04 | 2026-11-09 | 1000FS+3d, 1001FS+3d | 2026-10-21 | 2026-10-26 | 4d | 2026-10-21 | 2026-10-26 | 8d | 2d |
| 1013 | 1.5.13.11 | Firme de concreto 8 cm | 4d | 2026-11-06 | 2026-11-11 | 1008, 1011, 1015 | 2026-10-23 | 2026-10-28 | 4d | 2026-10-23 | 2026-10-28 | 51d | 0d |
| 1014 | 1.5.13.12 | Curado de concreto | 1d | 2026-11-11 | 2026-11-12 | 1013 | 2026-10-29 | 2026-10-29 | 1d | 2026-10-29 | 2026-10-29 | 51d | 17d |
| 1015 | 1.5.13.13 | Cisterna 2800 L con instalación | 18d | 2026-10-07 | 2026-10-29 | 991, 997, 998 | 2026-09-24 | 2026-10-16 | 18d | 2026-09-24 | 2026-10-16 | 57d | 0d |
| 1016 | 1.5.13.14 | Banqueta y huellas de concreto | 8d | 2026-11-13 | 2026-11-25 | 1008, 1011, 1049, 1104FS-2d, 1110 | 2026-10-31 | 2026-11-10 | 8d | 2026-10-31 | 2026-11-10 | 34d | 0d |
| 1017 | 1.5.13.15 | Curado de concreto | 1d | 2026-11-25 | 2026-11-26 | 1016 | 2026-11-10 | 2026-11-11 | 1d | 2026-11-10 | 2026-11-11 | 34d | 0d |
| 1018 | 1.5.13.16 | Número oficial | 1d | 2026-12-26 | 2026-12-28 | 1024, 1025 | 2026-12-10 | 2026-12-11 | 1d | 2026-12-10 | 2026-12-11 | 34d |  |
| 1019 | 1.5.13.17 | Detallado de rodapié exterior | 4d | 2026-11-09 | 2026-11-13 | 1022 | 2026-10-27 | 2026-10-30 | 4d | 2026-10-27 | 2026-10-30 | 66d |  |
| 1020 | 1.5.13.18 | Detallado de muros interiores | 4d | 2026-10-31 | 2026-11-05 | 1000, 1001 | 2026-10-17 | 2026-10-22 | 4d | 2026-10-17 | 2026-10-22 | 10d | 4d |

| ID | WBS | Task | Duration | Start | Finish | Predecessors | Baseline start | Baseline finish | Baseline duration | Baseline 1 start | Baseline 1 finish | Total slack | Free slack |
| --- | --- | --- | --- | --- | --- | --- | --- | --- | --- | --- | --- | --- | --- |
| 1021 | 1.5.14 | **ACABADOS EN FACHADA A** | 47d | 2026-10-26 | 2026-12-23 |  | 2026-10-12 | 2026-12-10 | 47d | 2026-10-12 | 2026-12-10 | 35d |  |
| 1022 | 1.5.14.1 | Aplanado grueso fachada | 12d | 2026-10-26 | 2026-11-09 | 994 | 2026-10-12 | 2026-10-26 | 12d | 2026-10-12 | 2026-10-26 | 65d | 0d |
| 1023 | 1.5.14.2 | Aplanado fino estuco fachada | 10d | 2026-11-03 | 2026-11-17 | 1022SS+7d | 2026-10-20 | 2026-11-02 | 10d | 2026-10-20 | 2026-11-02 | 65d |  |
| 1024 | 1.5.14.3 | Pintura acrílica 1-0102P | 8d | 2026-12-11 | 2026-12-21 | 1014FS+5d, 1017FS+12d | 2026-11-27 | 2026-12-08 | 8d | 2026-11-27 | 2026-12-08 | 36d | 2d |
| 1025 | 1.5.14.4 | Pintura acrílica 1-1404D | 10d | 2026-12-11 | 2026-12-23 | 1014FS+5d, 1017FS+12d | 2026-11-27 | 2026-12-10 | 10d | 2026-11-27 | 2026-12-10 | 34d | 0d |
| 1026 | 1.5.15 | **APLANADOS Y PINTURA** | 63d | 2026-10-31 | 2027-01-23 |  | 2026-10-17 | 2027-01-11 | 63d | 2026-10-17 | 2027-01-11 | 8d |  |
| 1027 | 1.5.15.1 | Yeso pulido en muros | 14d | 2026-11-10 | 2026-11-28 | 1012FS-1d, 1020, 1030FS-4d, 1084FS-2d, 1085, 1086, 1087, 1088, 1089FS-1d, 1090FS-1d, 1091FS-1d, 1092FS-1d, 1093FS-2d, 1094FS-2d, 1095FS-3d, 1098FS-1d, 1099FS-5d, 1100FS-5d, 1101FS-6d, 1102FS-2d, 1103FS-7d | 2026-10-28 | 2026-11-13 | 14d | 2026-10-28 | 2026-11-13 | 6d | 0d |
| 1028 | 1.5.15.2 | Pintura vinílica 699 Cottage White | 13d | 2027-01-07 | 2027-01-23 | 1035FS-2d, 1036FS-2d, 1047FS-2d, 1054, 1055, 1056, 1057, 1058, 1059, 1061, 1062, 1063, 1064, 1113, 1114, 1115, 1116 | 2026-12-21 | 2027-01-11 | 13d | 2026-12-21 | 2027-01-11 | 6d | 0d |
| 1029 | 1.5.15.3 | Pintura vinílica 691 Pacific Bungalow | 10d | 2026-12-23 | 2027-01-08 | 1035, 1036, 1047 | 2026-12-09 | 2026-12-21 | 10d | 2026-12-09 | 2026-12-21 | 26d |  |
| 1030 | 1.5.15.4 | Yeso pulido en plafones | 10d | 2026-10-31 | 2026-11-12 | 1000, 1001 | 2026-10-17 | 2026-10-29 | 10d | 2026-10-17 | 2026-10-29 | 8d | 2d |
| 1031 | 1.5.15.5 | Pintura vinílica Nano White | 7d | 2026-12-29 | 2027-01-08 | 1035FS+3d, 1036FS+3d, 1047FS+3d | 2026-12-12 | 2026-12-21 | 7d | 2026-12-12 | 2026-12-21 | 26d |  |
| 1032 | 1.5.15.6 | Perfilado de puertas y ventanas | 4d | 2026-11-17 | 2026-11-21 | 1027SS+4d | 2026-11-02 | 2026-11-06 | 4d | 2026-11-02 | 2026-11-06 | 61d |  |
| 1033 | 1.5.16 | **PISOS Y AZULEJOS** | 23d | 2026-11-24 | 2026-12-22 |  | 2026-11-09 | 2026-12-09 | 23d | 2026-11-09 | 2026-12-09 | 8d |  |
| 1034 | 1.5.16.1 | **AREA SOCIAL** | 15d | 2026-11-26 | 2026-12-15 |  | 2026-11-11 | 2026-12-01 | 15d | 2026-11-11 | 2026-12-01 | 6d |  |
| 1035 | 1.5.16.1.1 | Piso Moonside Crema 60x60 | 14d | 2026-11-26 | 2026-12-14 | 1027FS-2d, 1106, 1105 | 2026-11-11 | 2026-11-30 | 14d | 2026-11-11 | 2026-11-30 | 6d | 0d |
| 1036 | 1.5.16.1.2 | Zoclo piso 60x60 Moonside Crema | 5d | 2026-12-09 | 2026-12-15 | 1035FS-4d | 2026-11-25 | 2026-12-01 | 5d | 2026-11-25 | 2026-12-01 | 23d | 6d |
| 1037 | 1.5.16.2 | **BAÑOS** | 17d | 2026-11-24 | 2026-12-15 |  | 2026-11-09 | 2026-12-01 | 17d | 2026-11-09 | 2026-12-01 | 17d |  |
| 1038 | 1.5.16.2.1 | Piso Moonside Crema 60x60 | 4d | 2026-12-09 | 2026-12-14 | 1042 | 2026-11-25 | 2026-11-30 | 4d | 2026-11-25 | 2026-11-30 | 17d | 0d |
| 1039 | 1.5.16.2.2 | Zoclo piso 60x60 Moonside Crema | 2d | 2026-12-12 | 2026-12-15 | 1038FS-1d | 2026-11-28 | 2026-12-01 | 2d | 2026-11-28 | 2026-12-01 | 42d |  |
| 1040 | 1.5.16.2.3 | Piso porcelánico Acali 20x20 beige | 3d | 2026-12-09 | 2026-12-12 | 1042 | 2026-11-25 | 2026-11-28 | 3d | 2026-11-25 | 2026-11-28 | 44d |  |
| 1041 | 1.5.16.2.4 | Impermeabilización en regadera | 2d | 2026-12-01 | 2026-12-03 | 1027, 1043 | 2026-11-18 | 2026-11-20 | 2d | 2026-11-18 | 2026-11-20 | 17d | 0d |
| 1042 | 1.5.16.2.5 | Azulejo Moonside Crema 60x60 | 5d | 2026-12-02 | 2026-12-09 | 1041FS-1d, 1096, 1097, 1106 | 2026-11-19 | 2026-11-25 | 5d | 2026-11-19 | 2026-11-25 | 17d | 0d |
| 1043 | 1.5.16.2.6 | Fabricacion de nicho decorativo en baños | 6d | 2026-11-24 | 2026-12-01 | 1027FS-4d | 2026-11-09 | 2026-11-18 | 6d | 2026-11-09 | 2026-11-18 | 17d | 0d |
| 1044 | 1.5.16.2.7 | Sardinel en regadera | 4d | 2026-12-09 | 2026-12-14 | 1042 | 2026-11-25 | 2026-11-30 | 4d | 2026-11-25 | 2026-11-30 | 43d |  |

| ID | WBS | Task | Duration | Start | Finish | Predecessors | Baseline start | Baseline finish | Baseline duration | Baseline 1 start | Baseline 1 finish | Total slack | Free slack |
| --- | --- | --- | --- | --- | --- | --- | --- | --- | --- | --- | --- | --- | --- |
| 1045 | 1.5.16.3 | **ESCALERA** | 9d | 2026-12-11 | 2026-12-22 |  | 2026-11-27 | 2026-12-09 | 9d | 2026-11-27 | 2026-12-09 | 6d |  |
| 1046 | 1.5.16.3.1 | Piso Moonside Crema 60x60 | 7d | 2026-12-11 | 2026-12-19 | 1027, 1035FS-2d | 2026-11-27 | 2026-12-07 | 7d | 2026-11-27 | 2026-12-07 | 6d | 0d |
| 1047 | 1.5.16.3.2 | Zoclo piso 60x60 Moonside Crema | 4d | 2026-12-17 | 2026-12-22 | 1046FS-2d | 2026-12-03 | 2026-12-09 | 4d | 2026-12-03 | 2026-12-09 | 6d | 0d |
| 1048 | 1.5.17 | **EXTERIOR** | 3d | 2026-11-06 | 2026-11-10 |  | 2026-10-23 | 2026-10-27 | 3d | 2026-10-23 | 2026-10-27 | 12d |  |
| 1049 | 1.5.17.1 | Rastrilleo, afine y nivelado de tierra | 3d | 2026-11-06 | 2026-11-10 | 1008, 1011 | 2026-10-23 | 2026-10-27 | 3d | 2026-10-23 | 2026-10-27 | 12d | 0d |
| 1050 | 1.5.18 | **SEGUNDA LIMPIEZA DE OBRA** | 4d | 2026-12-23 | 2026-12-30 |  | 2026-12-09 | 2026-12-14 | 4d | 2026-12-09 | 2026-12-14 | 24d |  |
| 1051 | 1.5.18.1 | Segunda limpieza de obra | 2d | 2026-12-23 | 2026-12-28 | 1046, 1047 | 2026-12-09 | 2026-12-11 | 2d | 2026-12-09 | 2026-12-11 | 24d | 0d |
| 1052 | 1.5.18.2 | Segunda carga y acarreo de escombro | 2d | 2026-12-28 | 2026-12-30 | 1051 | 2026-12-11 | 2026-12-14 | 2d | 2026-12-11 | 2026-12-14 | 24d | 18d |
| 1053 | 1.5.19 | **CANCELERIA PUERTAS Y VENTANAS DE ALUMINIO** | 13d | 2026-12-11 | 2026-12-30 |  | 2026-11-27 | 2026-12-14 | 13d | 2026-11-27 | 2026-12-14 | 11d |  |
| 1054 | 1.5.19.1 | Puerta ventana P-05 corrediza | 7d | 2026-12-14 | 2026-12-22 | 1027, 1035 | 2026-11-30 | 2026-12-09 | 7d | 2026-11-30 | 2026-12-09 | 15d | 9d |
| 1055 | 1.5.19.2 | Ventana corrediza V-01 | 4d | 2026-12-11 | 2026-12-16 | 1027FS+10d | 2026-11-27 | 2026-12-02 | 4d | 2026-11-27 | 2026-12-02 | 20d | 14d |
| 1056 | 1.5.19.3 | Ventana corrediza V-03 | 4d | 2026-12-14 | 2026-12-18 | 1027FS+12d | 2026-11-30 | 2026-12-04 | 4d | 2026-11-30 | 2026-12-04 | 18d | 12d |
| 1057 | 1.5.19.4 | Ventana corrediza V-05 | 4d | 2026-12-14 | 2026-12-18 | 1027FS+12d | 2026-11-30 | 2026-12-04 | 4d | 2026-11-30 | 2026-12-04 | 18d | 12d |
| 1058 | 1.5.19.5 | Ventana corrediza tipo XO | 4d | 2026-12-17 | 2026-12-22 | 1027FS+10d, 1035FS+3d | 2026-12-03 | 2026-12-09 | 4d | 2026-12-03 | 2026-12-09 | 15d | 9d |
| 1059 | 1.5.19.6 | Ventana fija escalera | 6d | 2026-12-21 | 2026-12-30 | 1027FS+7d, 1035FS+2d, 1046 | 2026-12-07 | 2026-12-14 | 6d | 2026-12-07 | 2026-12-14 | 11d | 5d |
| 1060 | 1.5.20 | **CARPINTERIA, PUERTAS EXTERIORES E INTERIORES** | 9d | 2026-12-23 | 2027-01-07 |  | 2026-12-09 | 2026-12-19 | 9d | 2026-12-09 | 2026-12-19 | 6d |  |
| 1061 | 1.5.20.1 | Puerta P-01 de seguridad | 5d | 2026-12-23 | 2027-01-02 | 1047 | 2026-12-09 | 2026-12-15 | 5d | 2026-12-09 | 2026-12-15 | 10d | 4d |
| 1062 | 1.5.20.2 | Puerta P-03 interior | 8d | 2026-12-23 | 2027-01-06 | 1047 | 2026-12-09 | 2026-12-18 | 8d | 2026-12-09 | 2026-12-18 | 7d | 1d |
| 1063 | 1.5.20.3 | Puerta P-02 interior | 8d | 2026-12-23 | 2027-01-06 | 1047 | 2026-12-09 | 2026-12-18 | 8d | 2026-12-09 | 2026-12-18 | 7d | 1d |
| 1064 | 1.5.20.4 | Puerta exterior lavandería | 4d | 2027-01-02 | 2027-01-07 | 1047FS+5d | 2026-12-15 | 2026-12-19 | 4d | 2026-12-15 | 2026-12-19 | 6d | 0d |
| 1065 | 1.5.21 | **INSTALACION ELECTRICA** | 19d | 2026-11-20 | 2026-12-14 |  | 2026-11-05 | 2026-11-30 | 19d | 2026-11-05 | 2026-11-30 | 35d |  |
| 1066 | 1.5.21.1 | Alimentación eléctrica base a centro de carga | 5d | 2026-11-28 | 2026-12-04 | 1012, 1027 | 2026-11-13 | 2026-11-21 | 5d | 2026-11-13 | 2026-11-21 | 39d | 0d |
| 1067 | 1.5.21.2 | Interruptor termomagnético 1x15 A | 1d | 2026-12-04 | 2026-12-07 | 1066 | 2026-11-21 | 2026-11-23 | 1d | 2026-11-21 | 2026-11-23 | 39d | 4d |
| 1068 | 1.5.21.3 | Interruptor termomagnético 1x20 A | 1d | 2026-12-04 | 2026-12-07 | 1066 | 2026-11-21 | 2026-11-23 | 1d | 2026-11-21 | 2026-11-23 | 39d | 4d |
| 1069 | 1.5.21.4 | Interruptor termomagnético 2x20 A | 1d | 2026-12-04 | 2026-12-07 | 1066 | 2026-11-21 | 2026-11-23 | 1d | 2026-11-21 | 2026-11-23 | 39d | 4d |
| 1070 | 1.5.21.5 | Salida para apagador 3 vías | 4d | 2026-11-24 | 2026-11-28 | 1000, 1027FS-4d | 2026-11-09 | 2026-11-13 | 4d | 2026-11-09 | 2026-11-13 | 35d | 0d |
| 1071 | 1.5.21.6 | Salida para apagador triple | 3d | 2026-11-28 | 2026-12-02 | 1000, 1001, 1027 | 2026-11-13 | 2026-11-19 | 3d | 2026-11-13 | 2026-11-19 | 39d | 0d |
| 1072 | 1.5.21.7 | Salida para apagador doble | 3d | 2026-12-02 | 2026-12-07 | 1070, 1071 | 2026-11-19 | 2026-11-23 | 3d | 2026-11-19 | 2026-11-23 | 39d | 4d |
| 1073 | 1.5.21.8 | Salida para apagador sencillo | 3d | 2026-11-28 | 2026-12-02 | 1070 | 2026-11-13 | 2026-11-19 | 3d | 2026-11-13 | 2026-11-19 | 42d | 7d |
| 1074 | 1.5.21.9 | Salida de alumbrado en losa | 5d | 2026-11-28 | 2026-12-04 | 1070 | 2026-11-13 | 2026-11-21 | 5d | 2026-11-13 | 2026-11-21 | 37d | 0d |
| 1075 | 1.5.21.10 | Salida de alumbrado en muro | 4d | 2026-11-28 | 2026-12-03 | 1070 | 2026-11-13 | 2026-11-20 | 4d | 2026-11-13 | 2026-11-20 | 41d | 6d |
| 1076 | 1.5.21.11 | Salida para contacto 220 V | 3d | 2026-12-01 | 2026-12-04 | 1070FS+2d | 2026-11-18 | 2026-11-21 | 3d | 2026-11-18 | 2026-11-21 | 35d | 0d |
| 1077 | 1.5.21.12 | Salida para contacto doble | 5d | 2026-12-01 | 2026-12-08 | 1070FS+2d | 2026-11-18 | 2026-11-24 | 5d | 2026-11-18 | 2026-11-24 | 38d | 3d |
| 1078 | 1.5.21.13 | Salida para contacto doble área húmeda | 2d | 2026-12-04 | 2026-12-08 | 1076 | 2026-11-21 | 2026-11-24 | 2d | 2026-11-21 | 2026-11-24 | 38d | 3d |
| 1079 | 1.5.21.14 | Salida TV / telefonía / intercom | 4d | 2026-12-04 | 2026-12-10 | 1076 | 2026-11-21 | 2026-11-26 | 4d | 2026-11-21 | 2026-11-26 | 36d | 1d |
| 1080 | 1.5.21.15 | Extractor 4 baño | 5d | 2026-12-04 | 2026-12-11 | 1076 | 2026-11-21 | 2026-11-27 | 5d | 2026-11-21 | 2026-11-27 | 35d | 0d |
| 1081 | 1.5.21.16 | Prueba eléctrica | 2d | 2026-12-11 | 2026-12-14 | 1066, 1067, 1068, 1069, 1070, 1071, 1072, 1073, 1074, 1075, 1076, 1077, 1078, 1079, 1080, 1082, 1129, 1130, 1131 | 2026-11-27 | 2026-11-30 | 2d | 2026-11-27 | 2026-11-30 | 35d | 29d |
| 1082 | 1.5.21.17 | Murete convencional | 4d | 2026-11-20 | 2026-11-25 | 1016FS-4d | 2026-11-05 | 2026-11-10 | 4d | 2026-11-05 | 2026-11-10 | 48d | 13d |

| ID | WBS | Task | Duration | Start | Finish | Predecessors | Baseline start | Baseline finish | Baseline duration | Baseline 1 start | Baseline 1 finish | Total slack | Free slack |
| --- | --- | --- | --- | --- | --- | --- | --- | --- | --- | --- | --- | --- | --- |
| 1083 | 1.5.22 | **INSTALACIÓN HIDRO-SANITARIA** | 11d | 2026-11-06 | 2026-11-21 |  | 2026-10-23 | 2026-11-06 | 11d | 2026-10-23 | 2026-11-06 | 6d |  |
| 1084 | 1.5.22.1 | Tubo PVC 3/4 red de condensados | 5d | 2026-11-06 | 2026-11-12 | 1008 | 2026-10-23 | 2026-10-29 | 5d | 2026-10-23 | 2026-10-29 | 6d | 0d |
| 1085 | 1.5.22.2 | Caja PVC para lavadora | 3d | 2026-11-06 | 2026-11-10 | 1008 | 2026-10-23 | 2026-10-27 | 3d | 2026-10-23 | 2026-10-27 | 6d | 0d |
| 1086 | 1.5.22.3 | Salida para secadora PVC 4 | 3d | 2026-11-06 | 2026-11-10 | 1011 | 2026-10-23 | 2026-10-27 | 3d | 2026-10-23 | 2026-10-27 | 6d | 0d |
| 1087 | 1.5.22.4 | Salida hidráulica para boiler | 2d | 2026-11-06 | 2026-11-09 | 1008 | 2026-10-23 | 2026-10-26 | 2d | 2026-10-23 | 2026-10-26 | 7d | 1d |
| 1088 | 1.5.22.5 | Salida hidráulica para llave de jardín | 3d | 2026-11-06 | 2026-11-10 | 1008 | 2026-10-23 | 2026-10-27 | 3d | 2026-10-23 | 2026-10-27 | 6d | 0d |
| 1089 | 1.5.22.6 | Salida hidráulica para lavabo | 4d | 2026-11-06 | 2026-11-11 | 1008 | 2026-10-23 | 2026-10-28 | 4d | 2026-10-23 | 2026-10-28 | 6d | 0d |
| 1090 | 1.5.22.7 | Salida hidráulica para purificación | 4d | 2026-11-06 | 2026-11-11 | 1008 | 2026-10-23 | 2026-10-28 | 4d | 2026-10-23 | 2026-10-28 | 6d | 0d |
| 1091 | 1.5.22.8 | Salida sanitaria para lavabo | 2d | 2026-11-09 | 2026-11-11 | 1008FS+2d | 2026-10-27 | 2026-10-28 | 2d | 2026-10-27 | 2026-10-28 | 6d | 0d |
| 1092 | 1.5.22.9 | Salida hidráulica para lavadero | 2d | 2026-11-09 | 2026-11-11 | 1008FS+2d | 2026-10-27 | 2026-10-28 | 2d | 2026-10-27 | 2026-10-28 | 6d | 0d |
| 1093 | 1.5.22.10 | Salida sanitaria para lavadero | 2d | 2026-11-10 | 2026-11-12 | 1008FS+3d | 2026-10-28 | 2026-10-29 | 2d | 2026-10-28 | 2026-10-29 | 6d | 0d |
| 1094 | 1.5.22.11 | Salida hidráulica para lavadora | 2d | 2026-11-10 | 2026-11-12 | 1008FS+3d | 2026-10-28 | 2026-10-29 | 2d | 2026-10-28 | 2026-10-29 | 6d | 0d |
| 1095 | 1.5.22.12 | Salida sanitaria para lavadora | 2d | 2026-11-11 | 2026-11-13 | 1011FS+4d | 2026-10-29 | 2026-10-30 | 2d | 2026-10-29 | 2026-10-30 | 6d | 0d |
| 1096 | 1.5.22.13 | Salida hidráulica para regadera | 5d | 2026-11-11 | 2026-11-19 | 1008FS+4d | 2026-10-29 | 2026-11-04 | 5d | 2026-10-29 | 2026-11-04 | 11d | 0d |
| 1097 | 1.5.22.14 | Salida sanitaria para regadera | 4d | 2026-11-11 | 2026-11-18 | 1011FS+4d | 2026-10-29 | 2026-11-03 | 4d | 2026-10-29 | 2026-11-03 | 12d | 2d |
| 1098 | 1.5.22.15 | Salida hidráulica para WC | 2d | 2026-11-09 | 2026-11-11 | 1011FS+2d | 2026-10-27 | 2026-10-28 | 2d | 2026-10-27 | 2026-10-28 | 6d | 0d |
| 1099 | 1.5.22.16 | Salida sanitaria para WC | 4d | 2026-11-11 | 2026-11-18 | 1011FS+4d | 2026-10-29 | 2026-11-03 | 4d | 2026-10-29 | 2026-11-03 | 6d | 0d |
| 1100 | 1.5.22.17 | Salida hidráulica para zinc | 4d | 2026-11-11 | 2026-11-18 | 1011FS+4d | 2026-10-29 | 2026-11-03 | 4d | 2026-10-29 | 2026-11-03 | 6d | 0d |
| 1101 | 1.5.22.18 | Salida sanitaria para zinc | 3d | 2026-11-13 | 2026-11-19 | 1011FS+6d | 2026-10-31 | 2026-11-04 | 3d | 2026-10-31 | 2026-11-04 | 6d | 0d |
| 1102 | 1.5.22.19 | Tubo para ventila de baño 2 | 5d | 2026-11-06 | 2026-11-12 | 1084SS | 2026-10-23 | 2026-10-29 | 5d | 2026-10-23 | 2026-10-29 | 6d | 0d |
| 1103 | 1.5.22.20 | Tubo para minisplit PVC 3 | 5d | 2026-11-12 | 2026-11-20 | 1102 | 2026-10-30 | 2026-11-05 | 5d | 2026-10-30 | 2026-11-05 | 6d | 0d |
| 1104 | 1.5.22.21 | Cuadro de medición | 5d | 2026-11-10 | 2026-11-18 | 1049 | 2026-10-28 | 2026-11-03 | 5d | 2026-10-28 | 2026-11-03 | 12d | 0d |
| 1105 | 1.5.22.22 | Prueba sanitaria | 1d | 2026-11-20 | 2026-11-21 | 1086, 1091, 1093, 1095, 1097, 1099, 1102, 1103 | 2026-11-05 | 2026-11-06 | 1d | 2026-11-05 | 2026-11-06 | 10d | 4d |
| 1106 | 1.5.22.23 | Prueba hidráulica | 1d | 2026-11-19 | 2026-11-20 | 1084, 1087, 1088, 1089, 1090, 1092, 1094, 1096, 1098, 1100, 1104, 1107, 1108 | 2026-11-04 | 2026-11-05 | 1d | 2026-11-04 | 2026-11-05 | 11d | 5d |
| 1107 | 1.5.22.24 | Salida hidráulica para tanque hidroneumático | 3d | 2026-11-10 | 2026-11-13 | 1049 | 2026-10-28 | 2026-10-30 | 3d | 2026-10-28 | 2026-10-30 | 14d | 3d |
| 1108 | 1.5.22.25 | Salida hidráulica para Active Driver | 3d | 2026-11-10 | 2026-11-13 | 1049 | 2026-10-28 | 2026-10-30 | 3d | 2026-10-28 | 2026-10-30 | 14d | 3d |

| ID | WBS | Task | Duration | Start | Finish | Predecessors | Baseline start | Baseline finish | Baseline duration | Baseline 1 start | Baseline 1 finish | Total slack | Free slack |
| --- | --- | --- | --- | --- | --- | --- | --- | --- | --- | --- | --- | --- | --- |
| 1109 | 1.5.23 | **INSTALACION DE GAS** | 8d | 2026-11-04 | 2026-11-13 |  | 2026-10-21 | 2026-10-30 | 8d | 2026-10-21 | 2026-10-30 | 34d |  |
| 1110 | 1.5.23.1 | Ramaleo para gas 1/2 | 5d | 2026-11-07 | 2026-11-13 | 1049FS-2d, 1111 | 2026-10-26 | 2026-10-30 | 5d | 2026-10-26 | 2026-10-30 | 34d | 0d |
| 1111 | 1.5.23.2 | Excavación a mano material tipo B | 3d | 2026-11-04 | 2026-11-07 | 1049FF-2d | 2026-10-21 | 2026-10-24 | 3d | 2026-10-21 | 2026-10-24 | 34d | 0d |
| 1112 | 1.5.24 | **MUEBLES SANITARIOS** | 29d | 2026-12-14 | 2027-01-23 |  | 2026-11-30 | 2027-01-11 | 29d | 2026-11-30 | 2027-01-11 | 6d |  |
| 1113 | 1.5.24.1 | WC one piece Smart Corona | 2d | 2026-12-14 | 2026-12-16 | 1035, 1038, 1105, 1106 | 2026-11-30 | 2026-12-02 | 2d | 2026-11-30 | 2026-12-02 | 20d | 14d |
| 1114 | 1.5.24.2 | Lavabo Tarento Vanity | 4d | 2026-12-14 | 2026-12-18 | 1035, 1038, 1042, 1105, 1106 | 2026-11-30 | 2026-12-04 | 4d | 2026-11-30 | 2026-12-04 | 18d | 12d |
| 1115 | 1.5.24.3 | Regadera y monomando Thames | 3d | 2026-12-16 | 2026-12-19 | 1035, 1038FS+2d, 1042FS+2d, 1105, 1106 | 2026-12-02 | 2026-12-07 | 3d | 2026-12-02 | 2026-12-07 | 17d | 11d |
| 1116 | 1.5.24.4 | Coladera cuadrada para inserto cerámico | 2d | 2026-12-17 | 2026-12-19 | 1038FS+3d, 1042, 1106 | 2026-12-03 | 2026-12-07 | 2d | 2026-12-03 | 2026-12-07 | 17d | 11d |
| 1117 | 1.5.24.5 | Toallero argolla Thames | 1d | 2027-01-22 | 2027-01-23 | 1028FS-1d | 2027-01-08 | 2027-01-11 | 1d | 2027-01-08 | 2027-01-11 | 6d | 0d |
| 1118 | 1.5.24.6 | Toallero barra Thames | 1d | 2027-01-22 | 2027-01-23 | 1028FS-1d | 2027-01-08 | 2027-01-11 | 1d | 2027-01-08 | 2027-01-11 | 6d | 0d |
| 1119 | 1.5.24.7 | Portapapel Thames | 1d | 2027-01-22 | 2027-01-23 | 1028FS-1d | 2027-01-08 | 2027-01-11 | 1d | 2027-01-08 | 2027-01-11 | 6d | 0d |
| 1120 | 1.5.24.8 | Gancho percha Thames | 1d | 2027-01-22 | 2027-01-23 | 1028FS-1d | 2027-01-08 | 2027-01-11 | 1d | 2027-01-08 | 2027-01-11 | 6d | 0d |
| 1121 | 1.5.25 | **EQUIPAMIENTO** | 6d | 2026-10-29 | 2026-11-05 |  | 2026-10-15 | 2026-10-22 | 6d | 2026-10-15 | 2026-10-22 | 65d |  |
| 1122 | 1.5.25.1 | Electronivel Rotoplas 5 m | 2d | 2026-10-30 | 2026-11-02 | 1127 | 2026-10-16 | 2026-10-19 | 2d | 2026-10-16 | 2026-10-19 | 68d | 62d |
| 1123 | 1.5.25.2 | Manómetro | 1d | 2026-10-30 | 2026-10-30 | 1127 | 2026-10-16 | 2026-10-17 | 1d | 2026-10-16 | 2026-10-17 | 69d | 63d |
| 1124 | 1.5.25.3 | Interruptor de presión 30-50 PSI | 1d | 2026-10-30 | 2026-10-30 | 1127 | 2026-10-16 | 2026-10-17 | 1d | 2026-10-16 | 2026-10-17 | 69d | 63d |
| 1125 | 1.5.25.4 | Tanque hidroneumático FPS-24LX | 3d | 2026-10-30 | 2026-11-03 | 1127 | 2026-10-16 | 2026-10-20 | 3d | 2026-10-16 | 2026-10-20 | 65d | 0d |
| 1126 | 1.5.25.5 | Bomba sumergible Dominator 1.2 HP | 2d | 2026-11-03 | 2026-11-05 | 1125 | 2026-10-20 | 2026-10-22 | 2d | 2026-10-20 | 2026-10-22 | 65d | 59d |
| 1127 | 1.5.25.6 | Cisterna prefabricada 2800 L | 1d | 2026-10-29 | 2026-10-29 | 1015FF | 2026-10-15 | 2026-10-16 | 1d | 2026-10-15 | 2026-10-16 | 65d | 0d |
| 1128 | 1.5.26 | **LUMINARIAS** | 3d | 2026-12-04 | 2026-12-09 |  | 2026-11-21 | 2026-11-25 | 3d | 2026-11-21 | 2026-11-25 | 37d |  |
| 1129 | 1.5.26.1 | Roseta de cerámica para luminaria | 3d | 2026-12-04 | 2026-12-09 | 1074 | 2026-11-21 | 2026-11-25 | 3d | 2026-11-21 | 2026-11-25 | 37d | 2d |
| 1130 | 1.5.26.2 | Spot Brighton | 3d | 2026-12-04 | 2026-12-09 | 1074 | 2026-11-21 | 2026-11-25 | 3d | 2026-11-21 | 2026-11-25 | 37d | 2d |
| 1131 | 1.5.26.3 | Arbotante bidireccional 12W | 2d | 2026-12-04 | 2026-12-08 | 1074 | 2026-11-21 | 2026-11-24 | 2d | 2026-11-21 | 2026-11-24 | 38d | 3d |
| 1132 | 1.5.27 | **TERCER LIMPIEZA DE OBRA** | 8d | 2027-01-23 | 2027-02-03 |  | 2027-01-11 | 2027-01-20 | 8d | 2027-01-11 | 2027-01-20 | 6d |  |
| 1133 | 1.5.27.1 | Limpieza fina para entrega | 5d | 2027-01-23 | 2027-01-29 | 1028, 1052, 1059, 1064, 1081, 1105, 1106, 1117, 1118, 1119, 1120, 1122, 1123, 1124, 1125, 1126, 1137 | 2027-01-11 | 2027-01-16 | 5d | 2027-01-11 | 2027-01-16 | 6d | 0d |
| 1134 | 1.5.27.2 | Tercera limpieza de obra | 4d | 2027-01-26 | 2027-02-01 | 1133FS-3d | 2027-01-13 | 2027-01-18 | 4d | 2027-01-13 | 2027-01-18 | 6d | 0d |
| 1135 | 1.5.27.3 | Tercera carga y acarreo de escombro | 4d | 2027-01-28 | 2027-02-03 | 1134FS-2d | 2027-01-15 | 2027-01-20 | 4d | 2027-01-15 | 2027-01-20 | 6d | 0d |

| ID | WBS | Task | Type | Duration | Start | Finish | Predecessors | Complete | Remaining | Baseline start | Baseline finish | Baseline duration | Baseline 1 start | Baseline 1 finish | Total slack | Free slack |
| --- | --- | --- | --- | --- | --- | --- | --- | --- | --- | --- | --- | --- | --- | --- | --- | --- |
| 1136 | 1.5.28 | **OBRA EXTERIOR - BARDA** |  | 18d | 2026-11-10 | 2026-12-03 |  |  |  | 2026-10-28 | 2026-11-20 | 18d | 2026-10-28 | 2026-11-20 | 43d |  |
| 1137 | 1.5.28.1 | Barda de block aparente |  | 18d | 2026-11-10 | 2026-12-03 | 1049 |  |  | 2026-10-28 | 2026-11-20 | 18d | 2026-10-28 | 2026-11-20 | 43d | 37d |
| 1138 | 1.6 | **LOTE 21 M-663 CORSAC-A** |  | 190d | 2026-06-10 A | 2027-02-09 |  | 4% | 182.25d | 2026-05-29 | 2027-01-18 | 181d | 2026-05-29 | 2027-01-21 | 1d |  |
| 1139 | 1.6.1 | **HITOS IMPORTANTES DEL LOTE** |  | 190d | 2026-06-10 A | 2027-02-09 |  |  | 190d | 2026-05-29 | 2027-01-18 | 181d | 2026-05-29 | 2027-01-21 | 1d |  |
| 1140 | 1.6.1.1 | Inicio del Lote-21 M-663 Corsac-A | milestone | 0d | 2026-06-10 A | 2026-06-10 A | 8 | 100% |  | 2026-05-29 | 2026-05-29 |  | 2026-05-29 | 2026-05-29 |  |  |
| 1141 | 1.6.1.2 | Colado de Losa de Cimentación | milestone | 0d | 2026-07-22 | 2026-07-22 | 1172 |  |  | 2026-06-19 | 2026-06-19 |  | 2026-06-24 | 2026-06-24 | 157d |  |
| 1142 | 1.6.1.3 | Colado de Losa de Entrepiso | milestone | 0d | 2026-08-28 | 2026-08-28 | 1208 |  |  | 2026-07-28 | 2026-07-28 |  | 2026-07-31 | 2026-07-31 | 127d |  |
| 1143 | 1.6.1.4 | Colado de Losa de Azotea | milestone | 0d | 2026-10-06 | 2026-10-06 | 1248 |  |  | 2026-09-02 | 2026-09-02 |  | 2026-09-07 | 2026-09-07 | 97d |  |
| 1144 | 1.6.1.5 | Entrega de vivienda | milestone | 0d | 2027-02-09 | 2027-02-09 | 1440, 1441, 1442 |  |  | 2027-01-18 | 2027-01-18 |  | 2027-01-21 | 2027-01-21 | 1d |  |
| 1145 | 1.6.2 | **TRABAJOS PRELIMINARES** |  | 5d | 2026-06-10 A | 2026-06-16 A |  | 100% |  | 2026-05-29 | 2026-06-02 | 2d | 2026-05-29 | 2026-06-05 |  |  |
| 1146 | 1.6.2.1 | Trazo y nivelación |  | 5d | 2026-06-10 A | 2026-06-16 A | 1140 | 100% |  | 2026-05-29 | 2026-06-02 | 2d | 2026-05-29 | 2026-06-05 |  |  |
| 1147 | 1.6.3 | **EXCAVACIONES** |  | 11d | 2026-06-16 A | 2026-06-30 A |  | 100% |  | 2026-06-02 | 2026-06-05 | 3d | 2026-06-05 | 2026-06-09 |  |  |
| 1148 | 1.6.3.1 | Excavación a mano material tipo B |  | 10d | 2026-06-16 A | 2026-06-29 A | 1146 | 100% |  | 2026-06-02 | 2026-06-05 | 3d | 2026-06-05 | 2026-06-09 |  |  |
| 1149 | 1.6.3.2 | Acarreo en carretilla 20 m |  | 10d | 2026-06-17 A | 2026-06-30 A | 1148SS+1d | 100% |  | 2026-06-03 | 2026-06-05 | 2d | 2026-06-06 | 2026-06-09 |  |  |
| 1150 | 1.6.4 | **CIMENTACION** |  | 14d | 2026-07-07 A | 2026-07-23 |  | 39% | 8.6d | 2026-06-05 | 2026-06-22 | 13d | 2026-06-09 | 2026-06-25 | 1d |  |
| 1151 | 1.6.4.1 | Cimbra perimetral losa de cimentación |  | 3d | 2026-07-08 A | 2026-07-10 A | 1148FS+7d, 1149 | 100% |  | 2026-06-05 | 2026-06-09 | 3d | 2026-06-09 | 2026-06-12 |  |  |
| 1152 | 1.6.4.2 | Sistema antitermitas PVC |  | 3d | 2026-07-08 A | 2026-07-10 A | 1148FS+7d, 1149 | 100% |  | 2026-06-05 | 2026-06-09 | 3d | 2026-06-09 | 2026-06-12 |  |  |
| 1153 | 1.6.4.3 | Hule negro en cimentación |  | 1d | 2026-07-11 A | 2026-07-13 | 1152 | 63% | 0.38d | 2026-06-09 | 2026-06-10 | 1d | 2026-06-12 | 2026-06-13 | 1d | 0d |
| 1154 | 1.6.4.4 | Ramaleo poliducto eléctrico cimentación |  | 2d | 2026-07-07 A | 2026-07-08 A | 1153FS-5d | 100% |  | 2026-06-10 | 2026-06-12 | 2d | 2026-06-13 | 2026-06-16 |  |  |
| 1155 | 1.6.4.5 | Ramaleo eléctrico base-medición a centro de carga |  | 1d | 2026-07-07 A | 2026-07-07 A | 1153FS-5d | 100% |  | 2026-06-10 | 2026-06-11 | 1d | 2026-06-13 | 2026-06-15 |  |  |
| 1156 | 1.6.4.6 | Ramaleo eléctrico exterior |  | 1d | 2026-07-09 A | 2026-07-09 A | 1154, 1155 | 100% |  | 2026-06-12 | 2026-06-13 | 1d | 2026-06-16 | 2026-06-17 |  |  |
| 1157 | 1.6.4.7 | Ramaleo para cable poliducto 3/4 |  | 1d | 2026-07-09 A | 2026-07-09 A | 1154, 1155 | 100% |  | 2026-06-12 | 2026-06-13 | 1d | 2026-06-16 | 2026-06-17 |  |  |
| 1158 | 1.6.4.8 | Ramaleo para TV poliducto 3/4 |  | 1d | 2026-07-09 A | 2026-07-09 A | 1154, 1155 | 100% |  | 2026-06-12 | 2026-06-13 | 1d | 2026-06-16 | 2026-06-17 |  |  |
| 1159 | 1.6.4.9 | Ramaleo hidráulico CPVC 1-1/4" cimentación |  | 1d | 2026-07-08 A | 2026-07-08 A | 1153FS-4d | 100% |  | 2026-06-10 | 2026-06-11 | 1d | 2026-06-13 | 2026-06-15 |  |  |
| 1160 | 1.6.4.10 | Ramaleo hidráulico CPVC 1 cimentación |  | 1d | 2026-07-08 A | 2026-07-08 A | 1153FS-4d, 1159SS | 100% |  | 2026-06-10 | 2026-06-11 | 1d | 2026-06-13 | 2026-06-15 |  |  |
| 1161 | 1.6.4.11 | Ramaleo hidráulico CPVC 3/4 cimentación |  | 2d | 2026-07-09 A | 2026-07-10 A | 1160 | 100% |  | 2026-06-11 | 2026-06-13 | 2d | 2026-06-15 | 2026-06-17 |  |  |
| 1162 | 1.6.4.12 | Ramaleo hidráulico CPVC 1/2 cimentación |  | 2d | 2026-07-11 A | 2026-07-14 | 1161 | 31% | 1.38d | 2026-06-13 | 2026-06-16 | 2d | 2026-06-17 | 2026-06-19 | 6d | 0d |
| 1163 | 1.6.4.13 | Prueba hidráulica |  | 1d | 2026-07-14 | 2026-07-15 | 1159, 1160, 1161, 1162 |  |  | 2026-06-16 | 2026-06-17 | 1d | 2026-06-19 | 2026-06-22 | 6d | 5d |
| 1164 | 1.6.4.14 | Ramaleo sanitario PVC 4 cimentación |  | 2d | 2026-07-14 | 2026-07-16 | 1153FS+1d |  |  | 2026-06-11 | 2026-06-13 | 2d | 2026-06-15 | 2026-06-17 | 3d | 0d |
| 1165 | 1.6.4.15 | Ramaleo sanitario PVC 2 cimentación |  | 1d | 2026-07-16 | 2026-07-17 | 1164 |  |  | 2026-06-13 | 2026-06-15 | 1d | 2026-06-17 | 2026-06-18 | 3d | 0d |
| 1166 | 1.6.4.16 | Prueba sanitaria |  | 1d | 2026-07-17 | 2026-07-18 | 1164, 1165 |  |  | 2026-06-15 | 2026-06-16 | 1d | 2026-06-18 | 2026-06-19 | 3d | 2d |
| 1167 | 1.6.4.17 | Acero contratrabe CT-1 |  | 4d | 2026-07-11 A | 2026-07-16 | 1151 | 16% | 3.38d | 2026-06-09 | 2026-06-13 | 4d | 2026-06-12 | 2026-06-17 | 1d | 0d |
| 1168 | 1.6.4.18 | Acero contratrabe CT-2 |  | 4d | 2026-07-11 A | 2026-07-16 | 1151 | 16% | 3.38d | 2026-06-09 | 2026-06-13 | 4d | 2026-06-12 | 2026-06-17 | 1d | 0d |
| 1169 | 1.6.4.19 | Malla electrosoldada 6-6/8-8 |  | 2d | 2026-07-18 | 2026-07-21 | 1167, 1168, 1170, 1171 |  |  | 2026-06-16 | 2026-06-18 | 2d | 2026-06-19 | 2026-06-23 | 1d | 0d |
| 1170 | 1.6.4.20 | Bastón de refuerzo LS |  | 2d | 2026-07-16 | 2026-07-18 | 1167, 1168 |  |  | 2026-06-13 | 2026-06-16 | 2d | 2026-06-17 | 2026-06-19 | 1d | 0d |
| 1171 | 1.6.4.21 | Bastón de refuerzo LI |  | 2d | 2026-07-16 | 2026-07-18 | 1167, 1168 |  |  | 2026-06-13 | 2026-06-16 | 2d | 2026-06-17 | 2026-06-19 | 1d | 0d |
| 1172 | 1.6.4.22 | Colado losa de cimentación f’c=200 |  | 1d | 2026-07-21 | 2026-07-22 | 1151, 1153, 1156, 1157, 1158, 1163, 1166, 1167, 1168, 1169, 1170, 1171, 1174, 1175 |  |  | 2026-06-18 | 2026-06-19 | 1d | 2026-06-23 | 2026-06-24 | 1d | 0d |
| 1173 | 1.6.4.23 | Curado de concreto |  | 1d | 2026-07-22 | 2026-07-23 | 1172 |  |  | 2026-06-19 | 2026-06-22 | 1d | 2026-06-24 | 2026-06-25 | 1d | 0d |
| 1174 | 1.6.4.24 | Acero zapata ZT-1 |  | 4d | 2026-07-16 | 2026-07-21 | 1167, 1168 |  |  | 2026-06-13 | 2026-06-18 | 4d | 2026-06-17 | 2026-06-23 | 1d | 0d |
| 1175 | 1.6.4.25 | Acero zapata ZT-2 |  | 4d | 2026-07-16 | 2026-07-21 | 1167, 1168 |  |  | 2026-06-13 | 2026-06-18 | 4d | 2026-06-17 | 2026-06-23 | 1d | 0d |

| ID | WBS | Task | Duration | Start | Finish | Predecessors | Baseline start | Baseline finish | Baseline duration | Baseline 1 start | Baseline 1 finish | Total slack | Free slack |
| --- | --- | --- | --- | --- | --- | --- | --- | --- | --- | --- | --- | --- | --- |
| 1176 | 1.6.5 | **MUROS, PLANTA BAJA. CASTILLOS Y CERRAMIENTOS** | 20d | 2026-07-17 | 2026-08-11 |  | 2026-06-15 | 2026-07-09 | 20d | 2026-06-18 | 2026-07-14 | 6d |  |
| 1177 | 1.6.5.1 | Anclaje de castillos y Columnas PB | 5d | 2026-07-17 | 2026-07-23 | 1167FS+1d, 1168FS+1d | 2026-06-15 | 2026-06-22 | 5d | 2026-06-18 | 2026-06-25 | 144d | 0d |
| 1178 | 1.6.5.2 | Castillo K1 | 4d | 2026-07-23 | 2026-07-29 | 1173, 1177 | 2026-06-22 | 2026-06-26 | 4d | 2026-06-25 | 2026-06-30 | 144d | 0d |
| 1179 | 1.6.5.3 | Castillo K3 | 3d | 2026-07-27 | 2026-07-30 | 1178FS-2d | 2026-06-24 | 2026-06-27 | 3d | 2026-06-27 | 2026-07-01 | 144d | 0d |
| 1180 | 1.6.5.4 | Castillo K4 | 3d | 2026-07-27 | 2026-07-30 | 1178FS-2d | 2026-06-24 | 2026-06-27 | 3d | 2026-06-27 | 2026-07-01 | 144d | 0d |
| 1181 | 1.6.5.5 | Castillo K5 | 3d | 2026-07-29 | 2026-08-01 | 1179FS-1d, 1180FS-1d | 2026-06-26 | 2026-06-30 | 3d | 2026-06-30 | 2026-07-03 | 144d | 0d |
| 1182 | 1.6.5.6 | Refuerzo de muro K6 | 3d | 2026-07-30 | 2026-08-03 | 1181FS-2d | 2026-06-27 | 2026-07-01 | 3d | 2026-07-01 | 2026-07-04 | 144d | 0d |
| 1183 | 1.6.5.7 | Dala de cerramiento CR-1 | 4d | 2026-07-30 | 2026-08-04 | 1178, 1179 | 2026-06-27 | 2026-07-02 | 4d | 2026-07-01 | 2026-07-06 | 147d |  |
| 1184 | 1.6.5.8 | Dala de cerramiento CR-2 | 3d | 2026-07-30 | 2026-08-03 | 1178, 1179 | 2026-06-27 | 2026-07-01 | 3d | 2026-07-01 | 2026-07-04 | 148d |  |
| 1185 | 1.6.5.9 | Cadena block dala | 4d | 2026-08-03 | 2026-08-07 | 1182 | 2026-07-01 | 2026-07-06 | 4d | 2026-07-06 | 2026-07-09 | 144d |  |
| 1186 | 1.6.5.10 | Muro de ladrillo aparente | 15d | 2026-07-23 | 2026-08-11 | 1173 | 2026-06-22 | 2026-07-09 | 15d | 2026-06-25 | 2026-07-14 | 1d | 0d |
| 1187 | 1.6.5.11 | Muro de block planta baja | 13d | 2026-07-27 | 2026-08-11 | 1173FS+2d | 2026-06-24 | 2026-07-09 | 13d | 2026-06-27 | 2026-07-14 | 1d | 0d |
| 1188 | 1.6.5.12 | Ramaleo electrico en Muros Planta Baja | 4d | 2026-07-30 | 2026-08-04 | 1186SS+5d | 2026-06-27 | 2026-07-02 | 4d | 2026-07-01 | 2026-07-06 | 4d | 0d |
| 1189 | 1.6.5.13 | Ramaleo para cable poliducto 3/4 | 2d | 2026-08-04 | 2026-08-06 | 1188 | 2026-07-02 | 2026-07-04 | 2d | 2026-07-07 | 2026-07-08 | 4d | 0d |
| 1190 | 1.6.5.14 | Ramaleo para TV poliducto 3/4 | 3d | 2026-08-06 | 2026-08-10 | 1189 | 2026-07-06 | 2026-07-08 | 3d | 2026-07-09 | 2026-07-13 | 4d | 2d |
| 1191 | 1.6.6 | **ESCALERA** | 10d | 2026-08-28 | 2026-09-10 |  | 2026-07-28 | 2026-08-08 | 10d | 2026-07-31 | 2026-08-12 | 78d |  |
| 1192 | 1.6.6.1 | Escalera de concreto armado | 10d | 2026-08-28 | 2026-09-10 | 1208 | 2026-07-28 | 2026-08-08 | 10d | 2026-07-31 | 2026-08-12 | 78d | 77d |
| 1193 | 1.6.7 | **LOSA DE ENTREPISO (viegueta y caseton)** | 17d | 2026-08-08 | 2026-08-29 |  | 2026-07-08 | 2026-07-29 | 17d | 2026-07-11 | 2026-08-01 | 4d |  |
| 1194 | 1.6.7.1 | Dala de coronamiento 10cm | 3d | 2026-08-18 | 2026-08-21 | 1210FS-1d, 1196, 1197, 1198, 1199, 1200, 1201 | 2026-07-16 | 2026-07-20 | 3d | 2026-07-20 | 2026-07-23 | 4d | 3d |
| 1195 | 1.6.7.2 | Dala de coronamiento 12cm | 3d | 2026-08-19 | 2026-08-22 | 1210, 1196, 1197, 1198, 1199, 1200, 1201 | 2026-07-17 | 2026-07-21 | 3d | 2026-07-21 | 2026-07-24 | 3d | 2d |
| 1196 | 1.6.7.3 | Trabe TR-1 | 3d | 2026-08-08 | 2026-08-12 | 1186FS-2d, 1187FS-2d | 2026-07-08 | 2026-07-10 | 3d | 2026-07-11 | 2026-07-15 | 5d | 4d |
| 1197 | 1.6.7.4 | Trabe TR-2 | 4d | 2026-08-10 | 2026-08-14 | 1186FS-1d, 1187FS-1d | 2026-07-09 | 2026-07-14 | 4d | 2026-07-13 | 2026-07-17 | 3d | 2d |
| 1198 | 1.6.7.5 | Nervadura NR-1 | 4d | 2026-08-11 | 2026-08-17 | 1186, 1187 | 2026-07-10 | 2026-07-15 | 4d | 2026-07-14 | 2026-07-18 | 2d | 1d |
| 1199 | 1.6.7.6 | Nervadura NR-2 | 4d | 2026-08-12 | 2026-08-18 | 1186FS+1d, 1187FS+1d | 2026-07-11 | 2026-07-16 | 4d | 2026-07-15 | 2026-07-20 | 1d | 0d |
| 1200 | 1.6.7.7 | Nervadura NR-3 | 4d | 2026-08-12 | 2026-08-18 | 1186FS+1d, 1187FS+1d | 2026-07-11 | 2026-07-16 | 4d | 2026-07-15 | 2026-07-20 | 1d | 0d |
| 1201 | 1.6.7.8 | Nervadura NR-4 | 4d | 2026-08-12 | 2026-08-18 | 1186FS+1d, 1187FS+1d | 2026-07-11 | 2026-07-16 | 4d | 2026-07-15 | 2026-07-20 | 1d | 0d |
| 1202 | 1.6.7.9 | Acero de refuerzo en nervios #3 | 2d | 2026-08-18 | 2026-08-20 | 1196, 1197, 1198, 1199, 1200, 1201 | 2026-07-16 | 2026-07-18 | 2d | 2026-07-20 | 2026-07-22 | 1d | 0d |
| 1203 | 1.6.7.10 | Acero de refuerzo long. #3 | 3d | 2026-08-19 | 2026-08-22 | 1196, 1197, 1198, 1199, 1200, 1201, 1210 | 2026-07-17 | 2026-07-21 | 3d | 2026-07-21 | 2026-07-24 | 2d | 0d |
| 1204 | 1.6.7.11 | Acero de refuerzo long. #4 | 3d | 2026-08-19 | 2026-08-22 | 1203SS | 2026-07-17 | 2026-07-21 | 3d | 2026-07-21 | 2026-07-24 | 2d | 0d |
| 1205 | 1.6.7.12 | Malla 66-10/10 losa de compresión | 2d | 2026-08-25 | 2026-08-27 | 1194, 1195, 1202, 1215, 1218, 1207 | 2026-07-23 | 2026-07-27 | 2d | 2026-07-28 | 2026-07-30 | 1d | 0d |
| 1206 | 1.6.7.13 | Acero de Losa Maciza | 3d | 2026-08-18 | 2026-08-21 | 1198, 1199, 1200, 1201 | 2026-07-16 | 2026-07-20 | 3d | 2026-07-20 | 2026-07-23 | 6d | 5d |
| 1207 | 1.6.7.14 | Caseton de 60x60x20cm | 2d | 2026-08-18 | 2026-08-20 | 1198, 1199, 1200, 1201 | 2026-07-16 | 2026-07-18 | 2d | 2026-07-20 | 2026-07-22 | 5d | 4d |
| 1208 | 1.6.7.15 | Concreto losa de entrepiso f’c=200 | 1d | 2026-08-27 | 2026-08-28 | 1203, 1204, 1205, 1206, 1215, 1218, 1211, 1220 | 2026-07-27 | 2026-07-28 | 1d | 2026-07-30 | 2026-07-31 | 1d | 0d |
| 1209 | 1.6.7.16 | Curado de concreto | 1d | 2026-08-28 | 2026-08-29 | 1208 | 2026-07-28 | 2026-07-29 | 1d | 2026-07-31 | 2026-08-01 | 1d | 0d |
| 1210 | 1.6.7.17 | Cimbra losa de azotea | 5d | 2026-08-12 | 2026-08-19 | 1186FS+1d, 1187FS+1d, 1190 | 2026-07-11 | 2026-07-17 | 5d | 2026-07-15 | 2026-07-21 | 2d | 0d |
| 1211 | 1.6.7.18 | Cimbra exterior corta losa | 3d | 2026-08-21 | 2026-08-25 | 1203FS-1d, 1204FS-1d | 2026-07-20 | 2026-07-23 | 3d | 2026-07-23 | 2026-07-28 | 3d | 2d |
| 1212 | 1.6.7.19 | Ramaleo poliducto eléctrico entrepiso | 2d | 2026-08-20 | 2026-08-22 | 1202 | 2026-07-18 | 2026-07-21 | 2d | 2026-07-22 | 2026-07-24 | 132d |  |
| 1213 | 1.6.7.20 | Ramaleo hidráulico CPVC 3/4" | 2d | 2026-08-21 | 2026-08-24 | 1202FS+1d | 2026-07-20 | 2026-07-22 | 2d | 2026-07-23 | 2026-07-27 | 1d | 0d |
| 1214 | 1.6.7.21 | Ramaleo hidráulico CPVC 1/2" | 1d | 2026-08-24 | 2026-08-25 | 1213 | 2026-07-22 | 2026-07-23 | 1d | 2026-07-27 | 2026-07-28 | 1d | 0d |
| 1215 | 1.6.7.22 | Prueba hidráulica | 1d | 2026-08-24 | 2026-08-25 | 1213, 1214FS-1d | 2026-07-22 | 2026-07-23 | 1d | 2026-07-27 | 2026-07-28 | 1d | 0d |
| 1216 | 1.6.7.23 | Ramaleo sanitario PVC 4" | 2d | 2026-08-21 | 2026-08-24 | 1202FS+1d | 2026-07-20 | 2026-07-22 | 2d | 2026-07-23 | 2026-07-27 | 1d | 0d |
| 1217 | 1.6.7.24 | Ramaleo sanitario PVC 2" | 1d | 2026-08-24 | 2026-08-25 | 1216 | 2026-07-22 | 2026-07-23 | 1d | 2026-07-27 | 2026-07-28 | 1d | 0d |
| 1218 | 1.6.7.25 | Prueba sanitaria | 1d | 2026-08-24 | 2026-08-25 | 1216, 1217FS-1d | 2026-07-22 | 2026-07-23 | 1d | 2026-07-27 | 2026-07-28 | 1d | 0d |

| ID | WBS | Task | Duration | Start | Finish | Predecessors | Baseline start | Baseline finish | Baseline duration | Baseline 1 start | Baseline 1 finish | Total slack | Free slack |
| --- | --- | --- | --- | --- | --- | --- | --- | --- | --- | --- | --- | --- | --- |
| 1219 | 1.6.8 | **MUROS EN PLANTA ALTA, CASTILLOS Y CERRM.** | 22d | 2026-08-21 | 2026-09-18 |  | 2026-07-20 | 2026-08-17 | 22d | 2026-07-23 | 2026-08-20 | 2d |  |
| 1220 | 1.6.8.1 | Anclaje de castillos y Columnas PA | 4d | 2026-08-21 | 2026-08-26 | 1203FS-1d, 1204FS-1d | 2026-07-20 | 2026-07-24 | 4d | 2026-07-23 | 2026-07-29 | 2d | 1d |
| 1221 | 1.6.8.2 | Castillo K1 | 4d | 2026-08-31 | 2026-09-03 | 1209 | 2026-07-29 | 2026-08-03 | 4d | 2026-08-01 | 2026-08-06 | 5d | 0d |
| 1222 | 1.6.8.3 | Castillo K2 | 4d | 2026-09-01 | 2026-09-04 | 1209FS+1d | 2026-07-30 | 2026-08-04 | 4d | 2026-08-03 | 2026-08-07 | 4d | 0d |
| 1223 | 1.6.8.4 | Castillo K4 | 3d | 2026-09-04 | 2026-09-08 | 1221 | 2026-08-03 | 2026-08-06 | 3d | 2026-08-06 | 2026-08-10 | 5d | 1d |
| 1224 | 1.6.8.5 | Castillo K5 | 3d | 2026-09-04 | 2026-09-08 | 1221 | 2026-08-03 | 2026-08-06 | 3d | 2026-08-06 | 2026-08-10 | 5d | 1d |
| 1225 | 1.6.8.6 | Castillo K6 | 3d | 2026-09-04 | 2026-09-08 | 1221 | 2026-08-03 | 2026-08-06 | 3d | 2026-08-06 | 2026-08-10 | 5d | 1d |
| 1226 | 1.6.8.7 | Refuerzo de muro | 3d | 2026-09-05 | 2026-09-09 | 1221, 1222 | 2026-08-04 | 2026-08-07 | 3d | 2026-08-07 | 2026-08-11 | 4d | 0d |
| 1227 | 1.6.8.8 | Dala de cerramiento CR-1 | 4d | 2026-09-09 | 2026-09-14 | 1223, 1224, 1225, 1226 | 2026-08-07 | 2026-08-12 | 4d | 2026-08-11 | 2026-08-17 | 4d | 0d |
| 1228 | 1.6.8.9 | Dala de cerramiento CR-2 | 4d | 2026-09-09 | 2026-09-14 | 1223, 1224, 1225, 1226 | 2026-08-07 | 2026-08-12 | 4d | 2026-08-11 | 2026-08-17 | 4d | 0d |
| 1229 | 1.6.8.10 | Cadena block dala | 3d | 2026-09-14 | 2026-09-18 | 1226, 1227, 1228 | 2026-08-12 | 2026-08-17 | 3d | 2026-08-17 | 2026-08-20 | 4d | 0d |
| 1230 | 1.6.8.11 | Muro de ladrillo aparente | 15d | 2026-08-31 | 2026-09-18 | 1209 | 2026-07-29 | 2026-08-17 | 15d | 2026-08-01 | 2026-08-20 | 1d | 0d |
| 1231 | 1.6.8.12 | Muro de block planta alta | 14d | 2026-09-01 | 2026-09-18 | 1209FS+1d | 2026-07-30 | 2026-08-17 | 14d | 2026-08-03 | 2026-08-20 | 1d | 0d |
| 1232 | 1.6.8.13 | Ramaleo electrico en Muros Planta Alta | 4d | 2026-09-09 | 2026-09-14 | 1230SS+8d | 2026-08-07 | 2026-08-12 | 4d | 2026-08-11 | 2026-08-17 | 12d | 3d |
| 1233 | 1.6.9 | **LOSA AZOTEA** | 15d | 2026-09-18 | 2026-10-07 |  | 2026-08-17 | 2026-09-03 | 15d | 2026-08-20 | 2026-09-08 | 1d |  |
| 1234 | 1.6.9.1 | Cortalosa CL-1 | 2d | 2026-10-02 | 2026-10-05 | 1246 | 2026-08-31 | 2026-09-01 | 2d | 2026-09-03 | 2026-09-04 | 1d | 0d |
| 1235 | 1.6.9.2 | Cortalosa CL-2 | 2d | 2026-10-02 | 2026-10-05 | 1246 | 2026-08-31 | 2026-09-01 | 2d | 2026-09-03 | 2026-09-04 | 1d | 0d |
| 1236 | 1.6.9.3 | Vigueta pretensada V11-30 125 | 5d | 2026-09-18 | 2026-09-25 | 1229, 1230, 1231 | 2026-08-17 | 2026-08-22 | 5d | 2026-08-20 | 2026-08-26 | 4d | 3d |
| 1237 | 1.6.9.4 | Vigueta pretensada V11-30 185 | 5d | 2026-09-18 | 2026-09-25 | 1230, 1231 | 2026-08-17 | 2026-08-22 | 5d | 2026-08-20 | 2026-08-26 | 4d | 3d |
| 1238 | 1.6.9.5 | Vigueta pretensada V11-30 190 | 5d | 2026-09-18 | 2026-09-25 | 1230, 1231 | 2026-08-17 | 2026-08-22 | 5d | 2026-08-20 | 2026-08-26 | 4d | 3d |
| 1239 | 1.6.9.6 | Vigueta pretensada V11-30 205 | 5d | 2026-09-22 | 2026-09-28 | 1230FS+2d, 1231FS+2d | 2026-08-19 | 2026-08-25 | 5d | 2026-08-22 | 2026-08-28 | 2d | 1d |
| 1240 | 1.6.9.7 | Vigueta pretensada V11-30 215 | 5d | 2026-09-22 | 2026-09-28 | 1230FS+2d, 1231FS+2d | 2026-08-19 | 2026-08-25 | 5d | 2026-08-22 | 2026-08-28 | 2d | 1d |
| 1241 | 1.6.9.8 | Vigueta pretensada V11-30 260 | 5d | 2026-09-23 | 2026-09-29 | 1230FS+3d, 1231FS+3d | 2026-08-20 | 2026-08-26 | 5d | 2026-08-24 | 2026-08-29 | 1d | 0d |
| 1242 | 1.6.9.9 | Vigueta pretensada V11-30 285 | 5d | 2026-09-23 | 2026-09-29 | 1230FS+3d, 1231FS+3d | 2026-08-20 | 2026-08-26 | 5d | 2026-08-24 | 2026-08-29 | 1d | 0d |
| 1243 | 1.6.9.10 | Vigueta pretensada V11-40 330 | 5d | 2026-09-23 | 2026-09-29 | 1230FS+3d, 1231 | 2026-08-20 | 2026-08-26 | 5d | 2026-08-24 | 2026-08-29 | 1d | 0d |
| 1244 | 1.6.9.11 | Vigueta pretensada V11-40 335 | 5d | 2026-09-23 | 2026-09-29 | 1230FS+3d, 1231 | 2026-08-20 | 2026-08-26 | 5d | 2026-08-24 | 2026-08-29 | 1d | 0d |
| 1245 | 1.6.9.12 | Vigueta pretensada V11-40 505 | 5d | 2026-09-23 | 2026-09-29 | 1230FS+3d, 1231 | 2026-08-20 | 2026-08-26 | 5d | 2026-08-24 | 2026-08-29 | 1d | 0d |
| 1246 | 1.6.9.13 | Bovedilla poliestireno azotea | 3d | 2026-09-29 | 2026-10-02 | 1236, 1237, 1238, 1239, 1240, 1241, 1242, 1243, 1244, 1245 | 2026-08-26 | 2026-08-29 | 3d | 2026-08-31 | 2026-09-02 | 1d | 0d |
| 1247 | 1.6.9.14 | Malla 66-10/10 losa de compresión | 2d | 2026-10-02 | 2026-10-05 | 1246 | 2026-08-31 | 2026-09-01 | 2d | 2026-09-03 | 2026-09-04 | 1d | 0d |
| 1248 | 1.6.9.15 | Concreto losa de azotea f’c=200 | 1d | 2026-10-05 | 2026-10-06 | 1234, 1235, 1246, 1247, 1251, 1250 | 2026-09-02 | 2026-09-02 | 1d | 2026-09-05 | 2026-09-07 | 1d | 0d |
| 1249 | 1.6.9.16 | Curado de concreto | 1d | 2026-10-06 | 2026-10-07 | 1248 | 2026-09-03 | 2026-09-03 | 1d | 2026-09-07 | 2026-09-08 | 1d | 0d |
| 1250 | 1.6.9.17 | Cimbra losa de azotea | 5d | 2026-09-18 | 2026-09-25 | 1230, 1231, 1232 | 2026-08-17 | 2026-08-22 | 5d | 2026-08-20 | 2026-08-26 | 9d | 8d |
| 1251 | 1.6.9.18 | Ramaleo de poliducto para inst. electrica en azotea | 2d | 2026-10-02 | 2026-10-05 | 1246 | 2026-08-31 | 2026-09-01 | 2d | 2026-09-03 | 2026-09-04 | 1d | 0d |

| ID | WBS | Task | Duration | Start | Finish | Predecessors | Baseline start | Baseline finish | Baseline duration | Baseline 1 start | Baseline 1 finish | Total slack | Free slack |
| --- | --- | --- | --- | --- | --- | --- | --- | --- | --- | --- | --- | --- | --- |
| 1252 | 1.6.10 | **PRETIL Y ACABADOS DE AZOTEA** | 19d | 2026-10-07 | 2026-10-30 |  | 2026-09-04 | 2026-09-29 | 19d | 2026-09-08 | 2026-10-02 | 1d |  |
| 1253 | 1.6.10.1 | Castillo K1 | 5d | 2026-10-09 | 2026-10-16 | 1255SS+2d | 2026-09-07 | 2026-09-12 | 5d | 2026-09-10 | 2026-09-17 | 1d | 0d |
| 1254 | 1.6.10.2 | Dala de cerramiento en pretil | 4d | 2026-10-14 | 2026-10-19 | 1253FS-2d, 1255FS-2d | 2026-09-10 | 2026-09-15 | 4d | 2026-09-14 | 2026-09-21 | 1d | 0d |
| 1255 | 1.6.10.3 | Muro de block 12x15x40 | 5d | 2026-10-07 | 2026-10-14 | 1249 | 2026-09-04 | 2026-09-10 | 5d | 2026-09-08 | 2026-09-14 | 1d | 0d |
| 1256 | 1.6.10.4 | Chaflán en azotea | 4d | 2026-10-16 | 2026-10-21 | 1253, 1255 | 2026-09-12 | 2026-09-18 | 4d | 2026-09-17 | 2026-09-23 | 1d | 0d |
| 1257 | 1.6.10.5 | Diamante de entortado | 4d | 2026-10-16 | 2026-10-21 | 1253, 1255 | 2026-09-12 | 2026-09-18 | 4d | 2026-09-17 | 2026-09-23 | 1d | 0d |
| 1258 | 1.6.10.6 | Aplanado exterior Mortermax fino | 5d | 2026-10-19 | 2026-10-24 | 1254, 1256FS-2d, 1257FS-2d | 2026-09-15 | 2026-09-23 | 5d | 2026-09-21 | 2026-09-26 | 1d | 0d |
| 1259 | 1.6.10.7 | Entortado de Losa | 4d | 2026-10-27 | 2026-10-30 | 1260 | 2026-09-24 | 2026-09-29 | 4d | 2026-09-28 | 2026-10-02 | 1d | 0d |
| 1260 | 1.6.10.8 | Curado de concreto | 1d | 2026-10-26 | 2026-10-26 | 1256, 1258 | 2026-09-23 | 2026-09-24 | 1d | 2026-09-26 | 2026-09-28 | 1d | 0d |
| 1261 | 1.6.11 | **PRIMERA LIMPIEZA DE OBRA** | 4d | 2026-10-07 | 2026-10-13 |  | 2026-09-04 | 2026-09-09 | 4d | 2026-09-08 | 2026-09-12 | 53d |  |
| 1262 | 1.6.11.1 | Primera limpieza de obra | 2d | 2026-10-07 | 2026-10-09 | 1249 | 2026-09-04 | 2026-09-07 | 2d | 2026-09-08 | 2026-09-10 | 53d | 0d |
| 1263 | 1.6.11.2 | Primera carga y acarreo de escombro | 2d | 2026-10-09 | 2026-10-13 | 1262 | 2026-09-07 | 2026-09-09 | 2d | 2026-09-10 | 2026-09-12 | 53d | 1d |
| 1264 | 1.6.12 | **IMPERMEABILIZACION** | 5d | 2026-10-31 | 2026-11-06 |  | 2026-09-29 | 2026-10-05 | 5d | 2026-10-02 | 2026-10-08 | 1d |  |
| 1265 | 1.6.12.1 | Impermeabilización de pretil Kover 5 años | 4d | 2026-10-31 | 2026-11-05 | 1259 | 2026-09-29 | 2026-10-03 | 4d | 2026-10-02 | 2026-10-07 | 2d | 1d |
| 1266 | 1.6.12.2 | Impermeabilización de losa Kover 5 años | 5d | 2026-10-31 | 2026-11-06 | 1259 | 2026-09-29 | 2026-10-05 | 5d | 2026-10-02 | 2026-10-08 | 1d | 0d |
| 1267 | 1.6.13 | **ALBAÑILERIA** | 62d | 2026-10-14 | 2027-01-05 |  | 2026-09-10 | 2026-11-28 | 62d | 2026-09-14 | 2026-12-02 | 20d |  |
| 1268 | 1.6.13.1 | Lavadero de granito | 4d | 2026-11-27 | 2026-12-02 | 1304SS+8d | 2026-10-26 | 2026-10-29 | 4d | 2026-10-29 | 2026-11-03 | 52d |  |
| 1269 | 1.6.13.2 | Ranurado y resane general inst. en muros | 3d | 2026-11-04 | 2026-11-07 | 1266FS-2d | 2026-10-02 | 2026-10-06 | 3d | 2026-10-06 | 2026-10-09 | 3d | 1d |
| 1270 | 1.6.13.3 | Ranurado y resane eléctrico 1/2 a 3/4 | 3d | 2026-11-04 | 2026-11-07 | 1266FS-2d | 2026-10-02 | 2026-10-06 | 3d | 2026-10-06 | 2026-10-09 | 3d | 1d |
| 1271 | 1.6.13.4 | Ranurado y resane hidráulico 1/2 a 1 | 2d | 2026-11-06 | 2026-11-09 | 1266 | 2026-10-05 | 2026-10-07 | 2d | 2026-10-08 | 2026-10-12 | 2d | 0d |
| 1272 | 1.6.13.5 | Resane sanitario tubería 2 | 2d | 2026-11-06 | 2026-11-09 | 1266 | 2026-10-05 | 2026-10-07 | 2d | 2026-10-08 | 2026-10-12 | 2d | 0d |
| 1273 | 1.6.13.6 | Resane sanitario tubería 4 | 2d | 2026-11-06 | 2026-11-09 | 1266 | 2026-10-05 | 2026-10-07 | 2d | 2026-10-08 | 2026-10-12 | 2d | 0d |
| 1274 | 1.6.13.7 | Resane minisplit tubería 3 | 2d | 2026-11-06 | 2026-11-09 | 1266 | 2026-10-05 | 2026-10-07 | 2d | 2026-10-08 | 2026-10-12 | 2d | 0d |
| 1275 | 1.6.13.8 | Ramaleo hidráulico exterior CPVC 1 1/4 | 3d | 2026-11-06 | 2026-11-10 | 1265, 1266 | 2026-10-05 | 2026-10-08 | 3d | 2026-10-08 | 2026-10-13 | 1d | 0d |
| 1276 | 1.6.13.9 | Ramaleo hidráulico exterior CPVC 1 | 2d | 2026-11-06 | 2026-11-09 | 1275SS | 2026-10-05 | 2026-10-07 | 2d | 2026-10-08 | 2026-10-12 | 1d | 0d |
| 1277 | 1.6.13.10 | Ramaleo hidráulico exterior CPVC 3/4 | 2d | 2026-11-09 | 2026-11-11 | 1276 | 2026-10-07 | 2026-10-09 | 2d | 2026-10-12 | 2026-10-14 | 1d | 0d |
| 1278 | 1.6.13.11 | Ramaleo hidráulico exterior CPVC 1/2 | 2d | 2026-11-09 | 2026-11-11 | 1276 | 2026-10-07 | 2026-10-09 | 2d | 2026-10-12 | 2026-10-14 | 1d | 0d |
| 1279 | 1.6.13.12 | Prueba hidráulica | 1d | 2026-11-11 | 2026-11-12 | 1271, 1275, 1276, 1277, 1278 | 2026-10-09 | 2026-10-12 | 1d | 2026-10-14 | 2026-10-15 | 1d | 0d |
| 1280 | 1.6.13.13 | Ramaleo sanitario exterior PVC 4 | 4d | 2026-11-06 | 2026-11-11 | 1265, 1266 | 2026-10-05 | 2026-10-09 | 4d | 2026-10-08 | 2026-10-14 | 1d | 0d |
| 1281 | 1.6.13.14 | Ramaleo sanitario exterior PVC 2 | 3d | 2026-11-07 | 2026-11-11 | 1280SS+1d | 2026-10-06 | 2026-10-09 | 3d | 2026-10-09 | 2026-10-14 | 1d | 0d |
| 1282 | 1.6.13.15 | Prueba sanitaria | 1d | 2026-11-11 | 2026-11-12 | 1272, 1273, 1274, 1280, 1281 | 2026-10-09 | 2026-10-12 | 1d | 2026-10-14 | 2026-10-15 | 1d | 0d |
| 1283 | 1.6.13.16 | Centro de carga muros PB | 4d | 2026-11-10 | 2026-11-17 | 1265FS+3d, 1266FS+3d | 2026-10-08 | 2026-10-14 | 4d | 2026-10-13 | 2026-10-17 | 3d | 2d |
| 1284 | 1.6.13.17 | Firme de concreto 8 cm | 4d | 2026-11-12 | 2026-11-19 | 1279, 1282, 1286 | 2026-10-12 | 2026-10-16 | 4d | 2026-10-15 | 2026-10-20 | 46d | 0d |
| 1285 | 1.6.13.18 | Curado de concreto | 1d | 2026-11-19 | 2026-11-20 | 1284 | 2026-10-16 | 2026-10-17 | 1d | 2026-10-20 | 2026-10-21 | 46d | 17d |
| 1286 | 1.6.13.19 | Cisterna 2800 L con instalación | 18d | 2026-10-14 | 2026-11-05 | 1255, 1262, 1263 | 2026-09-10 | 2026-10-03 | 18d | 2026-09-14 | 2026-10-07 | 52d | 0d |
| 1287 | 1.6.13.20 | Banqueta y huellas de concreto | 8d | 2026-11-21 | 2026-12-01 | 1279, 1282, 1329, 1397FS-2d, 1406, 1398 | 2026-10-19 | 2026-10-28 | 8d | 2026-10-22 | 2026-11-02 | 29d | 0d |
| 1288 | 1.6.13.21 | Curado de concreto | 1d | 2026-12-01 | 2026-12-02 | 1287 | 2026-10-29 | 2026-10-29 | 1d | 2026-11-02 | 2026-11-03 | 29d | 0d |
| 1289 | 1.6.13.22 | Número oficial | 1d | 2027-01-04 | 2027-01-05 | 1297, 1298 | 2026-11-27 | 2026-11-28 | 1d | 2026-12-01 | 2026-12-02 | 29d |  |
| 1290 | 1.6.13.23 | Detallado de rodapié exterior | 4d | 2026-11-17 | 2026-11-21 | 1295 | 2026-10-14 | 2026-10-19 | 4d | 2026-10-17 | 2026-10-22 | 61d |  |
| 1291 | 1.6.13.24 | Detalle de losas y volados acabado fino | 4d | 2026-11-06 | 2026-11-11 | 1265, 1266 | 2026-10-05 | 2026-10-09 | 4d | 2026-10-08 | 2026-10-14 | 5d | 4d |
| 1292 | 1.6.13.25 | Detalle fino en muros interiores | 5d | 2026-11-09 | 2026-11-17 | 1269, 1270, 1271, 1272, 1273, 1274 | 2026-10-07 | 2026-10-14 | 5d | 2026-10-12 | 2026-10-17 | 2d | 1d |
| 1293 | 1.6.13.26 | Jardín interior bajo escalera con pozo de absorción | 12d | 2026-11-06 | 2026-11-23 | 1272FS-2d, 1273FS-2d, 1274FS-2d | 2026-10-05 | 2026-10-20 | 12d | 2026-10-08 | 2026-10-23 | 5d | 0d |

| ID | WBS | Task | Duration | Start | Finish | Predecessors | Baseline start | Baseline finish | Baseline duration | Baseline 1 start | Baseline 1 finish | Total slack | Free slack |
| --- | --- | --- | --- | --- | --- | --- | --- | --- | --- | --- | --- | --- | --- |
| 1294 | 1.6.14 | **ACABADOS EN FACHADA A** | 47d | 2026-10-31 | 2027-01-04 |  | 2026-09-29 | 2026-11-27 | 47d | 2026-10-02 | 2026-12-01 | 29d |  |
| 1295 | 1.6.14.1 | Aplanado grueso fachada | 12d | 2026-10-31 | 2026-11-17 | 1259 | 2026-09-29 | 2026-10-14 | 12d | 2026-10-02 | 2026-10-17 | 35d | 0d |
| 1296 | 1.6.14.2 | Aplanado fino estuco fachada | 10d | 2026-11-09 | 2026-11-23 | 1295SS+7d | 2026-10-07 | 2026-10-20 | 10d | 2026-10-12 | 2026-10-23 | 35d | 0d |
| 1297 | 1.6.14.3 | Pintura acrílica 1-0102P | 8d | 2026-12-17 | 2026-12-30 | 1285FS+5d, 1288FS+12d, 1299, 1302 | 2026-11-13 | 2026-11-25 | 8d | 2026-11-19 | 2026-11-28 | 31d | 2d |
| 1298 | 1.6.14.4 | Pintura acrílica 1-1404D | 10d | 2026-12-17 | 2027-01-04 | 1285FS+5d, 1288FS+12d, 1299, 1302 | 2026-11-13 | 2026-11-27 | 10d | 2026-11-19 | 2026-12-01 | 29d | 0d |
| 1299 | 1.6.14.5 | Cantera 40x60cm | 14d | 2026-11-23 | 2026-12-10 | 1295, 1296 | 2026-10-20 | 2026-11-06 | 14d | 2026-10-23 | 2026-11-10 | 35d | 6d |
| 1300 | 1.6.14.6 | Lambrin de permabase 1 cara | 3d | 2026-11-17 | 2026-11-20 | 1295 | 2026-10-14 | 2026-10-17 | 3d | 2026-10-17 | 2026-10-21 | 42d | 0d |
| 1301 | 1.6.14.7 | Enchapado de Permabase | 4d | 2026-11-20 | 2026-11-25 | 1300 | 2026-10-17 | 2026-10-22 | 4d | 2026-10-21 | 2026-10-26 | 42d | 0d |
| 1302 | 1.6.14.8 | Cubierta de Permabase | 5d | 2026-11-25 | 2026-12-01 | 1301 | 2026-10-22 | 2026-10-28 | 5d | 2026-10-27 | 2026-11-02 | 42d | 13d |
| 1303 | 1.6.15 | **APLANADOS Y PINTURA** | 63d | 2026-11-06 | 2027-01-29 |  | 2026-10-05 | 2026-12-23 | 63d | 2026-10-08 | 2026-12-30 | 3d |  |
| 1304 | 1.6.15.1 | Yeso pulido en muros | 14d | 2026-11-18 | 2026-12-04 | 1269, 1270, 1283FS-1d, 1291, 1292, 1293FS-8d, 1309FS-4d, 1375FS-2d, 1378, 1379, 1380, 1381, 1382FS-1d, 1383FS-1d, 1384FS-1d, 1385FS-1d, 1386FS-2d, 1387FS-2d, 1388FS-3d, 1391FS-1d, 1392FS-5d, 1393FS-5d, 1394FS-6d, 1395FS-2d, 1396FS-7d, 1305 | 2026-10-15 | 2026-11-02 | 14d | 2026-10-19 | 2026-11-05 | 1d | 0d |
| 1305 | 1.6.15.2 | Aplanado en muros enjarre grueso | 5d | 2026-11-06 | 2026-11-12 | 1265, 1266 | 2026-10-05 | 2026-10-12 | 5d | 2026-10-08 | 2026-10-15 | 4d | 3d |
| 1306 | 1.6.15.3 | Pintura vinílica OR-W13 SHOELACE | 13d | 2027-01-14 | 2027-01-29 | 1313FS-2d, 1314FS-2d, 1327FS-2d, 1334, 1335, 1336, 1337, 1338, 1339, 1345, 1346, 1347, 1348, 1409, 1410, 1412, 1413, 1342, 1343, 1340, 1341, 1349 | 2026-12-08 | 2026-12-23 | 13d | 2026-12-11 | 2026-12-30 | 1d | 0d |
| 1307 | 1.6.15.4 | Pintura vinílica PPUI5-13 Creamy M. | 10d | 2027-01-07 | 2027-01-20 | 1313, 1314, 1327, 1357, 1358, 1353, 1351 | 2026-12-01 | 2026-12-14 | 10d | 2026-12-04 | 2026-12-17 | 9d | 8d |
| 1308 | 1.6.15.5 | Pintura vinílica MD-06 Nano White | 8d | 2027-01-07 | 2027-01-18 | 1313, 1314, 1327, 1357, 1358, 1353, 1351 | 2026-12-01 | 2026-12-11 | 8d | 2026-12-04 | 2026-12-15 | 11d | 10d |
| 1309 | 1.6.15.6 | Yeso pulido en plafones | 10d | 2026-11-06 | 2026-11-20 | 1265, 1266 | 2026-10-05 | 2026-10-17 | 10d | 2026-10-08 | 2026-10-21 | 3d | 2d |
| 1310 | 1.6.15.7 | Perfilado de puertas y ventanas | 4d | 2026-11-23 | 2026-11-27 | 1304SS+4d | 2026-10-20 | 2026-10-24 | 4d | 2026-10-23 | 2026-10-28 | 56d |  |
| 1311 | 1.6.16 | **PISOS Y AZULEJOS** | 24d | 2026-11-28 | 2027-01-02 |  | 2026-10-27 | 2026-11-26 | 24d | 2026-10-30 | 2026-11-30 | 1d |  |
| 1312 | 1.6.16.1 | **AREA SOCIAL** | 15d | 2026-12-02 | 2026-12-21 |  | 2026-10-30 | 2026-11-19 | 15d | 2026-11-03 | 2026-11-23 | 1d |  |
| 1313 | 1.6.16.1.1 | Piso Adhara 44X89 | 14d | 2026-12-02 | 2026-12-19 | 1304FS-2d, 1400, 1399, 1316FS-5d | 2026-10-30 | 2026-11-18 | 14d | 2026-11-03 | 2026-11-21 | 1d | 0d |
| 1314 | 1.6.16.1.2 | Zoclo Adhara 44X89 | 5d | 2026-12-15 | 2026-12-21 | 1313FS-4d | 2026-11-11 | 2026-11-19 | 5d | 2026-11-17 | 2026-11-23 | 18d | 10d |
| 1315 | 1.6.16.2 | **RECAMARAS** | 8d | 2026-11-28 | 2026-12-09 |  | 2026-10-27 | 2026-11-05 | 8d | 2026-10-30 | 2026-11-09 | 1d |  |
| 1316 | 1.6.16.2.1 | Acabado aparente de pisos - pulido | 8d | 2026-11-28 | 2026-12-09 | 1304FS-5d | 2026-10-27 | 2026-11-05 | 8d | 2026-10-30 | 2026-11-09 | 1d | 0d |
| 1317 | 1.6.16.3 | **BAÑOS** | 17d | 2026-11-30 | 2026-12-21 |  | 2026-10-28 | 2026-11-19 | 17d | 2026-10-31 | 2026-11-23 | 12d |  |
| 1318 | 1.6.16.3.1 | Azulejo Mod. Ornamenta 60x30 | 5d | 2026-12-09 | 2026-12-15 | 1319FS-1d, 1389, 1390, 1400 | 2026-11-05 | 2026-11-11 | 5d | 2026-11-09 | 2026-11-17 | 12d | 0d |
| 1319 | 1.6.16.3.2 | Impermeabilización en regadera | 2d | 2026-12-08 | 2026-12-10 | 1304, 1323 | 2026-11-04 | 2026-11-06 | 2d | 2026-11-07 | 2026-11-10 | 12d | 0d |
| 1320 | 1.6.16.3.3 | Piso Mod. Valparaiso 20x20 | 4d | 2026-12-15 | 2026-12-19 | 1318 | 2026-11-11 | 2026-11-18 | 4d | 2026-11-17 | 2026-11-21 | 12d | 0d |
| 1321 | 1.6.16.3.4 | Zoclo Adhara 44X89 | 2d | 2026-12-18 | 2026-12-21 | 1320FS-1d | 2026-11-17 | 2026-11-19 | 2d | 2026-11-20 | 2026-11-23 | 37d |  |
| 1322 | 1.6.16.3.5 | Piso Adhara 44X89 | 3d | 2026-12-15 | 2026-12-18 | 1318 | 2026-11-11 | 2026-11-17 | 3d | 2026-11-17 | 2026-11-20 | 39d |  |
| 1323 | 1.6.16.3.6 | Fabricacion de nicho decorativo en baños | 6d | 2026-11-30 | 2026-12-08 | 1304FS-4d | 2026-10-28 | 2026-11-04 | 6d | 2026-10-31 | 2026-11-07 | 12d | 0d |
| 1324 | 1.6.16.3.7 | Sardinel en regadera | 4d | 2026-12-15 | 2026-12-19 | 1318 | 2026-11-11 | 2026-11-18 | 4d | 2026-11-17 | 2026-11-21 | 38d |  |

| ID | WBS | Task | Duration | Start | Finish | Predecessors | Baseline start | Baseline finish | Baseline duration | Baseline 1 start | Baseline 1 finish | Total slack | Free slack |
| --- | --- | --- | --- | --- | --- | --- | --- | --- | --- | --- | --- | --- | --- |
| 1325 | 1.6.16.4 | **ESCALERA** | 9d | 2026-12-17 | 2027-01-02 |  | 2026-11-13 | 2026-11-26 | 9d | 2026-11-19 | 2026-11-30 | 1d |  |
| 1326 | 1.6.16.4.1 | Piso Adhara 44X89 | 7d | 2026-12-17 | 2026-12-29 | 1192, 1304, 1313FS-2d | 2026-11-13 | 2026-11-24 | 7d | 2026-11-19 | 2026-11-27 | 1d | 0d |
| 1327 | 1.6.16.4.2 | Zoclo Adhara 44X89 | 4d | 2026-12-26 | 2027-01-02 | 1326FS-2d | 2026-11-21 | 2026-11-26 | 4d | 2026-11-25 | 2026-11-30 | 1d | 0d |
| 1328 | 1.6.17 | **EXTERIOR** | 3d | 2026-11-12 | 2026-11-18 |  | 2026-10-12 | 2026-10-15 | 3d | 2026-10-15 | 2026-10-19 | 6d |  |
| 1329 | 1.6.17.1 | Rastrilleo, afine y nivelado de tierra | 3d | 2026-11-12 | 2026-11-18 | 1279, 1282 | 2026-10-12 | 2026-10-15 | 3d | 2026-10-15 | 2026-10-19 | 6d | 0d |
| 1330 | 1.6.18 | **SEGUNDA LIMPIEZA DE OBRA** | 4d | 2027-01-02 | 2027-01-07 |  | 2026-11-26 | 2026-12-01 | 4d | 2026-11-30 | 2026-12-04 | 22d |  |
| 1331 | 1.6.18.1 | Segunda limpieza de obra | 2d | 2027-01-02 | 2027-01-05 | 1326, 1327 | 2026-11-26 | 2026-11-28 | 2d | 2026-11-30 | 2026-12-02 | 22d | 0d |
| 1332 | 1.6.18.2 | Segunda carga y acarreo de escombro | 2d | 2027-01-05 | 2027-01-07 | 1331 | 2026-11-28 | 2026-12-01 | 2d | 2026-12-02 | 2026-12-04 | 22d | 21d |
| 1333 | 1.6.19 | **CANCELERIA PUERTAS Y VENTANAS DE ALUMINIO** | 17d | 2026-12-17 | 2027-01-13 |  | 2026-11-13 | 2026-12-07 | 17d | 2026-11-19 | 2026-12-10 | 2d |  |
| 1334 | 1.6.19.1 | Fijo medidas 0.30x4.90m | 7d | 2026-12-21 | 2027-01-02 | 1304, 1313 | 2026-11-18 | 2026-11-26 | 7d | 2026-11-21 | 2026-11-30 | 10d | 9d |
| 1335 | 1.6.19.2 | Ventana Corrediza 1.80x1.60m | 4d | 2026-12-17 | 2026-12-22 | 1304FS+10d | 2026-11-13 | 2026-11-20 | 4d | 2026-11-19 | 2026-11-24 | 15d | 14d |
| 1336 | 1.6.19.3 | Ventana Corrediza 0.60x0.40m | 4d | 2026-12-21 | 2026-12-28 | 1304FS+12d | 2026-11-18 | 2026-11-23 | 4d | 2026-11-21 | 2026-11-26 | 13d | 12d |
| 1337 | 1.6.19.4 | Ventana Corrediza 1.54x0.50m | 4d | 2026-12-21 | 2026-12-28 | 1304FS+12d | 2026-11-18 | 2026-11-23 | 4d | 2026-11-21 | 2026-11-26 | 13d | 12d |
| 1338 | 1.6.19.5 | Fijo medidas 1.40x2.50m | 4d | 2026-12-26 | 2027-01-02 | 1304FS+10d, 1313FS+3d | 2026-11-21 | 2026-11-26 | 4d | 2026-11-25 | 2026-11-30 | 4d | 0d |
| 1339 | 1.6.19.6 | Ventana Corrediza 1.80x1.50m | 4d | 2026-12-29 | 2027-01-05 | 1304FS+7d, 1313FS+2d, 1326 | 2026-11-24 | 2026-11-28 | 4d | 2026-11-27 | 2026-12-02 | 2d | 0d |
| 1340 | 1.6.19.7 | Ventana Corrediza 1.40x1.60m | 4d | 2026-12-29 | 2027-01-05 | 1304, 1313, 1326 | 2026-11-24 | 2026-11-28 | 4d | 2026-11-27 | 2026-12-02 | 2d | 0d |
| 1341 | 1.6.19.8 | Ventana Corrediza 0.95x0.40m | 4d | 2026-12-29 | 2027-01-05 | 1304, 1313, 1326 | 2026-11-24 | 2026-11-28 | 4d | 2026-11-27 | 2026-12-02 | 2d | 0d |
| 1342 | 1.6.19.9 | Puerta corrediza 3.85x2.10m | 6d | 2027-01-02 | 2027-01-11 | 1338 | 2026-11-26 | 2026-12-03 | 6d | 2026-11-30 | 2026-12-08 | 4d | 3d |
| 1343 | 1.6.19.10 | Barandal de Cristal Templado | 6d | 2027-01-05 | 2027-01-13 | 1339, 1340, 1341 | 2026-11-28 | 2026-12-07 | 6d | 2026-12-02 | 2026-12-10 | 2d | 1d |
| 1344 | 1.6.20 | **CARPINTERIA, PUERTAS EXTERIORES E INTERIORES** | 9d | 2027-01-02 | 2027-01-14 |  | 2026-11-26 | 2026-12-08 | 9d | 2026-11-30 | 2026-12-11 | 1d |  |
| 1345 | 1.6.20.1 | Puerta P-01 de seguridad | 5d | 2027-01-02 | 2027-01-08 | 1327 | 2026-11-26 | 2026-12-02 | 5d | 2026-11-30 | 2026-12-07 | 5d | 4d |
| 1346 | 1.6.20.2 | Puerta P-01 interior | 8d | 2027-01-02 | 2027-01-13 | 1327 | 2026-11-26 | 2026-12-07 | 8d | 2026-11-30 | 2026-12-10 | 2d | 1d |
| 1347 | 1.6.20.3 | Puerta P-02 interior | 8d | 2027-01-02 | 2027-01-13 | 1327 | 2026-11-26 | 2026-12-07 | 8d | 2026-11-30 | 2026-12-10 | 2d | 1d |
| 1348 | 1.6.20.4 | Puerta P-03 interior | 4d | 2027-01-08 | 2027-01-14 | 1327FS+5d | 2026-12-02 | 2026-12-08 | 4d | 2026-12-07 | 2026-12-11 | 1d | 0d |
| 1349 | 1.6.20.5 | Puerta P-04 interior | 4d | 2027-01-08 | 2027-01-14 | 1327FS+5d | 2026-12-02 | 2026-12-08 | 4d | 2026-12-07 | 2026-12-11 | 1d | 0d |

| ID | WBS | Task | Duration | Start | Finish | Predecessors | Baseline start | Baseline finish | Baseline duration | Baseline 1 start | Baseline 1 finish | Total slack | Free slack |
| --- | --- | --- | --- | --- | --- | --- | --- | --- | --- | --- | --- | --- | --- |
| 1350 | 1.6.21 | **VOLADOS, BARANDAL Y ESCALERA** | 33d | 2026-11-23 | 2027-01-07 |  | 2026-10-20 | 2026-12-01 | 33d | 2026-10-23 | 2026-12-04 | 9d |  |
| 1351 | 1.6.21.1 | Barandal de Herreria en escalera | 4d | 2026-12-10 | 2026-12-15 | 1352FS-4d | 2026-11-06 | 2026-11-11 | 4d | 2026-11-10 | 2026-11-17 | 24d | 15d |
| 1352 | 1.6.21.2 | Escalera de herreria | 18d | 2026-11-23 | 2026-12-15 | 1293 | 2026-10-20 | 2026-11-11 | 18d | 2026-10-23 | 2026-11-17 | 9d | 0d |
| 1353 | 1.6.21.3 | Techumbre en acceso Principal | 14d | 2026-12-09 | 2026-12-29 | 1352FS-5d | 2026-11-05 | 2026-11-24 | 14d | 2026-11-09 | 2026-11-27 | 15d | 6d |
| 1354 | 1.6.21.4 | Techumbre en 1.80x0.50m | 7d | 2026-12-09 | 2026-12-17 | 1352FS-5d | 2026-11-05 | 2026-11-13 | 7d | 2026-11-09 | 2026-11-19 | 9d | 0d |
| 1355 | 1.6.21.5 | Techumbre en 1.40x0.50m | 7d | 2026-12-17 | 2026-12-29 | 1354 | 2026-11-13 | 2026-11-24 | 7d | 2026-11-19 | 2026-11-27 | 9d | 0d |
| 1356 | 1.6.21.6 | Imper con manto prefabricado | 5d | 2026-12-22 | 2026-12-30 | 1354, 1355FS-4d | 2026-11-19 | 2026-11-25 | 5d | 2026-11-23 | 2026-11-28 | 9d | 0d |
| 1357 | 1.6.21.7 | Plafon hoja tablaroca std | 5d | 2026-12-30 | 2027-01-07 | 1356 | 2026-11-25 | 2026-12-01 | 5d | 2026-11-28 | 2026-12-04 | 9d | 0d |
| 1358 | 1.6.21.8 | Acabado Woodstock en parte inf. Cubierta | 5d | 2026-12-30 | 2027-01-07 | 1356 | 2026-11-25 | 2026-12-01 | 5d | 2026-11-28 | 2026-12-04 | 9d | 0d |
| 1359 | 1.6.22 | **INSTALACION ELECTRICA** | 16d | 2026-11-30 | 2026-12-19 |  | 2026-10-28 | 2026-11-18 | 16d | 2026-10-31 | 2026-11-21 | 30d |  |
| 1360 | 1.6.22.1 | Alimentación eléctrica base a centro de carga | 5d | 2026-12-04 | 2026-12-11 | 1283, 1304 | 2026-11-02 | 2026-11-07 | 5d | 2026-11-05 | 2026-11-11 | 34d | 0d |
| 1361 | 1.6.22.2 | Interruptor termomagnético 1x20 A | 1d | 2026-12-11 | 2026-12-12 | 1360 | 2026-11-07 | 2026-11-09 | 1d | 2026-11-11 | 2026-11-12 | 34d | 4d |
| 1362 | 1.6.22.3 | Interruptor termomagnético 2x20 A | 1d | 2026-12-11 | 2026-12-12 | 1360 | 2026-11-07 | 2026-11-09 | 1d | 2026-11-11 | 2026-11-12 | 34d | 4d |
| 1363 | 1.6.22.4 | Salida para apagador 3 vías | 4d | 2026-11-30 | 2026-12-04 | 1265, 1304FS-4d | 2026-10-28 | 2026-11-02 | 4d | 2026-10-31 | 2026-11-05 | 30d | 0d |
| 1364 | 1.6.22.5 | Salida para apagador doble | 3d | 2026-12-04 | 2026-12-09 | 1363 | 2026-11-02 | 2026-11-05 | 3d | 2026-11-05 | 2026-11-09 | 32d | 0d |
| 1365 | 1.6.22.6 | Salida para apagador sencillo | 3d | 2026-12-04 | 2026-12-09 | 1363 | 2026-11-02 | 2026-11-05 | 3d | 2026-11-05 | 2026-11-09 | 32d | 0d |
| 1366 | 1.6.22.7 | Salida de alumbrado en losa | 5d | 2026-12-04 | 2026-12-11 | 1363 | 2026-11-02 | 2026-11-07 | 5d | 2026-11-05 | 2026-11-11 | 30d | 0d |
| 1367 | 1.6.22.8 | Salida para contacto exterior doble | 2d | 2026-12-04 | 2026-12-08 | 1363 | 2026-11-02 | 2026-11-04 | 2d | 2026-11-05 | 2026-11-07 | 33d | 3d |
| 1368 | 1.6.22.9 | Salida para contacto 220 V | 3d | 2026-12-08 | 2026-12-11 | 1363FS+2d | 2026-11-04 | 2026-11-07 | 3d | 2026-11-07 | 2026-11-11 | 30d | 0d |
| 1369 | 1.6.22.10 | Salida para contacto doble | 5d | 2026-12-08 | 2026-12-14 | 1363FS+2d | 2026-11-04 | 2026-11-10 | 5d | 2026-11-07 | 2026-11-13 | 33d | 3d |
| 1370 | 1.6.22.11 | Salida para contacto doble área húmeda | 2d | 2026-12-11 | 2026-12-14 | 1367, 1368 | 2026-11-07 | 2026-11-10 | 2d | 2026-11-11 | 2026-11-13 | 33d | 3d |
| 1371 | 1.6.22.12 | Salida TV / telefonía / intercom | 4d | 2026-12-11 | 2026-12-16 | 1367, 1368 | 2026-11-07 | 2026-11-12 | 4d | 2026-11-11 | 2026-11-18 | 31d | 1d |
| 1372 | 1.6.22.13 | Extractor 4 baño | 5d | 2026-12-11 | 2026-12-17 | 1367, 1368 | 2026-11-07 | 2026-11-13 | 5d | 2026-11-11 | 2026-11-19 | 30d | 0d |
| 1373 | 1.6.22.14 | Prueba eléctrica | 2d | 2026-12-17 | 2026-12-19 | 1360, 1361, 1362, 1363, 1364, 1365, 1366, 1367, 1368, 1369, 1370, 1371, 1372, 1426, 1427, 1433, 1428, 1429, 1431, 1432, 1435, 1437 | 2026-11-13 | 2026-11-18 | 2d | 2026-11-19 | 2026-11-21 | 30d | 29d |

| ID | WBS | Task | Duration | Start | Finish | Predecessors | Baseline start | Baseline finish | Baseline duration | Baseline 1 start | Baseline 1 finish | Total slack | Free slack |
| --- | --- | --- | --- | --- | --- | --- | --- | --- | --- | --- | --- | --- | --- |
| 1374 | 1.6.23 | **INSTALACIÓN HIDRO-SANITARIA** | 11d | 2026-11-12 | 2026-11-27 |  | 2026-10-12 | 2026-10-24 | 11d | 2026-10-15 | 2026-10-28 | 1d |  |
| 1375 | 1.6.23.1 | Tubería condensados PVC 1 | 5d | 2026-11-12 | 2026-11-20 | 1279 | 2026-10-12 | 2026-10-17 | 5d | 2026-10-15 | 2026-10-21 | 1d | 0d |
| 1376 | 1.6.23.2 | Tubería sanitaria PVC 4 | 5d | 2026-11-12 | 2026-11-20 | 1282 | 2026-10-12 | 2026-10-17 | 5d | 2026-10-15 | 2026-10-21 | 9d | 0d |
| 1377 | 1.6.23.3 | Coladera H-444 | 1d | 2026-11-20 | 2026-11-21 | 1376 | 2026-10-17 | 2026-10-19 | 1d | 2026-10-21 | 2026-10-22 | 9d | 4d |
| 1378 | 1.6.23.4 | Caja PVC para lavadora | 3d | 2026-11-12 | 2026-11-18 | 1279 | 2026-10-12 | 2026-10-15 | 3d | 2026-10-15 | 2026-10-19 | 1d | 0d |
| 1379 | 1.6.23.5 | Salida para secadora PVC 4 | 3d | 2026-11-12 | 2026-11-18 | 1282 | 2026-10-12 | 2026-10-15 | 3d | 2026-10-15 | 2026-10-19 | 1d | 0d |
| 1380 | 1.6.23.6 | Salida hidráulica para boiler | 2d | 2026-11-12 | 2026-11-17 | 1279 | 2026-10-12 | 2026-10-14 | 2d | 2026-10-15 | 2026-10-17 | 2d | 1d |
| 1381 | 1.6.23.7 | Salida hidráulica para llave de jardín | 3d | 2026-11-12 | 2026-11-18 | 1279 | 2026-10-12 | 2026-10-15 | 3d | 2026-10-15 | 2026-10-19 | 1d | 0d |
| 1382 | 1.6.23.8 | Salida hidráulica para lavabo | 4d | 2026-11-12 | 2026-11-19 | 1279 | 2026-10-12 | 2026-10-16 | 4d | 2026-10-15 | 2026-10-20 | 1d | 0d |
| 1383 | 1.6.23.9 | Salida hidráulica para purificación | 4d | 2026-11-12 | 2026-11-19 | 1279 | 2026-10-12 | 2026-10-16 | 4d | 2026-10-15 | 2026-10-20 | 1d | 0d |
| 1384 | 1.6.23.10 | Salida sanitaria para lavabo | 2d | 2026-11-17 | 2026-11-19 | 1279FS+2d | 2026-10-14 | 2026-10-16 | 2d | 2026-10-17 | 2026-10-20 | 1d | 0d |
| 1385 | 1.6.23.11 | Salida hidráulica para lavadero | 2d | 2026-11-17 | 2026-11-19 | 1279FS+2d | 2026-10-14 | 2026-10-16 | 2d | 2026-10-17 | 2026-10-20 | 1d | 0d |
| 1386 | 1.6.23.12 | Salida sanitaria para lavadero | 2d | 2026-11-18 | 2026-11-20 | 1279FS+3d | 2026-10-15 | 2026-10-17 | 2d | 2026-10-19 | 2026-10-21 | 1d | 0d |
| 1387 | 1.6.23.13 | Salida hidráulica para lavadora | 2d | 2026-11-18 | 2026-11-20 | 1279FS+3d | 2026-10-15 | 2026-10-17 | 2d | 2026-10-19 | 2026-10-21 | 1d | 0d |
| 1388 | 1.6.23.14 | Salida sanitaria para lavadora | 2d | 2026-11-19 | 2026-11-21 | 1282FS+4d | 2026-10-16 | 2026-10-19 | 2d | 2026-10-20 | 2026-10-22 | 1d | 0d |
| 1389 | 1.6.23.15 | Salida hidráulica para regadera | 5d | 2026-11-19 | 2026-11-25 | 1279FS+4d | 2026-10-16 | 2026-10-22 | 5d | 2026-10-20 | 2026-10-26 | 6d | 0d |
| 1390 | 1.6.23.16 | Salida sanitaria para regadera | 4d | 2026-11-19 | 2026-11-24 | 1282FS+4d | 2026-10-16 | 2026-10-21 | 4d | 2026-10-20 | 2026-10-24 | 7d | 2d |
| 1391 | 1.6.23.17 | Salida hidráulica para WC | 2d | 2026-11-17 | 2026-11-19 | 1282FS+2d | 2026-10-14 | 2026-10-16 | 2d | 2026-10-17 | 2026-10-20 | 1d | 0d |
| 1392 | 1.6.23.18 | Salida sanitaria para WC | 4d | 2026-11-19 | 2026-11-24 | 1282FS+4d | 2026-10-16 | 2026-10-21 | 4d | 2026-10-20 | 2026-10-24 | 1d | 0d |
| 1393 | 1.6.23.19 | Salida hidráulica para zinc | 4d | 2026-11-19 | 2026-11-24 | 1282FS+4d | 2026-10-16 | 2026-10-21 | 4d | 2026-10-20 | 2026-10-24 | 1d | 0d |
| 1394 | 1.6.23.20 | Salida sanitaria para zinc | 3d | 2026-11-21 | 2026-11-25 | 1282FS+6d | 2026-10-19 | 2026-10-22 | 3d | 2026-10-22 | 2026-10-26 | 1d | 0d |
| 1395 | 1.6.23.21 | Tubo para ventila de baño 2 | 5d | 2026-11-12 | 2026-11-20 | 1375SS | 2026-10-12 | 2026-10-17 | 5d | 2026-10-15 | 2026-10-21 | 1d | 0d |
| 1396 | 1.6.23.22 | Tubo para minisplit PVC 3 | 5d | 2026-11-20 | 2026-11-26 | 1395 | 2026-10-17 | 2026-10-23 | 5d | 2026-10-21 | 2026-10-27 | 1d | 0d |
| 1397 | 1.6.23.23 | Cuadro de medición | 5d | 2026-11-18 | 2026-11-24 | 1329 | 2026-10-15 | 2026-10-21 | 5d | 2026-10-19 | 2026-10-24 | 6d | 0d |
| 1398 | 1.6.23.24 | Pozo de absorción 0.50x0.50x0.50 | 3d | 2026-11-18 | 2026-11-21 | 1329 | 2026-10-15 | 2026-10-19 | 3d | 2026-10-19 | 2026-10-22 | 9d | 0d |
| 1399 | 1.6.23.25 | Prueba sanitaria final | 1d | 2026-11-26 | 2026-11-27 | 1375, 1376, 1377, 1379, 1384, 1386, 1388, 1390, 1392, 1395, 1396 | 2026-10-23 | 2026-10-24 | 1d | 2026-10-28 | 2026-10-28 | 5d | 4d |
| 1400 | 1.6.23.26 | Prueba hidrostática final | 1d | 2026-11-25 | 2026-11-26 | 1380, 1381, 1382, 1383, 1385, 1387, 1389, 1391, 1393, 1397, 1398, 1403, 1404, 1402, 1401 | 2026-10-22 | 2026-10-23 | 1d | 2026-10-27 | 2026-10-27 | 6d | 5d |
| 1401 | 1.6.23.27 | Salida válvula control 19 mm | 1d | 2026-11-24 | 2026-11-25 | 1397 | 2026-10-21 | 2026-10-22 | 1d | 2026-10-26 | 2026-10-26 | 6d | 0d |
| 1402 | 1.6.23.28 | Salida válvula control 13 mm | 1d | 2026-11-24 | 2026-11-25 | 1397 | 2026-10-21 | 2026-10-22 | 1d | 2026-10-26 | 2026-10-26 | 6d | 0d |
| 1403 | 1.6.23.29 | Salida hidráulica para tanque hidroneumático | 3d | 2026-11-18 | 2026-11-21 | 1329 | 2026-10-15 | 2026-10-19 | 3d | 2026-10-19 | 2026-10-22 | 9d | 3d |
| 1404 | 1.6.23.30 | Salida hidráulica para Active Driver | 3d | 2026-11-18 | 2026-11-21 | 1329 | 2026-10-15 | 2026-10-19 | 3d | 2026-10-19 | 2026-10-22 | 9d | 3d |

| ID | WBS | Task | Duration | Start | Finish | Predecessors | Baseline start | Baseline finish | Baseline duration | Baseline 1 start | Baseline 1 finish | Total slack | Free slack |
| --- | --- | --- | --- | --- | --- | --- | --- | --- | --- | --- | --- | --- | --- |
| 1405 | 1.6.24 | **INSTALACION DE GAS** | 8d | 2026-11-10 | 2026-11-21 |  | 2026-10-08 | 2026-10-19 | 8d | 2026-10-13 | 2026-10-22 | 29d |  |
| 1406 | 1.6.24.1 | Ramaleo para gas 1/2 | 5d | 2026-11-13 | 2026-11-21 | 1329FS-2d, 1407 | 2026-10-13 | 2026-10-19 | 5d | 2026-10-16 | 2026-10-22 | 29d | 0d |
| 1407 | 1.6.24.2 | Excavación a mano material tipo B | 3d | 2026-11-10 | 2026-11-13 | 1329FF-2d | 2026-10-08 | 2026-10-13 | 3d | 2026-10-13 | 2026-10-16 | 29d | 0d |
| 1408 | 1.6.25 | **MUEBLES SANITARIOS** | 29d | 2026-12-21 | 2027-01-29 |  | 2026-11-18 | 2026-12-23 | 29d | 2026-11-21 | 2026-12-30 | 9d |  |
| 1409 | 1.6.25.1 | WC completo Austral | 2d | 2026-12-21 | 2026-12-22 | 1313, 1320, 1399, 1400 | 2026-11-18 | 2026-11-20 | 2d | 2026-11-21 | 2026-11-24 | 15d | 14d |
| 1410 | 1.6.25.2 | Lavabo Senna con pedestal | 4d | 2026-12-21 | 2026-12-28 | 1313, 1318, 1320, 1399, 1400 | 2026-11-18 | 2026-11-23 | 4d | 2026-11-21 | 2026-11-26 | 13d | 12d |
| 1411 | 1.6.25.3 | Tarja / lavabo combo Guinea 80x45 | 2d | 2026-12-21 | 2026-12-22 | 1157, 1313, 1318, 1320, 1400 | 2026-11-18 | 2026-11-20 | 2d | 2026-11-21 | 2026-11-24 | 36d |  |
| 1412 | 1.6.25.4 | Regadera con monomando | 3d | 2026-12-23 | 2026-12-29 | 1313, 1318FS+2d, 1320FS+2d, 1399, 1400 | 2026-11-20 | 2026-11-24 | 3d | 2026-11-24 | 2026-11-27 | 12d | 11d |
| 1413 | 1.6.25.5 | Coladera inserto cerámico | 2d | 2026-12-26 | 2026-12-29 | 1318, 1320FS+3d, 1400 | 2026-11-21 | 2026-11-24 | 2d | 2026-11-25 | 2026-11-27 | 12d | 11d |
| 1414 | 1.6.25.6 | Toallero sencillo | 1d | 2027-01-28 | 2027-01-29 | 1306FS-1d | 2026-12-23 | 2026-12-23 | 1d | 2026-12-29 | 2026-12-30 | 1d | 0d |
| 1415 | 1.6.25.7 | Toallero barra | 1d | 2027-01-28 | 2027-01-29 | 1306FS-1d | 2026-12-23 | 2026-12-23 | 1d | 2026-12-29 | 2026-12-30 | 1d | 0d |
| 1416 | 1.6.25.8 | Portapapel | 1d | 2027-01-28 | 2027-01-29 | 1306FS-1d | 2026-12-23 | 2026-12-23 | 1d | 2026-12-29 | 2026-12-30 | 1d | 0d |
| 1417 | 1.6.25.9 | Gancho baño | 1d | 2027-01-28 | 2027-01-29 | 1306FS-1d | 2026-12-23 | 2026-12-23 | 1d | 2026-12-29 | 2026-12-30 | 1d | 0d |
| 1418 | 1.6.26 | **EQUIPAMIENTO** | 6d | 2026-11-04 | 2026-11-11 |  | 2026-10-02 | 2026-10-09 | 6d | 2026-10-06 | 2026-10-14 | 60d |  |
| 1419 | 1.6.26.1 | Electronivel Rotoplas 5 m | 2d | 2026-11-05 | 2026-11-07 | 1424 | 2026-10-03 | 2026-10-06 | 2d | 2026-10-07 | 2026-10-09 | 63d | 62d |
| 1420 | 1.6.26.2 | Manómetro | 1d | 2026-11-05 | 2026-11-06 | 1424 | 2026-10-03 | 2026-10-05 | 1d | 2026-10-07 | 2026-10-08 | 64d | 63d |
| 1421 | 1.6.26.3 | Interruptor de presión 30-50 PSI | 1d | 2026-11-05 | 2026-11-06 | 1424 | 2026-10-03 | 2026-10-05 | 1d | 2026-10-07 | 2026-10-08 | 64d | 63d |
| 1422 | 1.6.26.4 | Tanque hidroneumático FPS-24LX | 3d | 2026-11-05 | 2026-11-09 | 1424 | 2026-10-03 | 2026-10-07 | 3d | 2026-10-07 | 2026-10-12 | 60d | 0d |
| 1423 | 1.6.26.5 | Bomba sumergible Dominator 1.2 HP | 2d | 2026-11-09 | 2026-11-11 | 1422 | 2026-10-07 | 2026-10-09 | 2d | 2026-10-12 | 2026-10-14 | 60d | 59d |
| 1424 | 1.6.26.6 | Cisterna prefabricada 2800 L | 1d | 2026-11-04 | 2026-11-05 | 1286FF | 2026-10-02 | 2026-10-03 | 1d | 2026-10-06 | 2026-10-07 | 60d | 0d |
| 1425 | 1.6.27 | **LUMINARIAS** | 5d | 2026-12-11 | 2026-12-17 |  | 2026-11-07 | 2026-11-13 | 5d | 2026-11-11 | 2026-11-19 | 30d |  |
| 1426 | 1.6.27.1 | Roseta cerámica | 3d | 2026-12-11 | 2026-12-15 | 1366 | 2026-11-07 | 2026-11-11 | 3d | 2026-11-11 | 2026-11-17 | 32d | 2d |
| 1427 | 1.6.27.2 | Luminaria lagartijera LED | 3d | 2026-12-11 | 2026-12-15 | 1366 | 2026-11-07 | 2026-11-11 | 3d | 2026-11-11 | 2026-11-17 | 32d | 2d |
| 1428 | 1.6.27.3 | Spot 6W Tecnolite | 3d | 2026-12-11 | 2026-12-15 | 1366 | 2026-11-07 | 2026-11-11 | 3d | 2026-11-11 | 2026-11-17 | 32d | 2d |
| 1429 | 1.6.27.4 | Spot 7W Tecnolite | 3d | 2026-12-11 | 2026-12-15 | 1366 | 2026-11-07 | 2026-11-11 | 3d | 2026-11-11 | 2026-11-17 | 32d | 2d |
| 1430 | 1.6.27.5 | Arbotante exterior | 2d | 2026-12-11 | 2026-12-14 | 1366 | 2026-11-07 | 2026-11-10 | 2d | 2026-11-11 | 2026-11-13 | 30d | 0d |
| 1431 | 1.6.27.6 | Estaca LED exterior | 3d | 2026-12-14 | 2026-12-17 | 1430 | 2026-11-10 | 2026-11-13 | 3d | 2026-11-13 | 2026-11-19 | 30d | 0d |
| 1432 | 1.6.27.7 | Tira LED | 3d | 2026-12-14 | 2026-12-17 | 1430 | 2026-11-10 | 2026-11-13 | 3d | 2026-11-13 | 2026-11-19 | 30d | 0d |
| 1433 | 1.6.27.8 | Spot exterior 50W | 2d | 2026-12-11 | 2026-12-14 | 1366 | 2026-11-07 | 2026-11-10 | 2d | 2026-11-11 | 2026-11-13 | 33d | 3d |

| ID | WBS | Task | Type | Duration | Start | Finish | Predecessors | Complete | Remaining | Baseline start | Baseline finish | Baseline duration | Baseline 1 start | Baseline 1 finish | Total slack | Free slack |
| --- | --- | --- | --- | --- | --- | --- | --- | --- | --- | --- | --- | --- | --- | --- | --- | --- |
| 1434 | 1.6.28 | **TIMBRE** |  | 2d | 2026-12-12 | 2026-12-15 |  |  |  | 2026-11-09 | 2026-11-11 | 2d | 2026-11-12 | 2026-11-17 | 32d |  |
| 1435 | 1.6.28.1 | Timbre inalámbrico con bocina |  | 2d | 2026-12-12 | 2026-12-15 | 1364FS+3d, 1365FS+3d |  |  | 2026-11-09 | 2026-11-11 | 2d | 2026-11-12 | 2026-11-17 | 32d | 2d |
| 1436 | 1.6.29 | **OBRA EXTERIOR - BARDA** |  | 18d | 2026-11-18 | 2026-12-10 |  |  |  | 2026-10-15 | 2026-11-06 | 18d | 2026-10-19 | 2026-11-10 | 38d |  |
| 1437 | 1.6.29.1 | Murete convencional |  | 5d | 2026-11-24 | 2026-11-30 | 1329FS+5d |  |  | 2026-10-21 | 2026-10-27 | 5d | 2026-10-26 | 2026-10-30 | 44d | 14d |
| 1438 | 1.6.29.2 | Barda de block aparente |  | 18d | 2026-11-18 | 2026-12-10 | 1329 |  |  | 2026-10-15 | 2026-11-06 | 18d | 2026-10-19 | 2026-11-10 | 38d | 37d |
| 1439 | 1.6.30 | **TERCER LIMPIEZA DE OBRA** |  | 8d | 2027-01-29 | 2027-02-09 |  |  |  | 2026-12-26 | 2027-01-18 | 16d | 2026-12-30 | 2027-01-21 | 1d |  |
| 1440 | 1.6.30.1 | Limpieza fina para entrega |  | 3d | 2027-01-29 | 2027-02-03 | 1306, 1307, 1308, 1339, 1348, 1349, 1373, 1399, 1400, 1414, 1415, 1416, 1417, 1419, 1420, 1421, 1422, 1423, 1438 |  |  | 2026-12-26 | 2027-01-04 | 5d | 2026-12-30 | 2027-01-07 | 1d | 0d |
| 1441 | 1.6.30.2 | Tercera limpieza de obra |  | 4d | 2027-02-01 | 2027-02-05 | 1332FS-2d, 1440FS-2d |  |  | 2027-01-04 | 2027-01-11 | 5d | 2027-01-07 | 2027-01-14 | 1d | 0d |
| 1442 | 1.6.30.3 | Tercera carga y acarreo de escombro |  | 5d | 2027-02-03 | 2027-02-09 | 1441FS-2d |  |  | 2027-01-11 | 2027-01-18 | 6d | 2027-01-14 | 2027-01-21 | 1d | 0d |
| 1443 | 1.7 | **LOTE 20 M-663 ARTICO-A** |  | 191d | 2026-06-10 A | 2027-02-10 |  | 3% | 185.12d | 2026-05-29 | 2027-01-18 | 181d | 2026-05-29 | 2027-01-21 | 0d |  |
| 1444 | 1.7.1 | **HITOS IMPORTANTES DEL LOTE** |  | 191d | 2026-06-10 A | 2027-02-10 |  |  | 191d | 2026-05-29 | 2027-01-18 | 181d | 2026-05-29 | 2027-01-21 | 0d |  |
| 1445 | 1.7.1.1 | Inicio del Lote-20 M-663 -Artico-A | milestone | 0d | 2026-06-10 A | 2026-06-10 A | 9 | 100% |  | 2026-05-29 | 2026-05-29 |  | 2026-05-29 | 2026-05-29 |  |  |
| 1446 | 1.7.1.2 | Colado de Losa de Cimentación | milestone | 0d | 2026-07-22 | 2026-07-22 | 1477 |  |  | 2026-06-19 | 2026-06-19 |  | 2026-06-24 | 2026-06-24 | 157d |  |
| 1447 | 1.7.1.3 | Colado de Losa de Entrepiso | milestone | 0d | 2026-08-28 | 2026-08-28 | 1513 |  |  | 2026-07-28 | 2026-07-28 |  | 2026-07-31 | 2026-07-31 | 127d |  |
| 1448 | 1.7.1.4 | Colado de Losa de Azotea | milestone | 0d | 2026-10-06 | 2026-10-06 | 1553 |  |  | 2026-09-02 | 2026-09-02 |  | 2026-09-07 | 2026-09-07 | 97d |  |
| 1449 | 1.7.1.5 | Entrega de vivienda | milestone | 0d | 2027-02-10 | 2027-02-10 | 1745, 1746, 1747 |  |  | 2027-01-18 | 2027-01-18 |  | 2027-01-21 | 2027-01-21 | 0d |  |
| 1450 | 1.7.2 | **TRABAJOS PRELIMINARES** |  | 5d | 2026-06-10 A | 2026-06-16 A |  | 100% |  | 2026-05-29 | 2026-06-02 | 2d | 2026-05-29 | 2026-06-05 |  |  |
| 1451 | 1.7.2.1 | Trazo y nivelación |  | 5d | 2026-06-10 A | 2026-06-16 A | 1445 | 100% |  | 2026-05-29 | 2026-06-02 | 2d | 2026-05-29 | 2026-06-05 |  |  |
| 1452 | 1.7.3 | **EXCAVACIONES** |  | 11d | 2026-06-16 A | 2026-06-30 A |  | 100% |  | 2026-06-02 | 2026-06-05 | 3d | 2026-06-05 | 2026-06-09 |  |  |
| 1453 | 1.7.3.1 | Excavación a mano material tipo B |  | 10d | 2026-06-16 A | 2026-06-29 A | 1451 | 100% |  | 2026-06-02 | 2026-06-05 | 3d | 2026-06-05 | 2026-06-09 |  |  |
| 1454 | 1.7.3.2 | Acarreo en carretilla 20 m |  | 10d | 2026-06-17 A | 2026-06-30 A | 1453SS+1d | 100% |  | 2026-06-03 | 2026-06-05 | 2d | 2026-06-06 | 2026-06-09 |  |  |
| 1455 | 1.7.4 | **CIMENTACION** |  | 13d | 2026-07-08 A | 2026-07-23 |  | 16% | 10.87d | 2026-06-05 | 2026-06-22 | 13d | 2026-06-09 | 2026-06-25 | 0d |  |
| 1456 | 1.7.4.1 | Cimbra perimetral losa de cimentación |  | 3d | 2026-07-08 A | 2026-07-10 A | 1453FS+7d, 1454 | 100% |  | 2026-06-05 | 2026-06-09 | 3d | 2026-06-09 | 2026-06-12 |  |  |
| 1457 | 1.7.4.2 | Sistema antitermitas PVC |  | 3d | 2026-07-08 A | 2026-07-10 A | 1453FS+7d, 1454 | 100% |  | 2026-06-05 | 2026-06-09 | 3d | 2026-06-09 | 2026-06-12 |  |  |
| 1458 | 1.7.4.3 | Hule negro en cimentación |  | 1d | 2026-07-11 A | 2026-07-13 | 1457 | 63% | 0.38d | 2026-06-09 | 2026-06-10 | 1d | 2026-06-12 | 2026-06-13 | 1d | 0d |
| 1459 | 1.7.4.4 | Ramaleo poliducto eléctrico cimentación |  | 2d | 2026-07-13 | 2026-07-15 | 1458 |  |  | 2026-06-10 | 2026-06-12 | 2d | 2026-06-13 | 2026-06-16 | 4d | 0d |
| 1460 | 1.7.4.5 | Ramaleo eléctrico base-medición a centro de carga |  | 1d | 2026-07-13 | 2026-07-14 | 1458 |  |  | 2026-06-10 | 2026-06-11 | 1d | 2026-06-13 | 2026-06-15 | 5d | 1d |
| 1461 | 1.7.4.6 | Ramaleo eléctrico exterior |  | 1d | 2026-07-15 | 2026-07-16 | 1459, 1460 |  |  | 2026-06-12 | 2026-06-13 | 1d | 2026-06-16 | 2026-06-17 | 4d |  |
| 1462 | 1.7.4.7 | Ramaleo para cable poliducto 3/4 |  | 1d | 2026-07-15 | 2026-07-16 | 1459, 1460 |  |  | 2026-06-12 | 2026-06-13 | 1d | 2026-06-16 | 2026-06-17 | 4d |  |
| 1463 | 1.7.4.8 | Ramaleo para TV poliducto 3/4 |  | 1d | 2026-07-15 | 2026-07-16 | 1459, 1460 |  |  | 2026-06-12 | 2026-06-13 | 1d | 2026-06-16 | 2026-06-17 | 4d |  |
| 1464 | 1.7.4.9 | Ramaleo hidráulico CPVC 1-1/4" cimentación |  | 1d | 2026-07-13 | 2026-07-14 | 1458 |  |  | 2026-06-10 | 2026-06-11 | 1d | 2026-06-13 | 2026-06-15 | 1d | 0d |
| 1465 | 1.7.4.10 | Ramaleo hidráulico CPVC 1 cimentación |  | 1d | 2026-07-13 | 2026-07-14 | 1458, 1464SS |  |  | 2026-06-10 | 2026-06-11 | 1d | 2026-06-13 | 2026-06-15 | 1d | 0d |
| 1466 | 1.7.4.11 | Ramaleo hidráulico CPVC 3/4 cimentación |  | 2d | 2026-07-14 | 2026-07-16 | 1465 |  |  | 2026-06-11 | 2026-06-13 | 2d | 2026-06-15 | 2026-06-17 | 1d | 0d |
| 1467 | 1.7.4.12 | Ramaleo hidráulico CPVC 1/2 cimentación |  | 2d | 2026-07-16 | 2026-07-18 | 1466 |  |  | 2026-06-13 | 2026-06-16 | 2d | 2026-06-17 | 2026-06-19 | 1d | 0d |
| 1468 | 1.7.4.13 | Prueba hidráulica |  | 1d | 2026-07-18 | 2026-07-20 | 1464, 1465, 1466, 1467 |  |  | 2026-06-16 | 2026-06-17 | 1d | 2026-06-19 | 2026-06-22 | 1d |  |
| 1469 | 1.7.4.14 | Ramaleo sanitario PVC 4 cimentación |  | 2d | 2026-07-14 | 2026-07-16 | 1458FS+1d |  |  | 2026-06-11 | 2026-06-13 | 2d | 2026-06-15 | 2026-06-17 | 2d | 0d |
| 1470 | 1.7.4.15 | Ramaleo sanitario PVC 2 cimentación |  | 1d | 2026-07-16 | 2026-07-17 | 1469 |  |  | 2026-06-13 | 2026-06-15 | 1d | 2026-06-17 | 2026-06-18 | 2d | 0d |
| 1471 | 1.7.4.16 | Prueba sanitaria |  | 1d | 2026-07-17 | 2026-07-18 | 1469, 1470 |  |  | 2026-06-15 | 2026-06-16 | 1d | 2026-06-18 | 2026-06-19 | 2d |  |
| 1472 | 1.7.4.17 | Acero contratrabe CT-1 |  | 4d | 2026-07-11 A | 2026-07-16 | 1456 | 16% | 3.38d | 2026-06-09 | 2026-06-13 | 4d | 2026-06-12 | 2026-06-17 | 0d |  |
| 1473 | 1.7.4.18 | Acero contratrabe CT-2 |  | 4d | 2026-07-11 A | 2026-07-16 | 1456 | 16% | 3.38d | 2026-06-09 | 2026-06-13 | 4d | 2026-06-12 | 2026-06-17 | 0d |  |
| 1474 | 1.7.4.19 | Malla electrosoldada 6-6/8-8 |  | 2d | 2026-07-18 | 2026-07-21 | 1472, 1473, 1475, 1476 |  |  | 2026-06-16 | 2026-06-18 | 2d | 2026-06-19 | 2026-06-23 | 0d |  |
| 1475 | 1.7.4.20 | Bastón de refuerzo LS |  | 2d | 2026-07-16 | 2026-07-18 | 1472, 1473 |  |  | 2026-06-13 | 2026-06-16 | 2d | 2026-06-17 | 2026-06-19 | 0d |  |
| 1476 | 1.7.4.21 | Bastón de refuerzo LI |  | 2d | 2026-07-16 | 2026-07-18 | 1472, 1473 |  |  | 2026-06-13 | 2026-06-16 | 2d | 2026-06-17 | 2026-06-19 | 0d |  |
| 1477 | 1.7.4.22 | Colado losa de cimentación f’c=200 |  | 1d | 2026-07-21 | 2026-07-22 | 1456, 1458, 1461, 1462, 1463, 1468, 1471, 1472, 1473, 1474, 1475, 1476, 1479, 1480 |  |  | 2026-06-18 | 2026-06-19 | 1d | 2026-06-23 | 2026-06-24 | 0d |  |
| 1478 | 1.7.4.23 | Curado de concreto |  | 1d | 2026-07-22 | 2026-07-23 | 1477 |  |  | 2026-06-19 | 2026-06-22 | 1d | 2026-06-24 | 2026-06-25 | 0d |  |
| 1479 | 1.7.4.24 | Acero zapata ZT-1 |  | 4d | 2026-07-16 | 2026-07-21 | 1472, 1473 |  |  | 2026-06-13 | 2026-06-18 | 4d | 2026-06-17 | 2026-06-23 | 0d |  |
| 1480 | 1.7.4.25 | Acero zapata ZT-2 |  | 4d | 2026-07-16 | 2026-07-21 | 1472, 1473 |  |  | 2026-06-13 | 2026-06-18 | 4d | 2026-06-17 | 2026-06-23 | 0d |  |

| ID | WBS | Task | Duration | Start | Finish | Predecessors | Baseline start | Baseline finish | Baseline duration | Baseline 1 start | Baseline 1 finish | Total slack | Free slack |
| --- | --- | --- | --- | --- | --- | --- | --- | --- | --- | --- | --- | --- | --- |
| 1481 | 1.7.5 | **MUROS, PLANTA BAJA. CASTILLOS Y CERRAMIENTOS** | 20d | 2026-07-17 | 2026-08-11 |  | 2026-06-15 | 2026-07-09 | 20d | 2026-06-18 | 2026-07-14 | 5d |  |
| 1482 | 1.7.5.1 | Anclaje de castillos y Columnas PB | 5d | 2026-07-17 | 2026-07-23 | 1472FS+1d, 1473FS+1d | 2026-06-15 | 2026-06-22 | 5d | 2026-06-18 | 2026-06-25 | 144d | 0d |
| 1483 | 1.7.5.2 | Castillo K1 | 4d | 2026-07-23 | 2026-07-29 | 1478, 1482 | 2026-06-22 | 2026-06-26 | 4d | 2026-06-25 | 2026-06-30 | 144d | 0d |
| 1484 | 1.7.5.3 | Castillo K3 | 3d | 2026-07-27 | 2026-07-30 | 1483FS-2d | 2026-06-24 | 2026-06-27 | 3d | 2026-06-27 | 2026-07-01 | 144d | 0d |
| 1485 | 1.7.5.4 | Castillo K4 | 3d | 2026-07-27 | 2026-07-30 | 1483FS-2d | 2026-06-24 | 2026-06-27 | 3d | 2026-06-27 | 2026-07-01 | 144d | 0d |
| 1486 | 1.7.5.5 | Castillo K5 | 3d | 2026-07-29 | 2026-08-01 | 1484FS-1d, 1485FS-1d | 2026-06-26 | 2026-06-30 | 3d | 2026-06-30 | 2026-07-03 | 144d | 0d |
| 1487 | 1.7.5.6 | Refuerzo de muro K6 | 3d | 2026-07-30 | 2026-08-03 | 1486FS-2d | 2026-06-27 | 2026-07-01 | 3d | 2026-07-01 | 2026-07-04 | 144d | 0d |
| 1488 | 1.7.5.7 | Dala de cerramiento CR-1 | 4d | 2026-07-30 | 2026-08-04 | 1483, 1484 | 2026-06-27 | 2026-07-02 | 4d | 2026-07-01 | 2026-07-06 | 147d |  |
| 1489 | 1.7.5.8 | Dala de cerramiento CR-2 | 3d | 2026-07-30 | 2026-08-03 | 1483, 1484 | 2026-06-27 | 2026-07-01 | 3d | 2026-07-01 | 2026-07-04 | 148d |  |
| 1490 | 1.7.5.9 | Cadena block dala | 4d | 2026-08-03 | 2026-08-07 | 1487 | 2026-07-01 | 2026-07-06 | 4d | 2026-07-06 | 2026-07-09 | 144d |  |
| 1491 | 1.7.5.10 | Muro de ladrillo aparente | 15d | 2026-07-23 | 2026-08-11 | 1478 | 2026-06-22 | 2026-07-09 | 15d | 2026-06-25 | 2026-07-14 | 0d |  |
| 1492 | 1.7.5.11 | Muro de block planta baja | 13d | 2026-07-27 | 2026-08-11 | 1478FS+2d | 2026-06-24 | 2026-07-09 | 13d | 2026-06-27 | 2026-07-14 | 0d |  |
| 1493 | 1.7.5.12 | Ramaleo electrico en Muros Planta Baja | 4d | 2026-07-30 | 2026-08-04 | 1491SS+5d | 2026-06-27 | 2026-07-02 | 4d | 2026-07-01 | 2026-07-06 | 3d | 0d |
| 1494 | 1.7.5.13 | Ramaleo para cable poliducto 3/4 | 2d | 2026-08-04 | 2026-08-06 | 1493 | 2026-07-02 | 2026-07-04 | 2d | 2026-07-07 | 2026-07-08 | 3d | 0d |
| 1495 | 1.7.5.14 | Ramaleo para TV poliducto 3/4 | 3d | 2026-08-06 | 2026-08-10 | 1494 | 2026-07-06 | 2026-07-08 | 3d | 2026-07-09 | 2026-07-13 | 3d | 2d |
| 1496 | 1.7.6 | **ESCALERA** | 10d | 2026-08-28 | 2026-09-10 |  | 2026-07-28 | 2026-08-08 | 10d | 2026-07-31 | 2026-08-12 | 77d |  |
| 1497 | 1.7.6.1 | Escalera de concreto armado | 10d | 2026-08-28 | 2026-09-10 | 1513 | 2026-07-28 | 2026-08-08 | 10d | 2026-07-31 | 2026-08-12 | 77d |  |
| 1498 | 1.7.7 | **LOSA DE ENTREPISO (viegueta y caseton)** | 17d | 2026-08-08 | 2026-08-29 |  | 2026-07-08 | 2026-07-29 | 17d | 2026-07-11 | 2026-08-01 | 3d |  |
| 1499 | 1.7.7.1 | Dala de coronamiento 10cm | 3d | 2026-08-18 | 2026-08-21 | 1515FS-1d, 1501, 1502, 1503, 1504, 1505, 1506 | 2026-07-16 | 2026-07-20 | 3d | 2026-07-20 | 2026-07-23 | 3d |  |
| 1500 | 1.7.7.2 | Dala de coronamiento 12cm | 3d | 2026-08-19 | 2026-08-22 | 1515, 1501, 1502, 1503, 1504, 1505, 1506 | 2026-07-17 | 2026-07-21 | 3d | 2026-07-21 | 2026-07-24 | 2d |  |
| 1501 | 1.7.7.3 | Trabe TR-1 | 3d | 2026-08-08 | 2026-08-12 | 1491FS-2d, 1492FS-2d | 2026-07-08 | 2026-07-10 | 3d | 2026-07-11 | 2026-07-15 | 4d |  |
| 1502 | 1.7.7.4 | Trabe TR-2 | 4d | 2026-08-10 | 2026-08-14 | 1491FS-1d, 1492FS-1d | 2026-07-09 | 2026-07-14 | 4d | 2026-07-13 | 2026-07-17 | 2d |  |
| 1503 | 1.7.7.5 | Nervadura NR-1 | 4d | 2026-08-11 | 2026-08-17 | 1491, 1492 | 2026-07-10 | 2026-07-15 | 4d | 2026-07-14 | 2026-07-18 | 1d |  |
| 1504 | 1.7.7.6 | Nervadura NR-2 | 4d | 2026-08-12 | 2026-08-18 | 1491FS+1d, 1492FS+1d | 2026-07-11 | 2026-07-16 | 4d | 2026-07-15 | 2026-07-20 | 0d |  |
| 1505 | 1.7.7.7 | Nervadura NR-3 | 4d | 2026-08-12 | 2026-08-18 | 1491FS+1d, 1492FS+1d | 2026-07-11 | 2026-07-16 | 4d | 2026-07-15 | 2026-07-20 | 0d |  |
| 1506 | 1.7.7.8 | Nervadura NR-4 | 4d | 2026-08-12 | 2026-08-18 | 1491FS+1d, 1492FS+1d | 2026-07-11 | 2026-07-16 | 4d | 2026-07-15 | 2026-07-20 | 0d |  |
| 1507 | 1.7.7.9 | Acero de refuerzo en nervios #3 | 2d | 2026-08-18 | 2026-08-20 | 1501, 1502, 1503, 1504, 1505, 1506 | 2026-07-16 | 2026-07-18 | 2d | 2026-07-20 | 2026-07-22 | 0d |  |
| 1508 | 1.7.7.10 | Acero de refuerzo long. #3 | 3d | 2026-08-19 | 2026-08-22 | 1501, 1502, 1503, 1504, 1505, 1506, 1515 | 2026-07-17 | 2026-07-21 | 3d | 2026-07-21 | 2026-07-24 | 1d | 0d |
| 1509 | 1.7.7.11 | Acero de refuerzo long. #4 | 3d | 2026-08-19 | 2026-08-22 | 1508SS | 2026-07-17 | 2026-07-21 | 3d | 2026-07-21 | 2026-07-24 | 1d | 0d |
| 1510 | 1.7.7.12 | Malla 66-10/10 losa de compresión | 2d | 2026-08-25 | 2026-08-27 | 1499, 1500, 1507, 1520, 1523, 1512 | 2026-07-23 | 2026-07-27 | 2d | 2026-07-28 | 2026-07-30 | 0d |  |
| 1511 | 1.7.7.13 | Acero de Losa Maciza | 3d | 2026-08-18 | 2026-08-21 | 1503, 1504, 1505, 1506 | 2026-07-16 | 2026-07-20 | 3d | 2026-07-20 | 2026-07-23 | 5d |  |
| 1512 | 1.7.7.14 | Caseton de 60x60x20cm | 2d | 2026-08-18 | 2026-08-20 | 1503, 1504, 1505, 1506 | 2026-07-16 | 2026-07-18 | 2d | 2026-07-20 | 2026-07-22 | 4d |  |
| 1513 | 1.7.7.15 | Concreto losa de entrepiso f’c=200 | 1d | 2026-08-27 | 2026-08-28 | 1508, 1509, 1510, 1511, 1520, 1523, 1516, 1525 | 2026-07-27 | 2026-07-28 | 1d | 2026-07-30 | 2026-07-31 | 0d |  |
| 1514 | 1.7.7.16 | Curado de concreto | 1d | 2026-08-28 | 2026-08-29 | 1513 | 2026-07-28 | 2026-07-29 | 1d | 2026-07-31 | 2026-08-01 | 0d |  |
| 1515 | 1.7.7.17 | Cimbra losa de azotea | 5d | 2026-08-12 | 2026-08-19 | 1491FS+1d, 1492FS+1d, 1495 | 2026-07-11 | 2026-07-17 | 5d | 2026-07-15 | 2026-07-21 | 1d | 0d |
| 1516 | 1.7.7.18 | Cimbra exterior corta losa | 3d | 2026-08-21 | 2026-08-25 | 1508FS-1d, 1509FS-1d | 2026-07-20 | 2026-07-23 | 3d | 2026-07-23 | 2026-07-28 | 2d |  |
| 1517 | 1.7.7.19 | Ramaleo poliducto eléctrico entrepiso | 2d | 2026-08-20 | 2026-08-22 | 1507 | 2026-07-18 | 2026-07-21 | 2d | 2026-07-22 | 2026-07-24 | 132d |  |
| 1518 | 1.7.7.20 | Ramaleo hidráulico CPVC 3/4" | 2d | 2026-08-21 | 2026-08-24 | 1507FS+1d | 2026-07-20 | 2026-07-22 | 2d | 2026-07-23 | 2026-07-27 | 0d |  |
| 1519 | 1.7.7.21 | Ramaleo hidráulico CPVC 1/2" | 1d | 2026-08-24 | 2026-08-25 | 1518 | 2026-07-22 | 2026-07-23 | 1d | 2026-07-27 | 2026-07-28 | 0d |  |
| 1520 | 1.7.7.22 | Prueba hidráulica | 1d | 2026-08-24 | 2026-08-25 | 1518, 1519FS-1d | 2026-07-22 | 2026-07-23 | 1d | 2026-07-27 | 2026-07-28 | 0d |  |
| 1521 | 1.7.7.23 | Ramaleo sanitario PVC 4" | 2d | 2026-08-21 | 2026-08-24 | 1507FS+1d | 2026-07-20 | 2026-07-22 | 2d | 2026-07-23 | 2026-07-27 | 0d |  |
| 1522 | 1.7.7.24 | Ramaleo sanitario PVC 2" | 1d | 2026-08-24 | 2026-08-25 | 1521 | 2026-07-22 | 2026-07-23 | 1d | 2026-07-27 | 2026-07-28 | 0d |  |
| 1523 | 1.7.7.25 | Prueba sanitaria | 1d | 2026-08-24 | 2026-08-25 | 1521, 1522FS-1d | 2026-07-22 | 2026-07-23 | 1d | 2026-07-27 | 2026-07-28 | 0d |  |

| ID | WBS | Task | Duration | Start | Finish | Predecessors | Baseline start | Baseline finish | Baseline duration | Baseline 1 start | Baseline 1 finish | Total slack | Free slack |
| --- | --- | --- | --- | --- | --- | --- | --- | --- | --- | --- | --- | --- | --- |
| 1524 | 1.7.8 | **MUROS EN PLANTA ALTA, CASTILLOS Y CERRM.** | 22d | 2026-08-21 | 2026-09-18 |  | 2026-07-20 | 2026-08-17 | 22d | 2026-07-23 | 2026-08-20 | 1d |  |
| 1525 | 1.7.8.1 | Anclaje de castillos y Columnas PA | 4d | 2026-08-21 | 2026-08-26 | 1508FS-1d, 1509FS-1d | 2026-07-20 | 2026-07-24 | 4d | 2026-07-23 | 2026-07-29 | 1d |  |
| 1526 | 1.7.8.2 | Castillo K1 | 4d | 2026-08-31 | 2026-09-03 | 1514 | 2026-07-29 | 2026-08-03 | 4d | 2026-08-01 | 2026-08-06 | 4d | 0d |
| 1527 | 1.7.8.3 | Castillo K2 | 4d | 2026-09-01 | 2026-09-04 | 1514FS+1d | 2026-07-30 | 2026-08-04 | 4d | 2026-08-03 | 2026-08-07 | 3d | 0d |
| 1528 | 1.7.8.4 | Castillo K4 | 3d | 2026-09-04 | 2026-09-08 | 1526 | 2026-08-03 | 2026-08-06 | 3d | 2026-08-06 | 2026-08-10 | 4d | 1d |
| 1529 | 1.7.8.5 | Castillo K5 | 3d | 2026-09-04 | 2026-09-08 | 1526 | 2026-08-03 | 2026-08-06 | 3d | 2026-08-06 | 2026-08-10 | 4d | 1d |
| 1530 | 1.7.8.6 | Castillo K6 | 3d | 2026-09-04 | 2026-09-08 | 1526 | 2026-08-03 | 2026-08-06 | 3d | 2026-08-06 | 2026-08-10 | 4d | 1d |
| 1531 | 1.7.8.7 | Refuerzo de muro | 3d | 2026-09-05 | 2026-09-09 | 1526, 1527 | 2026-08-04 | 2026-08-07 | 3d | 2026-08-07 | 2026-08-11 | 3d | 0d |
| 1532 | 1.7.8.8 | Dala de cerramiento CR-1 | 4d | 2026-09-09 | 2026-09-14 | 1528, 1529, 1530, 1531 | 2026-08-07 | 2026-08-12 | 4d | 2026-08-11 | 2026-08-17 | 3d | 0d |
| 1533 | 1.7.8.9 | Dala de cerramiento CR-2 | 4d | 2026-09-09 | 2026-09-14 | 1528, 1529, 1530, 1531 | 2026-08-07 | 2026-08-12 | 4d | 2026-08-11 | 2026-08-17 | 3d | 0d |
| 1534 | 1.7.8.10 | Cadena block dala | 3d | 2026-09-14 | 2026-09-18 | 1531, 1532, 1533 | 2026-08-12 | 2026-08-17 | 3d | 2026-08-17 | 2026-08-20 | 3d | 0d |
| 1535 | 1.7.8.11 | Muro de ladrillo aparente | 15d | 2026-08-31 | 2026-09-18 | 1514 | 2026-07-29 | 2026-08-17 | 15d | 2026-08-01 | 2026-08-20 | 0d |  |
| 1536 | 1.7.8.12 | Muro de block planta alta | 14d | 2026-09-01 | 2026-09-18 | 1514FS+1d | 2026-07-30 | 2026-08-17 | 14d | 2026-08-03 | 2026-08-20 | 0d |  |
| 1537 | 1.7.8.13 | Ramaleo electrico en Muros Planta Alta | 4d | 2026-09-09 | 2026-09-14 | 1535SS+8d | 2026-08-07 | 2026-08-12 | 4d | 2026-08-11 | 2026-08-17 | 11d | 3d |
| 1538 | 1.7.9 | **LOSA AZOTEA** | 15d | 2026-09-18 | 2026-10-07 |  | 2026-08-17 | 2026-09-03 | 15d | 2026-08-20 | 2026-09-08 | 0d |  |
| 1539 | 1.7.9.1 | Cortalosa CL-1 | 2d | 2026-10-02 | 2026-10-05 | 1551 | 2026-08-31 | 2026-09-01 | 2d | 2026-09-03 | 2026-09-04 | 0d |  |
| 1540 | 1.7.9.2 | Cortalosa CL-2 | 2d | 2026-10-02 | 2026-10-05 | 1551 | 2026-08-31 | 2026-09-01 | 2d | 2026-09-03 | 2026-09-04 | 0d |  |
| 1541 | 1.7.9.3 | Vigueta pretensada V11-30 125 | 5d | 2026-09-18 | 2026-09-25 | 1534, 1535, 1536 | 2026-08-17 | 2026-08-22 | 5d | 2026-08-20 | 2026-08-26 | 3d |  |
| 1542 | 1.7.9.4 | Vigueta pretensada V11-30 185 | 5d | 2026-09-18 | 2026-09-25 | 1535, 1536 | 2026-08-17 | 2026-08-22 | 5d | 2026-08-20 | 2026-08-26 | 3d |  |
| 1543 | 1.7.9.5 | Vigueta pretensada V11-30 190 | 5d | 2026-09-18 | 2026-09-25 | 1535, 1536 | 2026-08-17 | 2026-08-22 | 5d | 2026-08-20 | 2026-08-26 | 3d |  |
| 1544 | 1.7.9.6 | Vigueta pretensada V11-30 205 | 5d | 2026-09-22 | 2026-09-28 | 1535FS+2d, 1536FS+2d | 2026-08-19 | 2026-08-25 | 5d | 2026-08-22 | 2026-08-28 | 1d |  |
| 1545 | 1.7.9.7 | Vigueta pretensada V11-30 215 | 5d | 2026-09-22 | 2026-09-28 | 1535FS+2d, 1536FS+2d | 2026-08-19 | 2026-08-25 | 5d | 2026-08-22 | 2026-08-28 | 1d |  |
| 1546 | 1.7.9.8 | Vigueta pretensada V11-30 260 | 5d | 2026-09-23 | 2026-09-29 | 1535FS+3d, 1536FS+3d | 2026-08-20 | 2026-08-26 | 5d | 2026-08-24 | 2026-08-29 | 0d |  |
| 1547 | 1.7.9.9 | Vigueta pretensada V11-30 285 | 5d | 2026-09-23 | 2026-09-29 | 1535FS+3d, 1536FS+3d | 2026-08-20 | 2026-08-26 | 5d | 2026-08-24 | 2026-08-29 | 0d |  |
| 1548 | 1.7.9.10 | Vigueta pretensada V11-40 330 | 5d | 2026-09-23 | 2026-09-29 | 1535FS+3d, 1536 | 2026-08-20 | 2026-08-26 | 5d | 2026-08-24 | 2026-08-29 | 0d |  |
| 1549 | 1.7.9.11 | Vigueta pretensada V11-40 335 | 5d | 2026-09-23 | 2026-09-29 | 1535FS+3d, 1536 | 2026-08-20 | 2026-08-26 | 5d | 2026-08-24 | 2026-08-29 | 0d |  |
| 1550 | 1.7.9.12 | Vigueta pretensada V11-40 505 | 5d | 2026-09-23 | 2026-09-29 | 1535FS+3d, 1536 | 2026-08-20 | 2026-08-26 | 5d | 2026-08-24 | 2026-08-29 | 0d |  |
| 1551 | 1.7.9.13 | Bovedilla poliestireno azotea | 3d | 2026-09-29 | 2026-10-02 | 1541, 1542, 1543, 1544, 1545, 1546, 1547, 1548, 1549, 1550 | 2026-08-26 | 2026-08-29 | 3d | 2026-08-31 | 2026-09-02 | 0d |  |
| 1552 | 1.7.9.14 | Malla 66-10/10 losa de compresión | 2d | 2026-10-02 | 2026-10-05 | 1551 | 2026-08-31 | 2026-09-01 | 2d | 2026-09-03 | 2026-09-04 | 0d |  |
| 1553 | 1.7.9.15 | Concreto losa de azotea f’c=200 | 1d | 2026-10-05 | 2026-10-06 | 1539, 1540, 1551, 1552, 1556, 1555 | 2026-09-02 | 2026-09-02 | 1d | 2026-09-05 | 2026-09-07 | 0d |  |
| 1554 | 1.7.9.16 | Curado de concreto | 1d | 2026-10-06 | 2026-10-07 | 1553 | 2026-09-03 | 2026-09-03 | 1d | 2026-09-07 | 2026-09-08 | 0d |  |
| 1555 | 1.7.9.17 | Cimbra losa de azotea | 5d | 2026-09-18 | 2026-09-25 | 1535, 1536, 1537 | 2026-08-17 | 2026-08-22 | 5d | 2026-08-20 | 2026-08-26 | 8d |  |
| 1556 | 1.7.9.18 | Ramaleo de poliducto para inst. electrica en azotea | 2d | 2026-10-02 | 2026-10-05 | 1551 | 2026-08-31 | 2026-09-01 | 2d | 2026-09-03 | 2026-09-04 | 0d |  |

| ID | WBS | Task | Duration | Start | Finish | Predecessors | Baseline start | Baseline finish | Baseline duration | Baseline 1 start | Baseline 1 finish | Total slack | Free slack |
| --- | --- | --- | --- | --- | --- | --- | --- | --- | --- | --- | --- | --- | --- |
| 1557 | 1.7.10 | **PRETIL Y ACABADOS DE AZOTEA** | 19d | 2026-10-07 | 2026-10-30 |  | 2026-09-04 | 2026-09-29 | 19d | 2026-09-08 | 2026-10-02 | 0d |  |
| 1558 | 1.7.10.1 | Castillo K1 | 5d | 2026-10-09 | 2026-10-16 | 1560SS+2d | 2026-09-07 | 2026-09-12 | 5d | 2026-09-10 | 2026-09-17 | 0d |  |
| 1559 | 1.7.10.2 | Dala de cerramiento en pretil | 4d | 2026-10-14 | 2026-10-19 | 1558FS-2d, 1560FS-2d | 2026-09-10 | 2026-09-15 | 4d | 2026-09-14 | 2026-09-21 | 0d |  |
| 1560 | 1.7.10.3 | Muro de block 12x15x40 | 5d | 2026-10-07 | 2026-10-14 | 1554 | 2026-09-04 | 2026-09-10 | 5d | 2026-09-08 | 2026-09-14 | 0d |  |
| 1561 | 1.7.10.4 | Chaflán en azotea | 4d | 2026-10-16 | 2026-10-21 | 1558, 1560 | 2026-09-12 | 2026-09-18 | 4d | 2026-09-17 | 2026-09-23 | 0d |  |
| 1562 | 1.7.10.5 | Diamante de entortado | 4d | 2026-10-16 | 2026-10-21 | 1558, 1560 | 2026-09-12 | 2026-09-18 | 4d | 2026-09-17 | 2026-09-23 | 0d |  |
| 1563 | 1.7.10.6 | Aplanado exterior Mortermax fino | 5d | 2026-10-19 | 2026-10-24 | 1559, 1561FS-2d, 1562FS-2d | 2026-09-15 | 2026-09-23 | 5d | 2026-09-21 | 2026-09-26 | 0d |  |
| 1564 | 1.7.10.7 | Entortado de Losa | 4d | 2026-10-27 | 2026-10-30 | 1565 | 2026-09-24 | 2026-09-29 | 4d | 2026-09-28 | 2026-10-02 | 0d |  |
| 1565 | 1.7.10.8 | Curado de concreto | 1d | 2026-10-26 | 2026-10-26 | 1561, 1563 | 2026-09-23 | 2026-09-24 | 1d | 2026-09-26 | 2026-09-28 | 0d |  |
| 1566 | 1.7.11 | **PRIMERA LIMPIEZA DE OBRA** | 4d | 2026-10-07 | 2026-10-13 |  | 2026-09-04 | 2026-09-09 | 4d | 2026-09-08 | 2026-09-12 | 53d |  |
| 1567 | 1.7.11.1 | Primera limpieza de obra | 2d | 2026-10-07 | 2026-10-09 | 1554 | 2026-09-04 | 2026-09-07 | 2d | 2026-09-08 | 2026-09-10 | 53d | 0d |
| 1568 | 1.7.11.2 | Primera carga y acarreo de escombro | 2d | 2026-10-09 | 2026-10-13 | 1567 | 2026-09-07 | 2026-09-09 | 2d | 2026-09-10 | 2026-09-12 | 53d | 1d |
| 1569 | 1.7.12 | **IMPERMEABILIZACION** | 5d | 2026-10-31 | 2026-11-06 |  | 2026-09-29 | 2026-10-05 | 5d | 2026-10-02 | 2026-10-08 | 0d |  |
| 1570 | 1.7.12.1 | Impermeabilización de pretil Kover 5 años | 4d | 2026-10-31 | 2026-11-05 | 1564 | 2026-09-29 | 2026-10-03 | 4d | 2026-10-02 | 2026-10-07 | 1d |  |
| 1571 | 1.7.12.2 | Impermeabilización de losa Kover 5 años | 5d | 2026-10-31 | 2026-11-06 | 1564 | 2026-09-29 | 2026-10-05 | 5d | 2026-10-02 | 2026-10-08 | 0d |  |
| 1572 | 1.7.13 | **ALBAÑILERIA** | 62d | 2026-10-14 | 2027-01-05 |  | 2026-09-10 | 2026-11-28 | 62d | 2026-09-14 | 2026-12-02 | 19d |  |
| 1573 | 1.7.13.1 | Lavadero de granito | 4d | 2026-11-27 | 2026-12-02 | 1609SS+8d | 2026-10-26 | 2026-10-29 | 4d | 2026-10-29 | 2026-11-03 | 52d |  |
| 1574 | 1.7.13.2 | Ranurado y resane general inst. en muros | 3d | 2026-11-04 | 2026-11-07 | 1571FS-2d | 2026-10-02 | 2026-10-06 | 3d | 2026-10-06 | 2026-10-09 | 2d | 1d |
| 1575 | 1.7.13.3 | Ranurado y resane eléctrico 1/2 a 3/4 | 3d | 2026-11-04 | 2026-11-07 | 1571FS-2d | 2026-10-02 | 2026-10-06 | 3d | 2026-10-06 | 2026-10-09 | 2d | 1d |
| 1576 | 1.7.13.4 | Ranurado y resane hidráulico 1/2 a 1 | 2d | 2026-11-06 | 2026-11-09 | 1571 | 2026-10-05 | 2026-10-07 | 2d | 2026-10-08 | 2026-10-12 | 1d | 0d |
| 1577 | 1.7.13.5 | Resane sanitario tubería 2 | 2d | 2026-11-06 | 2026-11-09 | 1571 | 2026-10-05 | 2026-10-07 | 2d | 2026-10-08 | 2026-10-12 | 1d | 0d |
| 1578 | 1.7.13.6 | Resane sanitario tubería 4 | 2d | 2026-11-06 | 2026-11-09 | 1571 | 2026-10-05 | 2026-10-07 | 2d | 2026-10-08 | 2026-10-12 | 1d | 0d |
| 1579 | 1.7.13.7 | Resane minisplit tubería 3 | 2d | 2026-11-06 | 2026-11-09 | 1571 | 2026-10-05 | 2026-10-07 | 2d | 2026-10-08 | 2026-10-12 | 1d | 0d |
| 1580 | 1.7.13.8 | Ramaleo hidráulico exterior CPVC 1 1/4 | 3d | 2026-11-06 | 2026-11-10 | 1570, 1571 | 2026-10-05 | 2026-10-08 | 3d | 2026-10-08 | 2026-10-13 | 0d |  |
| 1581 | 1.7.13.9 | Ramaleo hidráulico exterior CPVC 1 | 2d | 2026-11-06 | 2026-11-09 | 1580SS | 2026-10-05 | 2026-10-07 | 2d | 2026-10-08 | 2026-10-12 | 0d |  |
| 1582 | 1.7.13.10 | Ramaleo hidráulico exterior CPVC 3/4 | 2d | 2026-11-09 | 2026-11-11 | 1581 | 2026-10-07 | 2026-10-09 | 2d | 2026-10-12 | 2026-10-14 | 0d |  |
| 1583 | 1.7.13.11 | Ramaleo hidráulico exterior CPVC 1/2 | 2d | 2026-11-09 | 2026-11-11 | 1581 | 2026-10-07 | 2026-10-09 | 2d | 2026-10-12 | 2026-10-14 | 0d |  |
| 1584 | 1.7.13.12 | Prueba hidráulica | 1d | 2026-11-11 | 2026-11-12 | 1576, 1580, 1581, 1582, 1583 | 2026-10-09 | 2026-10-12 | 1d | 2026-10-14 | 2026-10-15 | 0d |  |
| 1585 | 1.7.13.13 | Ramaleo sanitario exterior PVC 4 | 4d | 2026-11-06 | 2026-11-11 | 1570, 1571 | 2026-10-05 | 2026-10-09 | 4d | 2026-10-08 | 2026-10-14 | 0d |  |
| 1586 | 1.7.13.14 | Ramaleo sanitario exterior PVC 2 | 3d | 2026-11-07 | 2026-11-11 | 1585SS+1d | 2026-10-06 | 2026-10-09 | 3d | 2026-10-09 | 2026-10-14 | 0d |  |
| 1587 | 1.7.13.15 | Prueba sanitaria | 1d | 2026-11-11 | 2026-11-12 | 1577, 1578, 1579, 1585, 1586 | 2026-10-09 | 2026-10-12 | 1d | 2026-10-14 | 2026-10-15 | 0d |  |
| 1588 | 1.7.13.16 | Centro de carga muros PB | 4d | 2026-11-10 | 2026-11-17 | 1570FS+3d, 1571FS+3d | 2026-10-08 | 2026-10-14 | 4d | 2026-10-13 | 2026-10-17 | 2d |  |
| 1589 | 1.7.13.17 | Firme de concreto 8 cm | 4d | 2026-11-12 | 2026-11-19 | 1584, 1587, 1591 | 2026-10-12 | 2026-10-16 | 4d | 2026-10-15 | 2026-10-20 | 46d | 0d |
| 1590 | 1.7.13.18 | Curado de concreto | 1d | 2026-11-19 | 2026-11-20 | 1589 | 2026-10-16 | 2026-10-17 | 1d | 2026-10-20 | 2026-10-21 | 46d | 17d |
| 1591 | 1.7.13.19 | Cisterna 2800 L con instalación | 18d | 2026-10-14 | 2026-11-05 | 1560, 1567, 1568 | 2026-09-10 | 2026-10-03 | 18d | 2026-09-14 | 2026-10-07 | 52d | 0d |
| 1592 | 1.7.13.20 | Banqueta y huellas de concreto | 8d | 2026-11-21 | 2026-12-01 | 1584, 1587, 1634, 1702FS-2d, 1711, 1703 | 2026-10-19 | 2026-10-28 | 8d | 2026-10-22 | 2026-11-02 | 29d | 0d |
| 1593 | 1.7.13.21 | Curado de concreto | 1d | 2026-12-01 | 2026-12-02 | 1592 | 2026-10-29 | 2026-10-29 | 1d | 2026-11-02 | 2026-11-03 | 29d | 0d |
| 1594 | 1.7.13.22 | Número oficial | 1d | 2027-01-04 | 2027-01-05 | 1602, 1603 | 2026-11-27 | 2026-11-28 | 1d | 2026-12-01 | 2026-12-02 | 29d |  |
| 1595 | 1.7.13.23 | Detallado de rodapié exterior | 4d | 2026-11-17 | 2026-11-21 | 1600 | 2026-10-14 | 2026-10-19 | 4d | 2026-10-17 | 2026-10-22 | 61d |  |
| 1596 | 1.7.13.24 | Detalle de losas y volados acabado fino | 4d | 2026-11-06 | 2026-11-11 | 1570, 1571 | 2026-10-05 | 2026-10-09 | 4d | 2026-10-08 | 2026-10-14 | 4d |  |
| 1597 | 1.7.13.25 | Detalle fino en muros interiores | 5d | 2026-11-09 | 2026-11-17 | 1574, 1575, 1576, 1577, 1578, 1579 | 2026-10-07 | 2026-10-14 | 5d | 2026-10-12 | 2026-10-17 | 1d |  |
| 1598 | 1.7.13.26 | Jardín interior bajo escalera con pozo de absorción | 12d | 2026-11-06 | 2026-11-23 | 1577FS-2d, 1578FS-2d, 1579FS-2d | 2026-10-05 | 2026-10-20 | 12d | 2026-10-08 | 2026-10-23 | 4d | 0d |

| ID | WBS | Task | Duration | Start | Finish | Predecessors | Baseline start | Baseline finish | Baseline duration | Baseline 1 start | Baseline 1 finish | Total slack | Free slack |
| --- | --- | --- | --- | --- | --- | --- | --- | --- | --- | --- | --- | --- | --- |
| 1599 | 1.7.14 | **ACABADOS EN FACHADA A** | 47d | 2026-10-31 | 2027-01-04 |  | 2026-09-29 | 2026-11-27 | 47d | 2026-10-02 | 2026-12-01 | 29d |  |
| 1600 | 1.7.14.1 | Aplanado grueso fachada | 12d | 2026-10-31 | 2026-11-17 | 1564 | 2026-09-29 | 2026-10-14 | 12d | 2026-10-02 | 2026-10-17 | 35d | 0d |
| 1601 | 1.7.14.2 | Aplanado fino estuco fachada | 10d | 2026-11-09 | 2026-11-23 | 1600SS+7d | 2026-10-07 | 2026-10-20 | 10d | 2026-10-12 | 2026-10-23 | 35d | 0d |
| 1602 | 1.7.14.3 | Pintura acrílica 1-0102P | 8d | 2026-12-17 | 2026-12-30 | 1590FS+5d, 1593FS+12d, 1604, 1607 | 2026-11-13 | 2026-11-25 | 8d | 2026-11-19 | 2026-11-28 | 31d | 2d |
| 1603 | 1.7.14.4 | Pintura acrílica 1-1404D | 10d | 2026-12-17 | 2027-01-04 | 1590FS+5d, 1593FS+12d, 1604, 1607 | 2026-11-13 | 2026-11-27 | 10d | 2026-11-19 | 2026-12-01 | 29d | 0d |
| 1604 | 1.7.14.5 | Cantera 40x60cm | 14d | 2026-11-23 | 2026-12-10 | 1600, 1601 | 2026-10-20 | 2026-11-06 | 14d | 2026-10-23 | 2026-11-10 | 35d | 6d |
| 1605 | 1.7.14.6 | Lambrin de permabase 1 cara | 3d | 2026-11-17 | 2026-11-20 | 1600 | 2026-10-14 | 2026-10-17 | 3d | 2026-10-17 | 2026-10-21 | 42d | 0d |
| 1606 | 1.7.14.7 | Enchapado de Permabase | 4d | 2026-11-20 | 2026-11-25 | 1605 | 2026-10-17 | 2026-10-22 | 4d | 2026-10-21 | 2026-10-26 | 42d | 0d |
| 1607 | 1.7.14.8 | Cubierta de Permabase | 5d | 2026-11-25 | 2026-12-01 | 1606 | 2026-10-22 | 2026-10-28 | 5d | 2026-10-27 | 2026-11-02 | 42d | 13d |
| 1608 | 1.7.15 | **APLANADOS Y PINTURA** | 60d | 2026-11-06 | 2027-01-26 |  | 2026-10-05 | 2026-12-23 | 63d | 2026-10-08 | 2026-12-30 | 2d |  |
| 1609 | 1.7.15.1 | Yeso pulido en muros | 14d | 2026-11-18 | 2026-12-04 | 1574, 1575, 1588FS-1d, 1596, 1597, 1598FS-8d, 1614FS-4d, 1680FS-2d, 1683, 1684, 1685, 1686, 1687FS-1d, 1688FS-1d, 1689FS-1d, 1690FS-1d, 1691FS-2d, 1692FS-2d, 1693FS-3d, 1696FS-1d, 1697FS-5d, 1698FS-5d, 1699FS-6d, 1700FS-2d, 1701FS-7d, 1610 | 2026-10-15 | 2026-11-02 | 14d | 2026-10-19 | 2026-11-05 | 0d |  |
| 1610 | 1.7.15.2 | Aplanado en muros enjarre grueso | 5d | 2026-11-06 | 2026-11-12 | 1570, 1571 | 2026-10-05 | 2026-10-12 | 5d | 2026-10-08 | 2026-10-15 | 3d |  |
| 1611 | 1.7.15.3 | Pintura vinílica OR-W13 SHOELACE | 10d | 2027-01-14 | 2027-01-26 | 1618FS-2d, 1619FS-2d, 1632FS-2d, 1639, 1640, 1641, 1642, 1643, 1644, 1650, 1651, 1652, 1653, 1714, 1715, 1717, 1718, 1647, 1648, 1645, 1646, 1654 | 2026-12-08 | 2026-12-23 | 13d | 2026-12-11 | 2026-12-30 | 0d |  |
| 1612 | 1.7.15.4 | Pintura vinílica PPUI5-13 Creamy M. | 10d | 2027-01-07 | 2027-01-20 | 1618, 1619, 1632, 1662, 1663, 1658, 1656 | 2026-12-01 | 2026-12-14 | 10d | 2026-12-04 | 2026-12-17 | 5d |  |
| 1613 | 1.7.15.5 | Pintura vinílica MD-06 Nano White | 8d | 2027-01-07 | 2027-01-18 | 1618, 1619, 1632, 1662, 1663, 1658, 1656 | 2026-12-01 | 2026-12-11 | 8d | 2026-12-04 | 2026-12-15 | 7d |  |
| 1614 | 1.7.15.6 | Yeso pulido en plafones | 10d | 2026-11-06 | 2026-11-20 | 1570, 1571 | 2026-10-05 | 2026-10-17 | 10d | 2026-10-08 | 2026-10-21 | 2d |  |
| 1615 | 1.7.15.7 | Perfilado de puertas y ventanas | 4d | 2026-11-23 | 2026-11-27 | 1609SS+4d | 2026-10-20 | 2026-10-24 | 4d | 2026-10-23 | 2026-10-28 | 56d |  |
| 1616 | 1.7.16 | **PISOS Y AZULEJOS** | 24d | 2026-11-28 | 2027-01-02 |  | 2026-10-27 | 2026-11-26 | 24d | 2026-10-30 | 2026-11-30 | 0d |  |
| 1617 | 1.7.16.1 | **AREA SOCIAL** | 15d | 2026-12-02 | 2026-12-21 |  | 2026-10-30 | 2026-11-19 | 15d | 2026-11-03 | 2026-11-23 | 0d |  |
| 1618 | 1.7.16.1.1 | Piso Adhara 44X89 | 14d | 2026-12-02 | 2026-12-19 | 1609FS-2d, 1705, 1704, 1621FS-5d | 2026-10-30 | 2026-11-18 | 14d | 2026-11-03 | 2026-11-21 | 0d |  |
| 1619 | 1.7.16.1.2 | Zoclo Adhara 44X89 | 5d | 2026-12-15 | 2026-12-21 | 1618FS-4d | 2026-11-11 | 2026-11-19 | 5d | 2026-11-17 | 2026-11-23 | 15d | 10d |
| 1620 | 1.7.16.2 | **RECAMARAS** | 8d | 2026-11-28 | 2026-12-09 |  | 2026-10-27 | 2026-11-05 | 8d | 2026-10-30 | 2026-11-09 | 0d |  |
| 1621 | 1.7.16.2.1 | Acabado aparente de pisos - pulido | 8d | 2026-11-28 | 2026-12-09 | 1609FS-5d | 2026-10-27 | 2026-11-05 | 8d | 2026-10-30 | 2026-11-09 | 0d |  |
| 1622 | 1.7.16.3 | **BAÑOS** | 17d | 2026-11-30 | 2026-12-21 |  | 2026-10-28 | 2026-11-19 | 17d | 2026-10-31 | 2026-11-23 | 11d |  |
| 1623 | 1.7.16.3.1 | Azulejo Mod. Ornamenta 60x30 | 5d | 2026-12-09 | 2026-12-15 | 1624FS-1d, 1694, 1695, 1705 | 2026-11-05 | 2026-11-11 | 5d | 2026-11-09 | 2026-11-17 | 11d | 0d |
| 1624 | 1.7.16.3.2 | Impermeabilización en regadera | 2d | 2026-12-08 | 2026-12-10 | 1609, 1628 | 2026-11-04 | 2026-11-06 | 2d | 2026-11-07 | 2026-11-10 | 11d | 0d |
| 1625 | 1.7.16.3.3 | Piso Mod. Valparaiso 20x20 | 4d | 2026-12-15 | 2026-12-19 | 1623 | 2026-11-11 | 2026-11-18 | 4d | 2026-11-17 | 2026-11-21 | 11d | 0d |
| 1626 | 1.7.16.3.4 | Zoclo Adhara 44X89 | 2d | 2026-12-18 | 2026-12-21 | 1625FS-1d | 2026-11-17 | 2026-11-19 | 2d | 2026-11-20 | 2026-11-23 | 37d |  |
| 1627 | 1.7.16.3.5 | Piso Adhara 44X89 | 3d | 2026-12-15 | 2026-12-18 | 1623 | 2026-11-11 | 2026-11-17 | 3d | 2026-11-17 | 2026-11-20 | 39d |  |
| 1628 | 1.7.16.3.6 | Fabricacion de nicho decorativo en baños | 6d | 2026-11-30 | 2026-12-08 | 1609FS-4d | 2026-10-28 | 2026-11-04 | 6d | 2026-10-31 | 2026-11-07 | 11d | 0d |
| 1629 | 1.7.16.3.7 | Sardinel en regadera | 4d | 2026-12-15 | 2026-12-19 | 1623 | 2026-11-11 | 2026-11-18 | 4d | 2026-11-17 | 2026-11-21 | 38d |  |

| ID | WBS | Task | Duration | Start | Finish | Predecessors | Baseline start | Baseline finish | Baseline duration | Baseline 1 start | Baseline 1 finish | Total slack | Free slack |
| --- | --- | --- | --- | --- | --- | --- | --- | --- | --- | --- | --- | --- | --- |
| 1630 | 1.7.16.4 | **ESCALERA** | 9d | 2026-12-17 | 2027-01-02 |  | 2026-11-13 | 2026-11-26 | 9d | 2026-11-19 | 2026-11-30 | 0d |  |
| 1631 | 1.7.16.4.1 | Piso Adhara 44X89 | 7d | 2026-12-17 | 2026-12-29 | 1497, 1609, 1618FS-2d | 2026-11-13 | 2026-11-24 | 7d | 2026-11-19 | 2026-11-27 | 0d |  |
| 1632 | 1.7.16.4.2 | Zoclo Adhara 44X89 | 4d | 2026-12-26 | 2027-01-02 | 1631FS-2d | 2026-11-21 | 2026-11-26 | 4d | 2026-11-25 | 2026-11-30 | 0d |  |
| 1633 | 1.7.17 | **EXTERIOR** | 3d | 2026-11-12 | 2026-11-18 |  | 2026-10-12 | 2026-10-15 | 3d | 2026-10-15 | 2026-10-19 | 5d |  |
| 1634 | 1.7.17.1 | Rastrilleo, afine y nivelado de tierra | 3d | 2026-11-12 | 2026-11-18 | 1584, 1587 | 2026-10-12 | 2026-10-15 | 3d | 2026-10-15 | 2026-10-19 | 5d | 0d |
| 1635 | 1.7.18 | **SEGUNDA LIMPIEZA DE OBRA** | 4d | 2027-01-02 | 2027-01-07 |  | 2026-11-26 | 2026-12-01 | 4d | 2026-11-30 | 2026-12-04 | 20d |  |
| 1636 | 1.7.18.1 | Segunda limpieza de obra | 2d | 2027-01-02 | 2027-01-05 | 1631, 1632 | 2026-11-26 | 2026-11-28 | 2d | 2026-11-30 | 2026-12-02 | 20d | 0d |
| 1637 | 1.7.18.2 | Segunda carga y acarreo de escombro | 2d | 2027-01-05 | 2027-01-07 | 1636 | 2026-11-28 | 2026-12-01 | 2d | 2026-12-02 | 2026-12-04 | 20d |  |
| 1638 | 1.7.19 | **CANCELERIA PUERTAS Y VENTANAS DE ALUMINIO** | 17d | 2026-12-17 | 2027-01-13 |  | 2026-11-13 | 2026-12-07 | 17d | 2026-11-19 | 2026-12-10 | 1d |  |
| 1639 | 1.7.19.1 | Fijo medidas 0.30x4.90m | 7d | 2026-12-21 | 2027-01-02 | 1609, 1618 | 2026-11-18 | 2026-11-26 | 7d | 2026-11-21 | 2026-11-30 | 9d |  |
| 1640 | 1.7.19.2 | Ventana Corrediza 1.80x1.60m | 4d | 2026-12-17 | 2026-12-22 | 1609FS+10d | 2026-11-13 | 2026-11-20 | 4d | 2026-11-19 | 2026-11-24 | 14d |  |
| 1641 | 1.7.19.3 | Ventana Corrediza 0.60x0.40m | 4d | 2026-12-21 | 2026-12-28 | 1609FS+12d | 2026-11-18 | 2026-11-23 | 4d | 2026-11-21 | 2026-11-26 | 12d |  |
| 1642 | 1.7.19.4 | Ventana Corrediza 1.54x0.50m | 4d | 2026-12-21 | 2026-12-28 | 1609FS+12d | 2026-11-18 | 2026-11-23 | 4d | 2026-11-21 | 2026-11-26 | 12d |  |
| 1643 | 1.7.19.5 | Fijo medidas 1.40x2.50m | 4d | 2026-12-26 | 2027-01-02 | 1609FS+10d, 1618FS+3d | 2026-11-21 | 2026-11-26 | 4d | 2026-11-25 | 2026-11-30 | 3d | 0d |
| 1644 | 1.7.19.6 | Ventana Corrediza 1.80x1.50m | 4d | 2026-12-29 | 2027-01-05 | 1609FS+7d, 1618FS+2d, 1631 | 2026-11-24 | 2026-11-28 | 4d | 2026-11-27 | 2026-12-02 | 1d | 0d |
| 1645 | 1.7.19.7 | Ventana Corrediza 1.40x1.60m | 4d | 2026-12-29 | 2027-01-05 | 1609, 1618, 1631 | 2026-11-24 | 2026-11-28 | 4d | 2026-11-27 | 2026-12-02 | 1d | 0d |
| 1646 | 1.7.19.8 | Ventana Corrediza 0.95x0.40m | 4d | 2026-12-29 | 2027-01-05 | 1609, 1618, 1631 | 2026-11-24 | 2026-11-28 | 4d | 2026-11-27 | 2026-12-02 | 1d | 0d |
| 1647 | 1.7.19.9 | Puerta corrediza 3.85x2.10m | 6d | 2027-01-02 | 2027-01-11 | 1643 | 2026-11-26 | 2026-12-03 | 6d | 2026-11-30 | 2026-12-08 | 3d |  |
| 1648 | 1.7.19.10 | Barandal de Cristal Templado | 6d | 2027-01-05 | 2027-01-13 | 1644, 1645, 1646 | 2026-11-28 | 2026-12-07 | 6d | 2026-12-02 | 2026-12-10 | 1d |  |
| 1649 | 1.7.20 | **CARPINTERIA, PUERTAS EXTERIORES E INTERIORES** | 9d | 2027-01-02 | 2027-01-14 |  | 2026-11-26 | 2026-12-08 | 9d | 2026-11-30 | 2026-12-11 | 0d |  |
| 1650 | 1.7.20.1 | Puerta P-01 de seguridad | 5d | 2027-01-02 | 2027-01-08 | 1632 | 2026-11-26 | 2026-12-02 | 5d | 2026-11-30 | 2026-12-07 | 4d |  |
| 1651 | 1.7.20.2 | Puerta P-01 interior | 8d | 2027-01-02 | 2027-01-13 | 1632 | 2026-11-26 | 2026-12-07 | 8d | 2026-11-30 | 2026-12-10 | 1d |  |
| 1652 | 1.7.20.3 | Puerta P-02 interior | 8d | 2027-01-02 | 2027-01-13 | 1632 | 2026-11-26 | 2026-12-07 | 8d | 2026-11-30 | 2026-12-10 | 1d |  |
| 1653 | 1.7.20.4 | Puerta P-03 interior | 4d | 2027-01-08 | 2027-01-14 | 1632FS+5d | 2026-12-02 | 2026-12-08 | 4d | 2026-12-07 | 2026-12-11 | 0d |  |
| 1654 | 1.7.20.5 | Puerta P-04 interior | 4d | 2027-01-08 | 2027-01-14 | 1632FS+5d | 2026-12-02 | 2026-12-08 | 4d | 2026-12-07 | 2026-12-11 | 0d |  |

| ID | WBS | Task | Duration | Start | Finish | Predecessors | Baseline start | Baseline finish | Baseline duration | Baseline 1 start | Baseline 1 finish | Total slack | Free slack |
| --- | --- | --- | --- | --- | --- | --- | --- | --- | --- | --- | --- | --- | --- |
| 1655 | 1.7.21 | **VOLADOS, BARANDAL Y ESCALERA** | 33d | 2026-11-23 | 2027-01-07 |  | 2026-10-20 | 2026-12-01 | 33d | 2026-10-23 | 2026-12-04 | 5d |  |
| 1656 | 1.7.21.1 | Barandal de Herreria en escalera | 4d | 2026-12-10 | 2026-12-15 | 1657FS-4d | 2026-11-06 | 2026-11-11 | 4d | 2026-11-10 | 2026-11-17 | 20d | 15d |
| 1657 | 1.7.21.2 | Escalera de herreria | 18d | 2026-11-23 | 2026-12-15 | 1598 | 2026-10-20 | 2026-11-11 | 18d | 2026-10-23 | 2026-11-17 | 5d | 0d |
| 1658 | 1.7.21.3 | Techumbre en acceso Principal | 14d | 2026-12-09 | 2026-12-29 | 1657FS-5d | 2026-11-05 | 2026-11-24 | 14d | 2026-11-09 | 2026-11-27 | 11d | 6d |
| 1659 | 1.7.21.4 | Techumbre en 1.80x0.50m | 7d | 2026-12-09 | 2026-12-17 | 1657FS-5d | 2026-11-05 | 2026-11-13 | 7d | 2026-11-09 | 2026-11-19 | 5d | 0d |
| 1660 | 1.7.21.5 | Techumbre en 1.40x0.50m | 7d | 2026-12-17 | 2026-12-29 | 1659 | 2026-11-13 | 2026-11-24 | 7d | 2026-11-19 | 2026-11-27 | 5d | 0d |
| 1661 | 1.7.21.6 | Imper con manto prefabricado | 5d | 2026-12-22 | 2026-12-30 | 1659, 1660FS-4d | 2026-11-19 | 2026-11-25 | 5d | 2026-11-23 | 2026-11-28 | 5d | 0d |
| 1662 | 1.7.21.7 | Plafon hoja tablaroca std | 5d | 2026-12-30 | 2027-01-07 | 1661 | 2026-11-25 | 2026-12-01 | 5d | 2026-11-28 | 2026-12-04 | 5d | 0d |
| 1663 | 1.7.21.8 | Acabado Woodstock en parte inf. Cubierta | 5d | 2026-12-30 | 2027-01-07 | 1661 | 2026-11-25 | 2026-12-01 | 5d | 2026-11-28 | 2026-12-04 | 5d | 0d |
| 1664 | 1.7.22 | **INSTALACION ELECTRICA** | 16d | 2026-11-30 | 2026-12-19 |  | 2026-10-28 | 2026-11-18 | 16d | 2026-10-31 | 2026-11-21 | 26d |  |
| 1665 | 1.7.22.1 | Alimentación eléctrica base a centro de carga | 5d | 2026-12-04 | 2026-12-11 | 1588, 1609 | 2026-11-02 | 2026-11-07 | 5d | 2026-11-05 | 2026-11-11 | 30d | 0d |
| 1666 | 1.7.22.2 | Interruptor termomagnético 1x20 A | 1d | 2026-12-11 | 2026-12-12 | 1665 | 2026-11-07 | 2026-11-09 | 1d | 2026-11-11 | 2026-11-12 | 30d | 4d |
| 1667 | 1.7.22.3 | Interruptor termomagnético 2x20 A | 1d | 2026-12-11 | 2026-12-12 | 1665 | 2026-11-07 | 2026-11-09 | 1d | 2026-11-11 | 2026-11-12 | 30d | 4d |
| 1668 | 1.7.22.4 | Salida para apagador 3 vías | 4d | 2026-11-30 | 2026-12-04 | 1570, 1609FS-4d | 2026-10-28 | 2026-11-02 | 4d | 2026-10-31 | 2026-11-05 | 26d | 0d |
| 1669 | 1.7.22.5 | Salida para apagador doble | 3d | 2026-12-04 | 2026-12-09 | 1668 | 2026-11-02 | 2026-11-05 | 3d | 2026-11-05 | 2026-11-09 | 28d | 0d |
| 1670 | 1.7.22.6 | Salida para apagador sencillo | 3d | 2026-12-04 | 2026-12-09 | 1668 | 2026-11-02 | 2026-11-05 | 3d | 2026-11-05 | 2026-11-09 | 28d | 0d |
| 1671 | 1.7.22.7 | Salida de alumbrado en losa | 5d | 2026-12-04 | 2026-12-11 | 1668 | 2026-11-02 | 2026-11-07 | 5d | 2026-11-05 | 2026-11-11 | 26d | 0d |
| 1672 | 1.7.22.8 | Salida para contacto exterior doble | 2d | 2026-12-04 | 2026-12-08 | 1668 | 2026-11-02 | 2026-11-04 | 2d | 2026-11-05 | 2026-11-07 | 29d | 3d |
| 1673 | 1.7.22.9 | Salida para contacto 220 V | 3d | 2026-12-08 | 2026-12-11 | 1668FS+2d | 2026-11-04 | 2026-11-07 | 3d | 2026-11-07 | 2026-11-11 | 26d | 0d |
| 1674 | 1.7.22.10 | Salida para contacto doble | 5d | 2026-12-08 | 2026-12-14 | 1668FS+2d | 2026-11-04 | 2026-11-10 | 5d | 2026-11-07 | 2026-11-13 | 29d | 3d |
| 1675 | 1.7.22.11 | Salida para contacto doble área húmeda | 2d | 2026-12-11 | 2026-12-14 | 1672, 1673 | 2026-11-07 | 2026-11-10 | 2d | 2026-11-11 | 2026-11-13 | 29d | 3d |
| 1676 | 1.7.22.12 | Salida TV / telefonía / intercom | 4d | 2026-12-11 | 2026-12-16 | 1672, 1673 | 2026-11-07 | 2026-11-12 | 4d | 2026-11-11 | 2026-11-18 | 27d | 1d |
| 1677 | 1.7.22.13 | Extractor 4 baño | 5d | 2026-12-11 | 2026-12-17 | 1672, 1673 | 2026-11-07 | 2026-11-13 | 5d | 2026-11-11 | 2026-11-19 | 26d | 0d |
| 1678 | 1.7.22.14 | Prueba eléctrica | 2d | 2026-12-17 | 2026-12-19 | 1665, 1666, 1667, 1668, 1669, 1670, 1671, 1672, 1673, 1674, 1675, 1676, 1677, 1731, 1732, 1738, 1733, 1734, 1736, 1737, 1740, 1742 | 2026-11-13 | 2026-11-18 | 2d | 2026-11-19 | 2026-11-21 | 26d |  |

| ID | WBS | Task | Duration | Start | Finish | Predecessors | Baseline start | Baseline finish | Baseline duration | Baseline 1 start | Baseline 1 finish | Total slack | Free slack |
| --- | --- | --- | --- | --- | --- | --- | --- | --- | --- | --- | --- | --- | --- |
| 1679 | 1.7.23 | **INSTALACIÓN HIDRO-SANITARIA** | 11d | 2026-11-12 | 2026-11-27 |  | 2026-10-12 | 2026-10-24 | 11d | 2026-10-15 | 2026-10-28 | 0d |  |
| 1680 | 1.7.23.1 | Tubería condensados PVC 1 | 5d | 2026-11-12 | 2026-11-20 | 1584 | 2026-10-12 | 2026-10-17 | 5d | 2026-10-15 | 2026-10-21 | 0d |  |
| 1681 | 1.7.23.2 | Tubería sanitaria PVC 4 | 5d | 2026-11-12 | 2026-11-20 | 1587 | 2026-10-12 | 2026-10-17 | 5d | 2026-10-15 | 2026-10-21 | 8d | 0d |
| 1682 | 1.7.23.3 | Coladera H-444 | 1d | 2026-11-20 | 2026-11-21 | 1681 | 2026-10-17 | 2026-10-19 | 1d | 2026-10-21 | 2026-10-22 | 8d | 4d |
| 1683 | 1.7.23.4 | Caja PVC para lavadora | 3d | 2026-11-12 | 2026-11-18 | 1584 | 2026-10-12 | 2026-10-15 | 3d | 2026-10-15 | 2026-10-19 | 0d |  |
| 1684 | 1.7.23.5 | Salida para secadora PVC 4 | 3d | 2026-11-12 | 2026-11-18 | 1587 | 2026-10-12 | 2026-10-15 | 3d | 2026-10-15 | 2026-10-19 | 0d |  |
| 1685 | 1.7.23.6 | Salida hidráulica para boiler | 2d | 2026-11-12 | 2026-11-17 | 1584 | 2026-10-12 | 2026-10-14 | 2d | 2026-10-15 | 2026-10-17 | 1d |  |
| 1686 | 1.7.23.7 | Salida hidráulica para llave de jardín | 3d | 2026-11-12 | 2026-11-18 | 1584 | 2026-10-12 | 2026-10-15 | 3d | 2026-10-15 | 2026-10-19 | 0d |  |
| 1687 | 1.7.23.8 | Salida hidráulica para lavabo | 4d | 2026-11-12 | 2026-11-19 | 1584 | 2026-10-12 | 2026-10-16 | 4d | 2026-10-15 | 2026-10-20 | 0d |  |
| 1688 | 1.7.23.9 | Salida hidráulica para purificación | 4d | 2026-11-12 | 2026-11-19 | 1584 | 2026-10-12 | 2026-10-16 | 4d | 2026-10-15 | 2026-10-20 | 0d |  |
| 1689 | 1.7.23.10 | Salida sanitaria para lavabo | 2d | 2026-11-17 | 2026-11-19 | 1584FS+2d | 2026-10-14 | 2026-10-16 | 2d | 2026-10-17 | 2026-10-20 | 0d |  |
| 1690 | 1.7.23.11 | Salida hidráulica para lavadero | 2d | 2026-11-17 | 2026-11-19 | 1584FS+2d | 2026-10-14 | 2026-10-16 | 2d | 2026-10-17 | 2026-10-20 | 0d |  |
| 1691 | 1.7.23.12 | Salida sanitaria para lavadero | 2d | 2026-11-18 | 2026-11-20 | 1584FS+3d | 2026-10-15 | 2026-10-17 | 2d | 2026-10-19 | 2026-10-21 | 0d |  |
| 1692 | 1.7.23.13 | Salida hidráulica para lavadora | 2d | 2026-11-18 | 2026-11-20 | 1584FS+3d | 2026-10-15 | 2026-10-17 | 2d | 2026-10-19 | 2026-10-21 | 0d |  |
| 1693 | 1.7.23.14 | Salida sanitaria para lavadora | 2d | 2026-11-19 | 2026-11-21 | 1587FS+4d | 2026-10-16 | 2026-10-19 | 2d | 2026-10-20 | 2026-10-22 | 0d |  |
| 1694 | 1.7.23.15 | Salida hidráulica para regadera | 5d | 2026-11-19 | 2026-11-25 | 1584FS+4d | 2026-10-16 | 2026-10-22 | 5d | 2026-10-20 | 2026-10-26 | 5d | 0d |
| 1695 | 1.7.23.16 | Salida sanitaria para regadera | 4d | 2026-11-19 | 2026-11-24 | 1587FS+4d | 2026-10-16 | 2026-10-21 | 4d | 2026-10-20 | 2026-10-24 | 6d | 2d |
| 1696 | 1.7.23.17 | Salida hidráulica para WC | 2d | 2026-11-17 | 2026-11-19 | 1587FS+2d | 2026-10-14 | 2026-10-16 | 2d | 2026-10-17 | 2026-10-20 | 0d |  |
| 1697 | 1.7.23.18 | Salida sanitaria para WC | 4d | 2026-11-19 | 2026-11-24 | 1587FS+4d | 2026-10-16 | 2026-10-21 | 4d | 2026-10-20 | 2026-10-24 | 0d |  |
| 1698 | 1.7.23.19 | Salida hidráulica para zinc | 4d | 2026-11-19 | 2026-11-24 | 1587FS+4d | 2026-10-16 | 2026-10-21 | 4d | 2026-10-20 | 2026-10-24 | 0d |  |
| 1699 | 1.7.23.20 | Salida sanitaria para zinc | 3d | 2026-11-21 | 2026-11-25 | 1587FS+6d | 2026-10-19 | 2026-10-22 | 3d | 2026-10-22 | 2026-10-26 | 0d |  |
| 1700 | 1.7.23.21 | Tubo para ventila de baño 2 | 5d | 2026-11-12 | 2026-11-20 | 1680SS | 2026-10-12 | 2026-10-17 | 5d | 2026-10-15 | 2026-10-21 | 0d |  |
| 1701 | 1.7.23.22 | Tubo para minisplit PVC 3 | 5d | 2026-11-20 | 2026-11-26 | 1700 | 2026-10-17 | 2026-10-23 | 5d | 2026-10-21 | 2026-10-27 | 0d |  |
| 1702 | 1.7.23.23 | Cuadro de medición | 5d | 2026-11-18 | 2026-11-24 | 1634 | 2026-10-15 | 2026-10-21 | 5d | 2026-10-19 | 2026-10-24 | 5d | 0d |
| 1703 | 1.7.23.24 | Pozo de absorción 0.50x0.50x0.50 | 3d | 2026-11-18 | 2026-11-21 | 1634 | 2026-10-15 | 2026-10-19 | 3d | 2026-10-19 | 2026-10-22 | 8d | 0d |
| 1704 | 1.7.23.25 | Prueba sanitaria final | 1d | 2026-11-26 | 2026-11-27 | 1680, 1681, 1682, 1684, 1689, 1691, 1693, 1695, 1697, 1700, 1701 | 2026-10-23 | 2026-10-24 | 1d | 2026-10-28 | 2026-10-28 | 4d |  |
| 1705 | 1.7.23.26 | Prueba hidrostática final | 1d | 2026-11-25 | 2026-11-26 | 1685, 1686, 1687, 1688, 1690, 1692, 1694, 1696, 1698, 1702, 1703, 1708, 1709, 1707, 1706 | 2026-10-22 | 2026-10-23 | 1d | 2026-10-27 | 2026-10-27 | 5d |  |
| 1706 | 1.7.23.27 | Salida válvula control 19 mm | 1d | 2026-11-24 | 2026-11-25 | 1702 | 2026-10-21 | 2026-10-22 | 1d | 2026-10-26 | 2026-10-26 | 5d | 0d |
| 1707 | 1.7.23.28 | Salida válvula control 13 mm | 1d | 2026-11-24 | 2026-11-25 | 1702 | 2026-10-21 | 2026-10-22 | 1d | 2026-10-26 | 2026-10-26 | 5d | 0d |
| 1708 | 1.7.23.29 | Salida hidráulica para tanque hidroneumático | 3d | 2026-11-18 | 2026-11-21 | 1634 | 2026-10-15 | 2026-10-19 | 3d | 2026-10-19 | 2026-10-22 | 8d | 3d |
| 1709 | 1.7.23.30 | Salida hidráulica para Active Driver | 3d | 2026-11-18 | 2026-11-21 | 1634 | 2026-10-15 | 2026-10-19 | 3d | 2026-10-19 | 2026-10-22 | 8d | 3d |

| ID | WBS | Task | Duration | Start | Finish | Predecessors | Baseline start | Baseline finish | Baseline duration | Baseline 1 start | Baseline 1 finish | Total slack | Free slack |
| --- | --- | --- | --- | --- | --- | --- | --- | --- | --- | --- | --- | --- | --- |
| 1710 | 1.7.24 | **INSTALACION DE GAS** | 8d | 2026-11-10 | 2026-11-21 |  | 2026-10-08 | 2026-10-19 | 8d | 2026-10-13 | 2026-10-22 | 29d |  |
| 1711 | 1.7.24.1 | Ramaleo para gas 1/2 | 5d | 2026-11-13 | 2026-11-21 | 1634FS-2d, 1712 | 2026-10-13 | 2026-10-19 | 5d | 2026-10-16 | 2026-10-22 | 29d | 0d |
| 1712 | 1.7.24.2 | Excavación a mano material tipo B | 3d | 2026-11-10 | 2026-11-13 | 1634FF-2d | 2026-10-08 | 2026-10-13 | 3d | 2026-10-13 | 2026-10-16 | 29d | 0d |
| 1713 | 1.7.25 | **MUEBLES SANITARIOS** | 26d | 2026-12-21 | 2027-01-26 |  | 2026-11-18 | 2026-12-23 | 29d | 2026-11-21 | 2026-12-30 | 12d |  |
| 1714 | 1.7.25.1 | WC completo Austral | 2d | 2026-12-21 | 2026-12-22 | 1618, 1625, 1704, 1705 | 2026-11-18 | 2026-11-20 | 2d | 2026-11-21 | 2026-11-24 | 14d |  |
| 1715 | 1.7.25.2 | Lavabo Senna con pedestal | 4d | 2026-12-21 | 2026-12-28 | 1618, 1623, 1625, 1704, 1705 | 2026-11-18 | 2026-11-23 | 4d | 2026-11-21 | 2026-11-26 | 12d |  |
| 1716 | 1.7.25.3 | Tarja / lavabo combo Guinea 80x45 | 2d | 2026-12-21 | 2026-12-22 | 1462, 1618, 1623, 1625, 1705 | 2026-11-18 | 2026-11-20 | 2d | 2026-11-21 | 2026-11-24 | 36d |  |
| 1717 | 1.7.25.4 | Regadera con monomando | 3d | 2026-12-23 | 2026-12-29 | 1618, 1623FS+2d, 1625FS+2d, 1704, 1705 | 2026-11-20 | 2026-11-24 | 3d | 2026-11-24 | 2026-11-27 | 11d |  |
| 1718 | 1.7.25.5 | Coladera inserto cerámico | 2d | 2026-12-26 | 2026-12-29 | 1623, 1625FS+3d, 1705 | 2026-11-21 | 2026-11-24 | 2d | 2026-11-25 | 2026-11-27 | 11d |  |
| 1719 | 1.7.25.6 | Toallero sencillo | 1d | 2027-01-25 | 2027-01-26 | 1611FS-1d | 2026-12-23 | 2026-12-23 | 1d | 2026-12-29 | 2026-12-30 | 0d |  |
| 1720 | 1.7.25.7 | Toallero barra | 1d | 2027-01-25 | 2027-01-26 | 1611FS-1d | 2026-12-23 | 2026-12-23 | 1d | 2026-12-29 | 2026-12-30 | 0d |  |
| 1721 | 1.7.25.8 | Portapapel | 1d | 2027-01-25 | 2027-01-26 | 1611FS-1d | 2026-12-23 | 2026-12-23 | 1d | 2026-12-29 | 2026-12-30 | 0d |  |
| 1722 | 1.7.25.9 | Gancho baño | 1d | 2027-01-25 | 2027-01-26 | 1611FS-1d | 2026-12-23 | 2026-12-23 | 1d | 2026-12-29 | 2026-12-30 | 0d |  |
| 1723 | 1.7.26 | **EQUIPAMIENTO** | 6d | 2026-11-04 | 2026-11-11 |  | 2026-10-02 | 2026-10-09 | 6d | 2026-10-06 | 2026-10-14 | 56d |  |
| 1724 | 1.7.26.1 | Electronivel Rotoplas 5 m | 2d | 2026-11-05 | 2026-11-07 | 1729 | 2026-10-03 | 2026-10-06 | 2d | 2026-10-07 | 2026-10-09 | 59d |  |
| 1725 | 1.7.26.2 | Manómetro | 1d | 2026-11-05 | 2026-11-06 | 1729 | 2026-10-03 | 2026-10-05 | 1d | 2026-10-07 | 2026-10-08 | 60d |  |
| 1726 | 1.7.26.3 | Interruptor de presión 30-50 PSI | 1d | 2026-11-05 | 2026-11-06 | 1729 | 2026-10-03 | 2026-10-05 | 1d | 2026-10-07 | 2026-10-08 | 60d |  |
| 1727 | 1.7.26.4 | Tanque hidroneumático FPS-24LX | 3d | 2026-11-05 | 2026-11-09 | 1729 | 2026-10-03 | 2026-10-07 | 3d | 2026-10-07 | 2026-10-12 | 56d | 0d |
| 1728 | 1.7.26.5 | Bomba sumergible Dominator 1.2 HP | 2d | 2026-11-09 | 2026-11-11 | 1727 | 2026-10-07 | 2026-10-09 | 2d | 2026-10-12 | 2026-10-14 | 56d |  |
| 1729 | 1.7.26.6 | Cisterna prefabricada 2800 L | 1d | 2026-11-04 | 2026-11-05 | 1591FF | 2026-10-02 | 2026-10-03 | 1d | 2026-10-06 | 2026-10-07 | 56d | 0d |
| 1730 | 1.7.27 | **LUMINARIAS** | 5d | 2026-12-11 | 2026-12-17 |  | 2026-11-07 | 2026-11-13 | 5d | 2026-11-11 | 2026-11-19 | 26d |  |
| 1731 | 1.7.27.1 | Roseta cerámica | 3d | 2026-12-11 | 2026-12-15 | 1671 | 2026-11-07 | 2026-11-11 | 3d | 2026-11-11 | 2026-11-17 | 28d | 2d |
| 1732 | 1.7.27.2 | Luminaria lagartijera LED | 3d | 2026-12-11 | 2026-12-15 | 1671 | 2026-11-07 | 2026-11-11 | 3d | 2026-11-11 | 2026-11-17 | 28d | 2d |
| 1733 | 1.7.27.3 | Spot 6W Tecnolite | 3d | 2026-12-11 | 2026-12-15 | 1671 | 2026-11-07 | 2026-11-11 | 3d | 2026-11-11 | 2026-11-17 | 28d | 2d |
| 1734 | 1.7.27.4 | Spot 7W Tecnolite | 3d | 2026-12-11 | 2026-12-15 | 1671 | 2026-11-07 | 2026-11-11 | 3d | 2026-11-11 | 2026-11-17 | 28d | 2d |
| 1735 | 1.7.27.5 | Arbotante exterior | 2d | 2026-12-11 | 2026-12-14 | 1671 | 2026-11-07 | 2026-11-10 | 2d | 2026-11-11 | 2026-11-13 | 26d | 0d |
| 1736 | 1.7.27.6 | Estaca LED exterior | 3d | 2026-12-14 | 2026-12-17 | 1735 | 2026-11-10 | 2026-11-13 | 3d | 2026-11-13 | 2026-11-19 | 26d | 0d |
| 1737 | 1.7.27.7 | Tira LED | 3d | 2026-12-14 | 2026-12-17 | 1735 | 2026-11-10 | 2026-11-13 | 3d | 2026-11-13 | 2026-11-19 | 26d | 0d |
| 1738 | 1.7.27.8 | Spot exterior 50W | 2d | 2026-12-11 | 2026-12-14 | 1671 | 2026-11-07 | 2026-11-10 | 2d | 2026-11-11 | 2026-11-13 | 29d | 3d |

| ID | WBS | Task | Duration | Start | Finish | Predecessors | Baseline start | Baseline finish | Baseline duration | Baseline 1 start | Baseline 1 finish | Total slack | Free slack |
| --- | --- | --- | --- | --- | --- | --- | --- | --- | --- | --- | --- | --- | --- |
| 1739 | 1.7.28 | **TIMBRE** | 2d | 2026-12-12 | 2026-12-15 |  | 2026-11-09 | 2026-11-11 | 2d | 2026-11-12 | 2026-11-17 | 28d |  |
| 1740 | 1.7.28.1 | Timbre inalámbrico con bocina | 2d | 2026-12-12 | 2026-12-15 | 1669FS+3d, 1670FS+3d | 2026-11-09 | 2026-11-11 | 2d | 2026-11-12 | 2026-11-17 | 28d | 2d |
| 1741 | 1.7.29 | **OBRA EXTERIOR - BARDA** | 18d | 2026-11-18 | 2026-12-10 |  | 2026-10-15 | 2026-11-06 | 18d | 2026-10-19 | 2026-11-10 | 34d |  |
| 1742 | 1.7.29.1 | Murete convencional | 5d | 2026-11-24 | 2026-11-30 | 1634FS+5d | 2026-10-21 | 2026-10-27 | 5d | 2026-10-26 | 2026-10-30 | 40d | 14d |
| 1743 | 1.7.29.2 | Barda de block aparente | 18d | 2026-11-18 | 2026-12-10 | 1634 | 2026-10-15 | 2026-11-06 | 18d | 2026-10-19 | 2026-11-10 | 34d |  |
| 1744 | 1.7.30 | **TERCER LIMPIEZA DE OBRA** | 12d | 2027-01-26 | 2027-02-10 |  | 2026-12-26 | 2027-01-18 | 16d | 2026-12-30 | 2027-01-21 | 0d |  |
| 1745 | 1.7.30.1 | Limpieza fina para entrega | 5d | 2027-01-26 | 2027-02-02 | 1611, 1612, 1613, 1644, 1653, 1654, 1678, 1704, 1705, 1719, 1720, 1721, 1722, 1724, 1725, 1726, 1727, 1728, 1743 | 2026-12-26 | 2027-01-04 | 5d | 2026-12-30 | 2027-01-07 | 0d |  |
| 1746 | 1.7.30.2 | Tercera limpieza de obra | 5d | 2027-01-29 | 2027-02-05 | 1637FS-2d, 1745FS-2d | 2027-01-04 | 2027-01-11 | 5d | 2027-01-07 | 2027-01-14 | 0d |  |
| 1747 | 1.7.30.3 | Tercera carga y acarreo de escombro | 6d | 2027-02-03 | 2027-02-10 | 1746FS-2d | 2027-01-11 | 2027-01-18 | 6d | 2027-01-14 | 2027-01-21 | 0d |  |
